# 07.09.26

Schedule from MS Project, 2023-03-10 to 2027-03-10, A marks actual dates.
DEXP

## Calendars

- Стандартный: Mon-Fri 09:00-13:00, 14:00-18:00; Sat-Sun off. Exceptions (off unless hours are given): 2026-09-05 09:00-13:00, 14:00-18:00, 2026-09-12 to 2026-09-13 09:00-13:00, 14:00-18:00, 2026-09-19 to 2026-09-20 09:00-13:00, 14:00-18:00, 2026-09-26 to 2026-09-27 09:00-13:00, 14:00-18:00, 2026-10-04 09:00-13:00, 14:00-18:00, 2026-10-17 09:00-13:00, 14:00-18:00.

## Resources

| Resource |
| --- |
| Макаревич А |
| Дедов В |
| Бобренок В |
| Тимофеев В |
| Зорькин В |
| Бундин В |
| Труфанов А |
| Некрасов А |
| Шуранов Ю |
| Домоводов К |
| Амрулин Р |
| Карабанов |
| Олег |
| оплот |
| Коленкоров |
| Мультан |
| Малинина М |
| Лобанов И |
| Дворник |
| Подрядчик |
| Олег лукас |
| Черепанов И |
| оперторы2 |
| оператор2 |
| Тракресурс |
| Сапелин С |
| Технолог |
| Фрезер ЧПУ |
| Пинчук А |
| КИнжекул |
| ТО_2 |
| ТО_1 |
| ТО_М |
| ТО |
| Кладовщики |
| Некрасов |
| Логист |
| Автобест |
| Николаев |

## Schedule

| ID | WBS | Task | Type | Duration | Start | Finish | Predecessors | Complete | Remaining | Total slack | Free slack | Constraint | Resources | Work | Actual work |
| --- | --- | --- | --- | --- | --- | --- | --- | --- | --- | --- | --- | --- | --- | --- | --- |
| 1 | 1 | **1 цех** |  | 431.5d? | 2023-03-10 09:00 A | 2024-11-02 13:00 |  | 98% | 7.85d? |  |  |  |  | 22995.4h | 22718.8h |
| 2 | 1.1 | **ремонт 3х ходовой приточная вентиляция** |  | 1.25d | 2026-10-19 09:00 A | 2026-10-20 11:00 |  | 33% | 0.83d | 101.34d |  |  |  | 6h | 2h |
| 3 | 1.1.1 | монтаж + замена серволпривод |  | 1h | 2026-10-19 09:00 A | 2026-10-19 10:00 A |  | 100% |  |  |  | start no earlier than 2026-10-19 08:00 | Тимофеев В; Николаев | 2h | 2h |
| 4 | 1.1.2 | монтаж на калорифер /подключить серволпривод |  | 2h | 2026-10-20 09:00 | 2026-10-20 11:00 |  |  |  | 101.34d |  | start no earlier than 2026-10-20 09:00 | Тимофеев В; Николаев | 4h |  |
| 5 | 1.2 | подклоючить в дренаж доп лотки сбора конденсата |  | 4h | 2026-10-20 09:00 | 2026-10-20 13:00 |  |  |  | 101.09d |  | start no earlier than 2026-10-20 09:00 | Труфанов А; Некрасов | 8h |  |
| 6 | 1.3 | **монтаж водоподготовка // разделить воду в экструдер и парогенераторы** |  | 168.31d? | 2026-03-19 09:00 A | 2026-10-28 11:30 |  | 89% | 17.87d? | 95.28d |  |  |  | 282.5h | 252.5h |
| 7 | 1.3.1 | **монтаж водоподготовка** |  | 1.25d? | 2026-10-20 09:00 | 2026-10-21 11:00 |  |  |  | 100.34d |  |  |  | 14h |  |
| 8 | 1.3.1.1 | купить тройники / краны |  | 1d? | 2026-10-20 09:00 | 2026-10-20 18:00 |  |  |  | 100.59d |  | start no earlier than 2026-10-20 09:00 | Зорькин В | 8h |  |
| 9 | 1.3.1.2 | монтаж трасса раздельная, что можно без отключения |  | 4h | 2026-10-20 09:00 | 2026-10-20 13:00 |  |  |  | 101.09d |  | start no earlier than 2026-10-20 09:00 | Бундин В | 4h |  |
| 10 | 1.3.1.3 | подключение в систему |  | 2h | 2026-10-21 09:00 | 2026-10-21 11:00 |  |  |  | 100.34d |  | start no earlier than 2026-10-21 09:00 | Тимофеев В | 2h |  |
| 11 | 1.3.2 | **разделение воды ПГ / экструдер** |  | 67.31d | 2026-08-07 09:00 | 2026-10-28 11:30 |  |  |  | 49d |  |  |  | 16h |  |
| 12 | 1.3.2.1 | изготовить промежуточную емкость для прекондера, подача воды, сделать по аналогу 3 цеха | manual | 2h | 2026-10-05 09:00 | 2026-10-05 11:00 |  |  |  |  |  | start no earlier than 2026-10-05 09:00 | Тимофеев В | 2h |  |
| 13 | 1.3.2.2 | **воставноить насосы пирльстатические** |  | 6.31d | 2026-10-20 09:00 | 2026-10-28 11:30 |  |  |  | 95.28d |  |  |  | 2.5h |  |
| 14 | 1.3.2.2.1 | заявка трубка |  | 15min | 2026-10-20 09:00 | 2026-10-20 09:15 |  |  |  | 95.28d | 0d | start no earlier than 2026-10-20 09:00 | Зорькин В | 0.25h |  |
| 15 | 1.3.2.2.2 | контроль доставка |  | 15min | 2026-10-27 09:15 | 2026-10-27 09:30 | 14FS+5d |  |  | 95.28d | 0d | start no earlier than 2026-10-19 08:00 | Зорькин В | 0.25h |  |
| 16 | 1.3.2.2.3 | сборка |  | 2h | 2026-10-28 09:30 | 2026-10-28 11:30 | 15FS+1d |  |  | 95.28d |  | start no earlier than 2026-10-19 08:00 | Тимофеев В | 2h |  |
| 17 | 1.3.2.3 | **монтаж на линия 1** |  | 18.44d | 2026-08-07 09:00 | 2026-09-02 12:30 |  |  |  | 144.16d |  |  |  | 11.5h |  |
| 18 | 1.3.2.3.1 | заявка на счетчик, насос, 3х ход клапан, фитинги, канистра |  | 1h | 2026-08-07 09:00 | 2026-08-07 10:00 |  |  |  | 144.16d | 0d | start no earlier than 2026-08-07 09:00 | Зорькин В | 1h |  |
| 19 | 1.3.2.3.2 | контроль поставки |  | 30min | 2026-08-28 10:00 | 2026-08-28 10:30 | 18FS+15d |  |  | 144.16d | 0d | start no earlier than 2026-08-12 09:00 | Зорькин В | 0.5h |  |
| 20 | 1.3.2.3.3 | сборка корпус |  | 4h | 2026-08-31 10:30 | 2026-08-31 15:30 | 19FS+1d |  |  | 144.16d | 0d | start no earlier than 2026-08-12 09:00 | Тимофеев В | 4h |  |
| 21 | 1.3.2.3.4 | монтаж линия 1 |  | 6h | 2026-09-01 15:30 | 2026-09-02 12:30 | 20FS+1d |  |  | 144.16d |  | start no earlier than 2026-08-12 09:00 | Тимофеев В | 6h |  |
| 22 | 1.3.3 | заявка поплавкой клапан вертикальный, подводка с боку по аналогии с 4ц |  | 1h | 2026-03-19 09:00 A | 2026-03-19 10:00 A |  | 100% |  |  |  | start no earlier than 2026-03-19 08:00 | Зорькин В | 1h | 1h |
| 23 | 1.3.4 | доставка |  | 10d | 2026-03-19 10:00 A | 2026-04-02 10:00 A | 22 | 100% |  |  |  | start no earlier than 2026-03-19 08:00 | Карабанов | 80h | 80h |
| 24 | 1.3.5 | испытать производсительность маленького черн насоса с "медленным" счетким |  | 2h | 2026-05-20 09:00 A | 2026-05-20 11:00 A |  | 100% |  |  |  | start no earlier than 2026-05-20 09:00 | Тимофеев В | 2h | 2h |
| 25 | 1.3.6 | изготовить емкость для поплавкой камеры и насоса из нерж |  | 4h | 2026-04-27 09:00 A | 2026-04-27 13:00 A |  | 100% |  |  |  | start no earlier than 2026-04-27 09:00 | Макаревич А | 4h | 4h |
| 26 | 1.3.7 | доставка частотный 220 контроль | milestone | 0d | 2026-04-24 09:00 A | 2026-04-24 09:00 A |  | 100% |  |  |  | start no earlier than 2026-04-24 09:00 | Зорькин В |  |  |
| 27 | 1.3.8 | испытать регулирование насоса на частотнике |  | 1h | 2026-05-26 09:00 A | 2026-05-26 10:00 A |  | 100% |  |  |  | start no earlier than 2026-05-26 09:00 | Дедов В | 1h | 1h |
| 28 | 1.3.9 | монтаж насоса + бак нерж на линия 2 |  | 1h | 2026-05-27 09:00 A | 2026-05-27 10:00 A |  | 100% |  |  |  | start no earlier than 2026-05-27 09:00 | Тимофеев В | 1h | 1h |
| 29 | 1.3.10 | монтаж розетка, кабель до насаса, подключение двигатель насоса |  | 1h | 2026-05-27 09:00 A | 2026-05-27 10:00 A |  | 100% |  |  |  | start no earlier than 2026-05-27 09:00 | Бундин В | 1h | 1h |
| 30 | 1.3.11 | подключение насос + счетчик + кран + частотник - сборка схема с байпасом на мал насосе |  | 2h | 2026-08-11 09:00 A | 2026-08-11 11:00 A |  | 100% |  |  |  | start no earlier than 2026-08-11 09:00 | Тимофеев В | 2h | 2h |
| 31 | 1.3.12 | установить счетчик в линию |  | 1h | 2026-08-12 09:00 A | 2026-08-12 10:00 A |  | 100% |  |  |  | start no earlier than 2026-08-12 09:00 | Тимофеев В | 1h | 1h |
| 32 | 1.3.13 | испытания производительности и регулировки |  | 1h | 2026-08-12 09:00 A | 2026-08-12 10:00 A |  | 100% |  |  |  | start no earlier than 2026-08-12 09:00 | Тимофеев В | 1h | 1h |
| 33 | 1.3.14 | тестирование работы при обновленном SSID |  | 147.5h | 2026-08-07 09:00 A | 2026-09-02 12:30 A |  | 100% |  |  |  |  | Домоводов К | 147.5h | 147.5h |
| 34 | 1.3.15 | подключть конденсатор к насосу, запуск системы |  | 1h | 2026-05-27 08:00 A | 2026-05-27 10:00 A |  | 100% |  |  |  | start no earlier than 2026-05-27 08:00 | Дедов В | 1h | 1h |
| 35 | 1.3.16 | подготовить емкость нерж (попловок, сгон) для подключения к насосу |  | 4h | 2026-05-26 09:00 A | 2026-05-26 13:00 A |  | 100% |  |  |  | start no earlier than 2026-05-26 09:00 | Бундин В | 4h | 4h |
| 36 | 1.3.17 | испытать насос на часотоном приводе |  | 2h | 2026-05-19 09:00 A | 2026-05-19 11:00 A | 26 | 100% |  |  |  | start no earlier than 2026-05-20 09:00 | Тимофеев В | 2h | 2h |
| 37 | 1.3.18 | перенос с 3й линии бак с насосом, установка на линия 2 |  | 4h | 2026-04-08 09:00 A | 2026-04-08 13:00 A | 25 | 100% |  |  |  | start no earlier than 2026-04-08 09:00 | Некрасов А | 4h | 4h |

| ID | WBS | Task | Type | Duration | Start | Finish | Predecessors | Complete | Remaining | Total slack | Free slack | Constraint | Resources | Work | Actual work |
| --- | --- | --- | --- | --- | --- | --- | --- | --- | --- | --- | --- | --- | --- | --- | --- |
| 38 | 1.4 | **Входная дверь 1 цех - замена шарниров** |  | 10.12d? | 2026-10-10 09:00 A | 2026-10-23 10:00 |  | 43% | 5.79d? | 98.47d |  |  |  | 2.33h | 1h |
| 39 | 1.4.1 | Посмотреть входные двери в 1 цех, тяжело закрываются, устранить | manual | 1h | 2026-10-10 09:00 A | 2026-10-10 10:00 A |  | 100% |  |  |  | start no earlier than 2026-10-10 09:00 | Бундин В | 1h | 1h |
| 40 | 1.4.2 | Заявка |  | 10min | 2026-10-14 09:00 | 2026-10-14 09:10 |  |  |  | 106.57d |  | start no earlier than 2026-10-14 09:00 | Зорькин В | 0.17h |  |
| 41 | 1.4.3 | контроль |  | 10min | 2026-10-21 09:00 | 2026-10-21 09:10 |  |  |  | 100.57d |  | start no earlier than 2026-10-21 09:00 | Зорькин В | 0.17h |  |
| 42 | 1.4.4 | Замена петли | manual | 1h | 2026-10-23 09:00 | 2026-10-23 10:00 |  |  |  |  |  | start no earlier than 2026-10-23 09:00 | Бундин В | 1h |  |
| 43 | 1.5 | Увезти бетономешалку и лестницу с пандуса (бетономешалку прикрутить к паллету на перфоленту и сразу поставить на полку |  | 1d? | 2026-10-12 09:00 A | 2026-10-12 18:00 A |  | 100% |  |  |  | start no earlier than 2026-10-12 08:00 |  |  |  |
| 44 | 1.6 | Установить вентилятор на пробник (на столе в слесарке?) |  | 1h | 2026-10-09 09:00 A | 2026-10-09 10:00 A |  | 100% |  |  |  | start no earlier than 2026-10-09 09:00 | Дедов В | 1h | 1h |
| 45 | 1.7 | Убрать пневмотрубу из гидролизатной, видео скинул, муфту взять в кабинете у нас. Остановку согласовать, сделать все за 20 мин максимум |  | 20min | 2026-10-08 09:00 A | 2026-10-08 09:20 A |  | 100% |  |  |  | start no earlier than 2026-10-08 08:00 | Бобренок В | 0.33h | 0.33h |
| 46 | 1.8 | Устранение течи с вентиляции, предложить варианты, выслушать вариант домоводова |  | 3h | 2026-10-06 09:00 A | 2026-10-06 12:00 A |  | 100% |  |  |  | start no earlier than 2026-10-06 09:00 | Труфанов А; Некрасов | 6h | 6h |
| 47 | 1.9 | Изготовление и установка крышек на бачок гидролизата в 1 цеху |  | 3h | 2026-10-07 09:00 A | 2026-10-07 12:00 A |  | 100% |  |  |  | start no earlier than 2026-10-07 09:00 | Бундин В | 3h | 3h |
| 48 | 1.10 | **Вал прекондиционера 1 линия** |  | 1.88d | 2026-10-05 09:00 A | 2026-10-06 17:00 A |  | 100% |  |  |  |  |  | 18.67h | 18.67h |
| 49 | 1.10.1 | С 8 утра снимаем вал с прекондиционера 1 линия. |  | 3h | 2026-10-05 09:00 A | 2026-10-05 12:00 A |  | 100% |  |  |  | start no earlier than 2026-10-05 09:00 | Труфанов А; Некрасов | 6h | 6h |
| 50 | 1.10.2 | Образмеривание вала |  | 1h | 2026-10-05 12:00 A | 2026-10-05 13:00 A | 49 | 100% |  |  |  | start no earlier than 2026-10-02 08:00 | Труфанов А | 1h | 1h |
| 51 | 1.10.3 | Передача всей необходимой информации токарю |  | 30min | 2026-10-05 14:00 A | 2026-10-05 14:30 A | 50 | 100% |  |  |  | start no earlier than 2026-10-05 09:00 | Зорькин В | 0.5h | 0.5h |
| 52 | 1.10.4 | Контроль |  | 10min | 2026-10-05 14:30 A | 2026-10-05 14:40 A | 51 | 100% |  |  |  | start no earlier than 2026-10-05 09:00 | Зорькин В | 0.17h | 0.17h |
| 53 | 1.10.5 | Доставка |  | 3h | 2026-10-06 09:00 A | 2026-10-06 12:00 A | 52 | 100% |  |  |  | start no earlier than 2026-10-06 09:00 | Логист | 3h | 3h |
| 54 | 1.10.6 | Ставим новый вал сразу после прихода |  | 4h | 2026-10-06 12:00 A | 2026-10-06 17:00 A | 53 | 100% |  |  |  | start no earlier than 2026-10-06 09:00 | Труфанов А; Некрасов | 8h | 8h |
| 55 | 1.11 | **ремонт шарнир подачи пакетов квадропак** |  | 5d? | 2026-10-01 09:00 | 2026-10-06 18:00 |  |  |  | 111.59d |  |  |  |  |  |
| 56 | 1.11.1 | Составить заявку на шарнир подачи пакетов (зона 1) ВЭД партнер |  | 1d? | 2026-10-01 09:00 | 2026-10-01 18:00 |  |  |  | 111.59d | 0d | start no earlier than 2026-10-01 08:00 |  |  |  |
| 57 | 1.11.2 | Получить счет - оплата |  | 1d? | 2026-10-02 09:00 | 2026-10-02 18:00 | 56 |  |  | 111.59d | 0d | start no earlier than 2026-10-01 08:00 |  |  |  |
| 58 | 1.11.3 | Контроль доставки |  | 1d? | 2026-10-04 09:00 | 2026-10-04 18:00 | 57 |  |  | 111.59d | 0d | start no earlier than 2026-10-01 08:00 |  |  |  |
| 59 | 1.11.4 | Приемка |  | 1d? | 2026-10-05 09:00 | 2026-10-05 18:00 | 58 |  |  | 111.59d | 0d | start no earlier than 2026-10-01 08:00 |  |  |  |
| 60 | 1.11.5 | Установка |  | 1d? | 2026-10-06 09:00 | 2026-10-06 18:00 | 59 |  |  | 111.59d |  | start no earlier than 2026-10-01 08:00 |  |  |  |
| 61 | 1.12 | Установить газлифты на раму весов в плоскостях Х и У |  | 3h | 2026-10-02 09:00 A | 2026-10-02 12:00 A |  | 100% |  |  |  | start no earlier than 2026-10-02 09:00 | Тимофеев В; Бундин В | 6h | 6h |

| ID | WBS | Task | Duration | Start | Finish | Predecessors | Complete | Remaining | Total slack | Free slack | Constraint | Resources | Work | Actual work |
| --- | --- | --- | --- | --- | --- | --- | --- | --- | --- | --- | --- | --- | --- | --- |
| 62 | 1.13 | **сборка рама для труб приточной вентиляции** | 14.03d? | 2026-10-15 09:00 A | 2026-11-03 09:15 |  | 22% | 10.93d? | 91.56d |  |  |  | 36.25h | 8h |
| 63 | 1.13.1 | составить проект рамы | 4h | 2026-10-15 09:00 A | 2026-10-15 13:00 A |  | 100% |  |  |  | start no earlier than 2026-10-15 09:00 | Домоводов К | 4h | 4h |
| 64 | 1.13.2 | заявка металл | 4h | 2026-10-15 14:00 A | 2026-10-15 18:00 A | 63 | 100% |  |  |  | start no earlier than 2026-09-30 08:00 | Домоводов К | 4h | 4h |
| 65 | 1.13.3 | обновить схему для согласования | 4h | 2026-10-20 09:00 | 2026-10-20 13:00 |  |  |  | 101.09d |  | start no earlier than 2026-10-20 09:00 | Домоводов К | 4h |  |
| 66 | 1.13.4 | контроль доставка | 15min | 2026-10-29 09:00 | 2026-10-29 09:15 | 64FS+10d |  |  | 91.56d | 0d | start no earlier than 2026-09-30 08:00 | Зорькин В | 0.25h |  |
| 67 | 1.13.5 | сборка рама на земле | 2d | 2026-10-29 09:15 | 2026-11-02 09:15 | 66 |  |  | 91.56d | 0d | start no earlier than 2026-09-30 08:00 | Труфанов А | 16h |  |
| 68 | 1.13.6 | монтаж рама на цех краном | 1d? | 2026-11-02 09:15 | 2026-11-03 09:15 | 67 |  |  | 91.56d |  | start no earlier than 2026-09-30 08:00 | Некрасов А | 8h |  |
| 69 | 1.14 | герметизация неиспользуемых отверстий после модернизации вентиляции | 1d? | 2026-09-30 09:00 | 2026-09-30 18:00 |  |  |  | 116.59d |  | start no earlier than 2026-09-30 08:00 |  |  |  |
| 70 | 1.15 | **сборка системы дренажа для рекуператоров ввентиляции** | 2d? | 2026-09-30 09:00 A | 2026-10-01 18:00 A |  | 100% |  |  |  |  |  | 30h | 30h |
| 71 | 1.15.1 | Монтаж трассы слива в раковину с рекурператоров | 7h | 2026-09-30 09:00 A | 2026-09-30 17:00 A |  | 100% |  |  |  | start no earlier than 2026-09-30 09:00 | Труфанов А; Некрасов А | 14h | 14h |
| 72 | 1.15.2 | продолжить монтаж | 1d? | 2026-10-01 09:00 A | 2026-10-01 18:00 A |  | 100% |  |  |  | start no earlier than 2026-10-02 09:00 | Труфанов А; Некрасов А | 16h | 16h |
| 73 | 1.16 | Проверка весов на 2 линии красный смеситель, со слов валентина, после замены блока питания, работает, а потом выбивает весы, перестают работать | 1h | 2026-09-29 09:00 A | 2026-09-29 10:00 A |  | 100% |  |  |  | start no earlier than 2026-09-29 09:00 | Дедов В | 1h | 1h |
| 74 | 1.17 | Повторный замер параметров в 1 цеху, вентилляция (подробности по точкам у Домоводова) | 5h | 2026-09-25 09:00 A | 2026-09-25 15:00 A |  | 100% |  |  |  | start no earlier than 2026-09-25 09:00 | Труфанов А; Некрасов А | 10h | 10h |
| 75 | 1.18 | замеры в точках выброса вентиляции с проедставителем | 6h | 2026-09-29 09:00 A | 2026-09-29 16:00 A |  | 100% |  |  |  | start no earlier than 2026-09-29 09:00 | Труфанов А; Некрасов А | 12h | 12h |
| 76 | 1.19 | изготовить переход между прекондиционер и экструдер на 1 линию | 1d? | 2026-09-27 09:00 A | 2026-09-27 18:00 A |  | 100% |  |  |  | start no earlier than 2026-09-27 09:00 | Макаревич А | 8h | 8h |
| 77 | 1.20 | **замена ленты пролистывателя** | 22d | 2026-09-18 09:00 A | 2026-10-12 18:00 |  | 30% | 15.45d | 107.59d |  |  |  | 11.75h | 3.5h |
| 78 | 1.20.1 | Полная дефектовка пролистывателя, снятие лент/замена | 3h | 2026-09-18 09:00 A | 2026-09-18 12:00 A |  | 100% |  |  |  | start no earlier than 2026-09-18 09:00 | Тимофеев В | 3h | 3h |
| 79 | 1.20.2 | заявка на ремень клиновый для ленты + клей | 30min | 2026-09-18 12:00 A | 2026-09-18 12:30 A | 78 | 100% |  |  |  | start no earlier than 2026-09-18 08:00 | Зорькин В | 0.5h | 0.5h |
| 80 | 1.20.3 | контроль доставки | 15min | 2026-09-25 12:30 | 2026-09-25 12:45 | 79FS+7d |  |  | 119.12d | 11.53d | start no earlier than 2026-09-18 08:00 | Зорькин В | 0.25h |  |
| 81 | 1.20.4 | склеить ремень | 4h | 2026-10-09 09:00 | 2026-10-09 13:00 | 80FS+1d |  |  | 107.59d | 0d | start no earlier than 2026-10-09 09:00 | Тимофеев В | 4h |  |
| 82 | 1.20.5 | замена лент | 4h | 2026-10-12 14:00 | 2026-10-12 18:00 | 81FS+1d |  |  | 107.59d |  | start no earlier than 2026-09-18 08:00 | Тимофеев В | 4h |  |
| 83 | 1.21 | уборка остатков монтажа с рампы | 1h | 2026-09-14 09:00 A | 2026-09-14 10:00 A |  | 100% |  |  |  | start no earlier than 2026-09-14 09:00 | Некрасов А; Тимофеев В; Труфанов А | 3h | 3h |
| 84 | 1.22 | крепить табличку видеонаблюдение в офисе | 15min | 2026-09-14 09:00 A | 2026-09-14 09:15 A |  | 100% |  |  |  | start no earlier than 2026-09-14 09:00 | Тимофеев В | 0.25h | 0.25h |
| 85 | 1.23 | закрыть чердак у Лукаса | 15min | 2026-09-14 09:00 A | 2026-09-14 09:15 A |  | 100% |  |  |  | start no earlier than 2026-09-14 09:00 | Труфанов А; Некрасов А | 0.5h | 0.5h |

| ID | WBS | Task | Type | Duration | Start | Finish | Predecessors | Complete | Remaining | Total slack | Free slack | Constraint | Resources | Work | Actual work |
| --- | --- | --- | --- | --- | --- | --- | --- | --- | --- | --- | --- | --- | --- | --- | --- |
| 86 | 1.24 | **ремонт весов смеситель 1 линия** |  | 1.12d | 2026-09-24 09:00 A | 2026-09-25 10:00 A |  | 100% |  |  |  |  |  | 2h | 2h |
| 87 | 1.24.1 | Реанимировать весы, чтобы показывали. Смесители |  | 1h | 2026-09-24 09:00 A | 2026-09-24 10:00 A |  | 100% |  |  |  | start no earlier than 2026-09-24 09:00 | Дедов В | 1h | 1h |
| 88 | 1.24.2 | подключить блок питания найти на складе |  | 1h | 2026-09-25 09:00 A | 2026-09-25 10:00 A |  | 100% |  |  |  | start no earlier than 2026-09-25 08:00 | Бундин В | 1h | 1h |
| 89 | 1.25 | Закрыть каналыгу. На анкера |  | 2h | 2026-09-15 09:00 A | 2026-09-15 11:00 A |  | 100% |  |  |  | start no earlier than 2026-09-15 09:00 | Бундин В | 2h | 2h |
| 90 | 1.26 | **Дополнительное освещение на Рампе** |  | 15.14d | 2026-09-11 09:00 A | 2026-09-26 10:05 |  | 85% | 2.29d | 121.46d |  |  |  | 7.17h | 6.08h |
| 91 | 1.26.1 | Прокинуть кабель |  | 2h | 2026-09-11 09:00 A | 2026-09-11 11:00 A |  | 100% |  |  |  | start no earlier than 2026-09-11 09:00 | Бобренок В | 2h | 2h |
| 92 | 1.26.2 | установить доп светильник на погрузочной рампе |  | 4h | 2026-09-15 09:00 A | 2026-09-15 13:00 A | 91 | 100% |  |  |  | start no earlier than 2026-09-15 09:00 | Бобренок В | 4h | 4h |
| 93 | 1.26.3 | заявка выключатель |  | 5min | 2026-09-16 09:00 A | 2026-09-16 09:05 A | 92 | 100% |  |  |  | start no earlier than 2026-09-16 08:00 | Зорькин В | 0.08h | 0.08h |
| 94 | 1.26.4 | контроль |  | 5min | 2026-09-25 09:00 | 2026-09-25 09:05 | 93FS+7d |  |  | 121.46d | 0d | start no earlier than 2026-09-25 09:00 | Зорькин В | 0.08h |  |
| 95 | 1.26.5 | пожключение выключателя |  | 1h | 2026-09-26 09:05 | 2026-09-26 10:05 | 94FS+1d |  |  | 121.46d |  | start no earlier than 2026-09-26 09:00 | Бобренок В | 1h |  |
| 96 | 1.27 | востановить светильник отсек выгрузки ГП + установить доп светильник |  | 4h | 2026-09-09 09:00 A | 2026-09-09 13:00 A |  | 100% |  |  |  | start no earlier than 2026-09-09 09:00 | Бундин В | 4h | 4h |
| 97 | 1.28 | **реконструкция хранения гидролизатов и маршрут подачи навесок** |  | 45.06d | 2026-09-08 09:00 A | 2026-10-29 09:30 |  | 37% | 28.29d | 94.53d |  |  |  | 63.08h | 24.25h |
| 98 | 1.28.1 | **перенос системы отопления** |  | 0.12d | 2026-09-11 09:00 A | 2026-09-11 10:00 A |  | 100% |  |  |  |  |  | 1h | 1h |
| 99 | 1.28.1.1 | посик сварщиков |  | 1h | 2026-09-11 09:00 A | 2026-09-11 10:00 A |  | 100% |  |  |  | start no earlier than 2026-09-11 09:00 | Домоводов К | 1h | 1h |
| 100 | 1.28.2 | **монтаж доп плащадки** |  | 25.03d | 2026-09-28 09:00 A | 2026-10-29 09:15 |  | 7% | 23.24d | 94.56d |  |  |  | 17.5h | 1.25h |
| 101 | 1.28.2.1 | составить чертеж площадки |  | 1h | 2026-09-28 09:00 A | 2026-09-28 10:00 A |  | 100% |  |  |  | start no earlier than 2026-09-28 09:00 | Домоводов К | 1h | 1h |
| 102 | 1.28.2.2 | заявка |  | 15min | 2026-10-13 09:00 A | 2026-10-13 09:15 A | 101FS+1d | 100% |  |  |  | start no earlier than 2026-10-13 09:00 | Домоводов К | 0.25h | 0.25h |
| 103 | 1.28.2.3 | получен счет | milestone | 0d | 2026-10-19 08:00 A | 2026-10-19 08:00 A |  | 100% |  |  |  | start no earlier than 2026-10-19 08:00 | Домоводов К |  |  |
| 104 | 1.28.2.4 | контроль доставки |  | 15min | 2026-10-26 09:00 | 2026-10-26 09:15 | 102FS+5d, 103FS+5d |  |  | 94.53d | 0d | start no earlier than 2026-09-08 08:00 | Зорькин В | 0.25h |  |
| 105 | 1.28.2.5 | монтаж |  | 2d | 2026-10-27 09:15 | 2026-10-29 09:15 | 104FS+1d |  |  | 94.56d |  | start no earlier than 2026-09-28 09:00 | Тимофеев В | 16h |  |
| 106 | 1.28.3 | **монтаж перегородка корридор** |  | 3.03d | 2026-10-26 09:15 | 2026-10-29 09:30 |  |  |  | 94.53d |  |  |  | 16.25h |  |
| 107 | 1.28.3.1 | контроль доставки |  | 15min | 2026-10-26 09:15 | 2026-10-26 09:30 | 104 |  |  | 94.53d | 0d | start no earlier than 2026-09-08 08:00 | Зорькин В | 0.25h |  |
| 108 | 1.28.3.2 | монтаж |  | 2d | 2026-10-27 09:30 | 2026-10-29 09:30 | 107FS+1d |  |  | 94.53d |  | start no earlier than 2026-09-28 09:00 | Тимофеев В | 16h |  |
| 109 | 1.28.4 | **врезка двери в проем на упаковку** |  | 0.04d | 2026-09-09 09:00 | 2026-09-09 09:20 |  |  |  | 138.55d |  |  |  | 0.33h |  |
| 110 | 1.28.4.1 | планирование с Олегом, как сделана стена |  | 20min | 2026-09-09 09:00 | 2026-09-09 09:20 |  |  |  | 138.55d |  | start no earlier than 2026-09-09 09:00 | Домоводов К | 0.33h |  |
| 111 | 1.28.5 | востановить уплотнения двери в гидролизатной, все резинки, примыкания |  | 3h | 2026-10-20 09:00 | 2026-10-20 12:00 |  |  |  | 101.22d |  | start no earlier than 2026-10-20 09:00 | Тимофеев В; Николаев | 6h |  |
| 112 | 1.28.6 | перенос батареи отопления в гидролизатной |  | 2h | 2026-10-12 09:00 A | 2026-10-12 11:00 A |  | 100% |  |  |  | start no earlier than 2026-10-12 09:00 | Труфанов А; Бобренок В | 4h | 4h |
| 113 | 1.28.7 | демонтаж бетонного отлива/отмостка |  | 2d | 2026-09-08 09:00 A | 2026-09-09 18:00 A |  | 100% |  |  |  | start no earlier than 2026-09-08 08:00 | Олег | 16h | 16h |
| 114 | 1.28.8 | Помощь Олегу пока ставит шпильки |  | 1h | 2026-10-12 09:00 A | 2026-10-12 10:00 A |  | 100% |  |  |  | start no earlier than 2026-10-12 08:00 | Труфанов А; Бобренок В | 2h | 2h |

| ID | WBS | Task | Type | Duration | Start | Finish | Predecessors | Complete | Remaining | Total slack | Free slack | Constraint | Resources | Work | Actual work |
| --- | --- | --- | --- | --- | --- | --- | --- | --- | --- | --- | --- | --- | --- | --- | --- |
| 115 | 1.29 | **ревизия парогенератор КАРЧЕР** |  | 3.03d? | 2026-09-21 09:00 A | 2026-09-24 09:15 A |  | 100% |  |  |  |  |  | 8.5h | 8.5h |
| 116 | 1.29.1 | орг отправить курьера на пнд |  | 15min | 2026-09-23 09:00 A | 2026-09-23 09:15 A |  | 100% |  |  |  | start no earlier than 2026-09-23 09:00 | Зорькин В | 0.25h | 0.25h |
| 117 | 1.29.2 | контроль доставки |  | 15min | 2026-09-24 09:00 A | 2026-09-24 09:15 A | 116 | 100% |  |  |  | start no earlier than 2026-09-24 09:00 | Зорькин В | 0.25h | 0.25h |
| 118 | 1.29.3 | монтаж |  | 1d? | 2026-09-21 09:00 A | 2026-09-21 18:00 A | 117 | 100% |  |  |  | start no earlier than 2026-09-25 09:00 | Тимофеев В | 8h | 8h |
| 119 | 1.30 | **подключить циклоны 1 и 2 линия** |  | 1.12d | 2026-09-09 09:00 A | 2026-09-10 10:00 A |  | 100% |  |  |  |  |  | 1.17h | 1.17h |
| 120 | 1.30.1 | контроль поставка кабель |  | 10min | 2026-09-09 09:00 A | 2026-09-09 09:10 A |  | 100% |  |  |  | start no earlier than 2026-09-09 09:00 | Зорькин В | 0.17h | 0.17h |
| 121 | 1.30.2 | монтаж кабеля (временно удлинить от сущестующих концов) |  | 1h | 2026-09-10 09:00 A | 2026-09-10 10:00 A |  | 100% |  |  |  | start no earlier than 2026-09-10 09:00 | Бундин В | 1h | 1h |
| 122 | 1.31 | **бактерицидные лампы** |  | 7.12d | 2026-09-09 09:00 A | 2026-09-16 10:00 A |  | 100% |  |  |  |  |  | 3h | 3h |
| 123 | 1.31.1 | замена бактерицидных ламп в коридоре и посмотреть, где не горят |  | 1h | 2026-09-09 09:00 A | 2026-09-09 10:00 A |  | 100% |  |  |  | start no earlier than 2026-09-09 09:00 | Бундин В | 1h | 1h |
| 124 | 1.31.2 | ремонт лампы снятой бундиным с мойки экструдера |  | 1h | 2026-09-16 09:00 A | 2026-09-16 10:00 A |  | 100% |  |  |  | start no earlier than 2026-09-16 09:00 | Бундин В | 1h | 1h |
| 125 | 1.31.3 | ремонт лампы в тамбуре вывоз ГП |  | 1h | 2026-09-16 09:00 A | 2026-09-16 10:00 A |  | 100% |  |  |  | start no earlier than 2026-09-16 09:00 | Бундин В | 1h | 1h |
| 126 | 1.32 | исправить "не возможность открыть" краны фильтр жир 2л |  | 30min | 2026-09-10 09:00 A | 2026-09-10 09:30 A |  | 100% |  |  |  | start no earlier than 2026-09-10 09:00 | Тимофеев В | 0.5h | 0.5h |
| 127 | 1.33 | ремонт силиконовых уплотнений печи на сетке 1 и 2 л |  | 3h? | 2026-09-10 09:00 A | 2026-09-10 12:00 A |  | 100% |  |  |  | start no earlier than 2026-09-10 09:00 | Бундин В | 3h | 3h |
| 128 | 1.34 | **сместить квадропак в сторону охладителя 2л** |  | 20.5d | 2026-09-10 09:00 A | 2026-09-30 13:00 A |  | 100% |  |  |  |  |  | 20h | 20h |
| 129 | 1.34.1 | отключение / перенгос мехнизмов |  | 3h | 2026-09-10 09:00 A | 2026-09-10 12:00 A |  | 100% |  |  |  | start no earlier than 2026-09-10 09:00 | Некрасов А; Труфанов А | 6h | 6h |
| 130 | 1.34.2 | подключение |  | 3h | 2026-09-11 09:00 A | 2026-09-11 12:00 A |  | 100% |  |  |  | start no earlier than 2026-09-11 09:00 | Некрасов А; Труфанов А | 6h | 6h |
| 131 | 1.34.3 | доработка перил |  | 4h | 2026-09-30 09:00 A | 2026-09-30 13:00 A |  | 100% |  |  |  | start no earlier than 2026-09-30 09:00 | Труфанов А; Некрасов А | 8h | 8h |
| 132 | 1.35 | **квадропак - сделать силиконовый успокоитель между нория и весы 800*250 шаг шторок 60** |  | 22.25d | 2026-09-25 09:00 A | 2026-10-21 11:00 |  | 7% | 20.66d | 100.34d |  |  |  | 2.33h | 0.17h |
| 133 | 1.35.1 | заявка прозрачный силикон |  | 10min | 2026-09-25 09:00 A | 2026-09-25 09:10 A |  | 100% |  |  |  | start no earlier than 2026-09-25 09:00 | Зорькин В | 0.17h | 0.17h |
| 134 | 1.35.2 | доставка контроль |  | 10min | 2026-10-09 09:00 | 2026-10-09 09:10 | 133FS+7d |  |  | 109.32d | 8.98d | start no earlier than 2026-10-09 09:00 | Зорькин В | 0.17h |  |
| 135 | 1.35.3 | сборка |  | 2h | 2026-10-21 09:00 | 2026-10-21 11:00 | 134 |  |  | 100.34d |  | start no earlier than 2026-10-21 09:00 | Тимофеев В | 2h |  |
| 136 | 1.36 | квадропак - ремонт люфта штанги нажима роликов открытия захватов на станции №1 |  | 4h | 2026-09-30 09:00 A | 2026-09-30 13:00 A |  | 100% |  |  |  | start no earlier than 2026-09-30 09:00 | Тимофеев В | 4h | 4h |
| 137 | 1.37 | квадропак - кронштейн пневовстряхивателя - востановить резтбу сквозную |  | 1h | 2026-09-30 09:00 A | 2026-09-30 10:00 A |  | 100% |  |  |  | start no earlier than 2026-09-30 09:00 | Тимофеев В | 1h | 1h |
| 138 | 1.38 | Ревизия утечек воздуха на квадропаке (важно проверить пневмораспределителях) и вакуумную систему (если работают, отменяем задание) | manual | 2h | 2026-09-23 09:00 A | 2026-09-23 11:00 A |  | 100% |  |  |  | start no earlier than 2026-09-23 09:00 | Тимофеев В | 2h | 2h |
| 139 | 1.39 | Комплексное ТО квадропака, проверка всех соединений, протяжка болтов на всех узлах | manual | 2h | 2026-09-23 09:00 A | 2026-09-23 11:00 A |  | 100% |  |  |  | start no earlier than 2026-09-23 09:00 | Тимофеев В | 2h | 2h |
| 140 | 1.40 | Сделать основную кнопку на НОТИСЕ, чтоб срабатывало от нее, а не от блока управления (схему взять у нас в кабинете) | manual | 1h | 2026-09-22 09:00 A | 2026-09-22 10:00 A |  | 100% |  |  |  | start no earlier than 2026-09-22 09:00 | Дедов В | 1h | 1h |
| 141 | 1.41 | Убрать все кабеля на полу в зоне фасовки, теко-нотис (кабельный менеджмент) |  | 2h | 2026-09-10 09:00 A | 2026-09-10 11:00 A |  | 100% |  |  |  | start no earlier than 2026-09-10 09:00 | Бундин В | 2h | 2h |
| 142 | 1.42 | Клемная коробка на жирах сделать, сейчас вся висит на хомутах 2 линия |  | 1h | 2026-09-07 09:00 A | 2026-09-07 10:00 A |  | 100% |  |  |  | start no earlier than 2026-09-05 09:00 | Дедов В | 1h | 1h |
| 143 | 1.43 | Ошибка на баке жиротопки 2 линия Err.4 /разобраться и устранить причину |  | 1h | 2026-09-04 09:00 A | 2026-09-04 10:00 A |  | 100% |  |  |  | start no earlier than 2026-09-04 09:00 | Бобренок В | 1h | 1h |
| 144 | 1.44 | Установить новые газлифты, которые получил Бобренок на жиротопку 2 этаж |  | 2h | 2026-09-07 09:00 A | 2026-09-07 11:00 A |  | 100% |  |  |  | start no earlier than 2026-09-07 09:00 | Тимофеев В | 2h | 2h |

| ID | WBS | Task | Type | Duration | Start | Finish | Predecessors | Complete | Constraint | Resources | Work | Actual work |
| --- | --- | --- | --- | --- | --- | --- | --- | --- | --- | --- | --- | --- |
| 145 | 1.45 | **Не работают роль ставни на жирах, не стопоряться сделать/устранить неисправность** |  | 20.02d | 2026-09-09 09:00 A | 2026-09-29 09:10 A |  | 100% |  |  | 8.33h | 8.33h |
| 146 | 1.45.1 | Вызвать подрядчика/контроль |  | 10min | 2026-09-09 09:00 A | 2026-09-09 09:10 A |  | 100% | start no earlier than 2026-09-09 09:00 | Зорькин В | 0.17h | 0.17h |
| 147 | 1.45.2 | получить счет на ремонт |  | 1d | 2026-09-09 09:10 A | 2026-09-10 09:10 A | 146 | 100% | start no earlier than 2026-09-08 09:00 | Зорькин В | 8h | 8h |
| 148 | 1.45.3 | согласовать с подрядчиком дату ремонта |  | 10min | 2026-09-29 09:00 A | 2026-09-29 09:10 A | 147 | 100% | start no earlier than 2026-09-29 09:00 | Зорькин В | 0.17h | 0.17h |
| 149 | 1.46 | закреить отбойник корридор навесок (заанкерить) |  | 1h | 2026-09-03 09:00 A | 2026-09-03 10:00 A |  | 100% | start no earlier than 2026-09-03 08:00 | Бобренок В | 1h | 1h |
| 150 | 1.47 | Переподключение кондиционера срежима кондиционера на автоматический |  | 15min | 2026-09-02 09:00 A | 2026-09-02 09:15 A |  | 100% | start no earlier than 2026-09-02 09:00 | Бобренок В | 0.25h | 0.25h |
| 151 | 1.48 | Замена редуктора поворотного стола |  | 1h | 2026-09-02 09:00 A | 2026-09-02 10:00 A |  | 100% | start no earlier than 2026-09-02 09:00 | Бобренок В | 1h | 1h |
| 152 | 1.49 | Программирование частотника теко 0,4 привод смещения ленты |  | 2h | 2026-09-02 09:00 A | 2026-09-02 11:00 A |  | 100% | start no earlier than 2026-09-02 09:00 | Тимофеев В | 2h | 2h |
| 153 | 1.50 | Прозвонить кабель паллетных весов ошибка Error 10 |  | 1h | 2026-09-07 09:00 A | 2026-09-07 10:00 A |  | 100% | start no earlier than 2026-09-05 09:00 | Дедов В | 1h | 1h |
| 154 | 1.51 | Замена подшипников на ножевом узле |  | 2h | 2026-09-01 09:00 A | 2026-09-01 11:00 A |  | 100% | start no earlier than 2026-09-01 09:00 | Бундин В | 2h | 2h |
| 155 | 1.52 | Замена насоса на водяной рубашке жиротопке 2 этаж |  | 2h | 2026-09-01 09:00 A | 2026-09-01 11:00 A |  | 100% | start no earlier than 2026-09-01 09:00 | Бундин В | 2h | 2h |
| 156 | 1.53 | Замена контактора 1 линия 2 зона экструдера |  | 1h | 2026-09-01 09:00 A | 2026-09-01 10:00 A |  | 100% | start no earlier than 2026-09-01 09:00 | Бундин В | 1h | 1h |
| 157 | 1.54 | Редуктор смесителя 1 линия, собрать информацию, что не так, что нужно сделать |  | 30min | 2026-09-02 09:00 A | 2026-09-02 09:30 A |  | 100% | start no earlier than 2026-09-02 09:00 | Тимофеев В | 0.5h | 0.5h |
| 158 | 1.55 | Ремонт мухобойки 1 цех в корридоре завоза навесок |  | 1h | 2026-09-01 09:00 A | 2026-09-01 10:00 A |  | 100% | start no earlier than 2026-09-01 09:00 | Труфанов А | 1h | 1h |
| 159 | 1.56 | капает с кондиционера ближе к жировику (устранить) |  | 2h | 2026-08-31 09:00 A | 2026-08-31 11:00 A |  | 100% | start no earlier than 2026-08-31 09:00 | Бундин В; Тимофеев В | 4h | 4h |
| 160 | 1.57 | отвезти внутренний блок с 1 цеха на синий склад | manual | 1h | 2026-08-30 09:00 A | 2026-08-30 10:00 A |  | 100% | start no earlier than 2026-08-30 09:00 | Бундин В | 1h | 1h |
| 161 | 1.58 | чистка фильтра кондиционера между печками | manual | 1h | 2026-08-31 09:00 A | 2026-08-31 10:00 A |  | 100% | start no earlier than 2026-08-31 09:00 | Бундин В | 1h | 1h |
| 162 | 1.59 | ревизия приточной вентиляции (протяжка контактов и т.д.) | manual | 3h | 2026-08-31 09:00 A | 2026-08-31 12:00 A |  | 100% | start no earlier than 2026-08-31 09:00 | Дедов В | 3h | 3h |
| 163 | 1.60 | прикрутить лоток между барабанами, чтобы не бил о лопасти 1 линия | manual | 1h | 2026-08-30 09:00 A | 2026-08-30 10:00 A |  | 100% | start no earlier than 2026-08-30 09:00 | Бундин В | 1h | 1h |
| 164 | 1.61 | улитка на подиуме за цехом, прикрутить отвод в бок (отвод под подиумом) | manual | 1h | 2026-08-31 09:00 A | 2026-08-31 10:00 A |  | 100% | start no earlier than 2026-08-31 09:00 | Бундин В | 1h | 1h |
| 165 | 1.62 | течет вода с поломоечной машинки - разобраться | manual | 2h | 2026-08-31 09:00 A | 2026-08-31 11:00 A |  | 100% | start no earlier than 2026-08-31 09:00 | Дедов В | 2h | 2h |
| 166 | 1.63 | **почистить шнек сухого гидрализата (1 линия)** |  | 0.12d | 2026-08-28 08:00 A | 2026-08-28 10:00 A |  | 100% |  | Бобренок В | 3h | 3h |
| 167 | 1.63.1 | замена пошипников |  | 1h | 2026-08-28 08:00 A | 2026-08-28 10:00 A |  | 100% | start no earlier than 2026-08-28 08:00 | Тимофеев В; Некрасов А | 2h | 2h |
| 168 | 1.64 | замена фильтров на приточке |  | 1h | 2026-08-27 09:00 A | 2026-08-27 10:00 A |  | 100% | start no earlier than 2026-08-27 09:00 | Дедов В | 1h | 1h |

| ID | WBS | Task | Duration | Start | Finish | Predecessors | Complete | Remaining | Total slack | Free slack | Constraint | Resources | Work | Actual work |
| --- | --- | --- | --- | --- | --- | --- | --- | --- | --- | --- | --- | --- | --- | --- |
| 169 | 1.65 | **продумать как сделать герметичную крышку на смесителе сухого гидрализата** | 36.25d | 2026-08-27 09:00 A | 2026-10-06 11:00 |  | 57% | 15.54d | 112.34d |  |  |  | 20h | 12h |
| 170 | 1.65.1 | печать уплотненителей крышек | 4h | 2026-09-28 09:00 | 2026-09-28 13:00 |  |  |  | 118.84d | 6.5d | start no earlier than 2026-09-28 09:00 | Домоводов К | 4h |  |
| 171 | 1.65.2 | изготовить крышку (расскажу по телефону) | 4h | 2026-08-27 09:00 A | 2026-08-27 13:00 A |  | 100% |  |  |  | start no earlier than 2026-08-27 09:00 | Бобренок В; Шуранов Ю | 8h | 8h |
| 172 | 1.65.3 | изготовить крышку для 2 линии (как сделал Слава) | 4h | 2026-09-01 09:00 A | 2026-09-01 13:00 A |  | 100% |  |  |  | start no earlier than 2026-09-01 09:00 | Макаревич А | 4h | 4h |
| 173 | 1.65.4 | установка на струбцинах с уплотнителями | 2h | 2026-10-06 09:00 | 2026-10-06 11:00 | 170 |  |  | 112.34d |  | start no earlier than 2026-10-06 09:00 | Тимофеев В; Домоводов К | 4h |  |
| 174 | 1.66 | **метал от тенов печи, устранить причину** | 15.38d? | 2026-08-24 09:00 A | 2026-09-11 12:00 A |  | 100% |  |  |  |  |  | 5.42h | 5.42h |
| 175 | 1.66.1 | выяснить сгорел тен русский или китайский (будет ночью остановка) | 15min | 2026-08-27 09:00 A | 2026-08-27 09:15 A |  | 100% |  |  |  | start no earlier than 2026-08-27 09:00 | Бобренок В | 0.25h | 0.25h |
| 176 | 1.66.2 | вскрыть 2 зону и посмотреть какой тен (мойка) | 1h | 2026-08-31 09:00 A | 2026-08-31 10:00 A |  | 100% |  |  |  | start no earlier than 2026-09-02 09:00 | Некрасов А | 1h | 1h |
| 177 | 1.66.3 | осмотр состояния тенов/ планирование замены | 10min | 2026-08-27 09:00 A | 2026-08-27 09:10 A |  | 100% |  |  |  | start no earlier than 2026-08-27 09:00 | Бобренок В | 0.17h | 0.17h |
| 178 | 1.66.4 | выяснить статус поставки тенов из китая | 1h | 2026-08-24 09:00 A | 2026-08-24 10:00 A |  | 100% |  |  |  | start no earlier than 2026-08-24 09:00 | Шуранов Ю | 1h | 1h |
| 179 | 1.66.5 | замена заброкованных осмотром тенов | 3h? | 2026-09-11 09:00 A | 2026-09-11 12:00 A |  | 100% |  |  |  | start no earlier than 2026-09-11 09:00 | Тимофеев В | 3h | 3h |
| 180 | 1.67 | замена плата 485 в контроллере 2 линия | 1h | 2026-08-21 09:00 A | 2026-08-21 10:00 A |  | 100% |  |  |  | start no earlier than 2026-08-21 09:00 | Дедов В | 1h | 1h |
| 181 | 1.68 | перемонтаж частотный привод сух гидролизат | 2h | 2026-09-02 09:00 A | 2026-09-02 11:00 A |  | 100% |  |  |  | start no earlier than 2026-09-04 09:00 | Некрасов А; Дедов В | 4h | 4h |
| 182 | 1.69 | поменять светильник где вывозят готовую продукцию (с люлки) | 2h | 2026-08-31 09:00 A | 2026-08-31 11:00 A |  | 100% |  |  |  | start no earlier than 2026-08-31 09:00 | Тимофеев В; Бундин В | 4h | 4h |
| 183 | 1.70 | на нотис настроить кнопку, чтобы работала в цикле | 1h | 2026-08-20 09:00 A | 2026-08-20 10:00 A |  | 100% |  |  |  | start no earlier than 2026-08-20 09:00 | Дедов В | 1h | 1h |
| 184 | 1.71 | изготовление герметичной крышки под мойкой экструдера (объясню по телефону) занкрепить на анкера | 2h | 2026-08-19 08:00 A | 2026-08-19 11:00 A |  | 100% |  |  |  | start no earlier than 2026-08-19 08:00 | Бобренок В | 2h | 2h |
| 185 | 1.72 | **проверка пылесоса, почему не стартует (в слесарке)** | 1d? | 2026-08-25 09:00 A | 2026-08-25 18:00 A |  | 100% |  |  |  |  | Бобренок В | 16h | 16h |
| 186 | 1.72.1 | заказать двигатель и выяснить на гарантии он или нет | 1d? | 2026-08-25 09:00 A | 2026-08-25 18:00 A |  | 100% |  |  |  | start no earlier than 2026-08-25 08:00 | Шуранов Ю | 8h | 8h |
| 187 | 1.73 | ремонт свет в раздевалке | 30min | 2026-08-14 09:00 A | 2026-08-14 09:30 A |  | 100% |  |  |  | start no earlier than 2026-08-14 09:00 | Бундин В | 0.5h | 0.5h |
| 188 | 1.74 | стиральная машинка проверка насоса слива, разборка, фото шильдик. Не качает. | 2h | 2026-08-15 09:00 A | 2026-08-17 11:00 A |  | 100% |  |  |  | start no earlier than 2026-08-15 09:00 | Бундин В | 2h | 2h |
| 189 | 1.75 | **настройка пробники на толстую цветную пленку** | 9.38d? | 2026-08-14 09:00 A | 2026-08-27 12:00 A |  | 100% |  |  |  |  |  | 25.25h | 25.25h |
| 190 | 1.75.1 | тест пленки на пробнике с Луговских В в 11 00 | 1h | 2026-08-14 09:00 A | 2026-08-14 10:00 A |  | 100% |  |  |  | start no earlier than 2026-08-14 09:00 | Тимофеев В | 1h | 1h |
| 191 | 1.75.2 | установить протяжной ролик к турбе от ТЕКО 1.5 с синего,снять с синего примерка | 2h | 2026-08-17 09:00 A | 2026-08-17 11:00 A |  | 100% |  |  |  | start no earlier than 2026-08-17 09:00 | Тимофеев В | 2h | 2h |
| 192 | 1.75.3 | настройка пробника с режимом фотометки | 1h | 2026-08-27 09:00 A | 2026-08-27 10:00 A |  | 100% |  |  |  | start no earlier than 2026-08-27 09:00 | Дедов В | 1h | 1h |
| 193 | 1.75.4 | получить пневмоцилиндр | 15min | 2026-08-20 09:00 A | 2026-08-20 09:15 A |  | 100% |  |  |  | start no earlier than 2026-08-20 09:00 | Тимофеев В | 0.25h | 0.25h |
| 194 | 1.75.5 | изготовление крепления вспомогательной протяжки | 6h | 2026-08-21 09:00 A | 2026-08-21 16:00 A |  | 100% |  |  |  | start no earlier than 2026-08-21 09:00 | Тимофеев В | 6h | 6h |
| 195 | 1.75.6 | подключение частотника через реле от двигателя протяжки (спросить Константина) | 1d? | 2026-08-25 09:00 A | 2026-08-25 18:00 A |  | 100% |  |  |  | start no earlier than 2026-08-25 08:00 | Бундин В | 8h | 8h |
| 196 | 1.75.7 | настройка частотника для работы пробника | 3h | 2026-08-27 09:00 A | 2026-08-27 12:00 A |  | 100% |  |  |  | start no earlier than 2026-08-27 09:00 | Тимофеев В; Шуранов Ю | 6h | 6h |
| 197 | 1.75.8 | жалобы, что пробники бьют периодически током- проверить соединения, контакты и т.д. | 1h | 2026-08-26 08:00 A | 2026-08-26 10:00 A |  | 100% |  |  |  | start no earlier than 2026-08-26 08:00 | Бобренок В | 1h | 1h |
| 198 | 1.76 | настройка параметров ЧП сухой ГДЗ сбиты, переставлен с линии 2. Снял Слава, найти. Настройка в птц | 15min | 2026-08-20 09:00 A | 2026-08-20 09:15 A |  | 100% |  |  |  | start no earlier than 2026-08-20 09:00 | Дедов В | 0.25h | 0.25h |

| ID | WBS | Task | Type | Duration | Start | Finish | Predecessors | Complete | Remaining | Total slack | Free slack | Constraint | Resources | Work | Actual work |
| --- | --- | --- | --- | --- | --- | --- | --- | --- | --- | --- | --- | --- | --- | --- | --- |
| 199 | 1.77 | **ТЕКО ремонт кнопки, которую снял Бобренок В , вернуть то что снял с 3ц** |  | 19.12d | 2026-08-13 09:00 A | 2026-09-08 10:00 A |  | 100% |  |  |  |  |  | 2.75h | 2.75h |
| 200 | 1.77.1 | осмотр |  | 30min | 2026-08-13 09:00 A | 2026-08-13 09:30 A |  | 100% |  |  |  | start no earlier than 2026-08-13 09:00 | Домоводов К | 0.5h | 0.5h |
| 201 | 1.77.2 | заявка в ТЕКО платы |  | 30min | 2026-08-18 09:00 A | 2026-08-18 09:30 A | 200 | 100% |  |  |  | start no earlier than 2026-08-18 09:00 | Зорькин В | 0.5h | 0.5h |
| 202 | 1.77.3 | контроль поставки |  | 15min | 2026-09-04 09:00 A | 2026-09-04 09:15 A | 201FS+10d | 100% |  |  |  | start no earlier than 2026-09-04 09:00 | Зорькин В | 0.25h | 0.25h |
| 203 | 1.77.4 | монтаж платы на место |  | 1h | 2026-09-08 09:00 A | 2026-09-08 10:00 A | 202FS+1d | 100% |  |  |  | start no earlier than 2026-09-09 09:00 | Тимофеев В | 1h | 1h |
| 204 | 1.77.5 | Вернуть голову с восстановленной клавиатурой на НОТИС в 3 цех |  | 30min | 2026-09-08 09:00 A | 2026-09-08 09:30 A |  | 100% |  |  |  | start no earlier than 2026-09-09 09:00 | Тимофеев В | 0.5h | 0.5h |
| 205 | 1.78 | установить вент решетки на трассу кондиционера |  | 30min | 2026-08-12 09:00 A | 2026-08-12 09:30 A |  | 100% |  |  |  | start no earlier than 2026-08-12 09:00 | Труфанов А; Некрасов А | 1h | 1h |
| 206 | 1.79 | течь сливной трубы кондиционара править трассу |  | 2h | 2026-08-12 09:00 A | 2026-08-12 11:00 A |  | 100% |  |  |  | start no earlier than 2026-08-12 09:00 | Труфанов А; Некрасов А | 4h | 4h |
| 207 | 1.80 | слить конденсат и чистка фильтров, продуть радиаторы компрессора | manual | 2h | 2026-08-09 09:00 A | 2026-08-09 11:00 A |  | 100% |  |  |  | start no earlier than 2026-08-09 09:00 | Бундин В | 2h | 2h |
| 208 | 1.81 | заменить камеру над квадропаком (слева) -камера у нас в слесарке, взять в помощь оператора | manual | 1h | 2026-08-09 09:00 A | 2026-08-09 10:00 A |  | 100% |  |  |  | start no earlier than 2026-08-09 09:00 | Бундин В | 1h | 1h |
| 209 | 1.82 | дверь тяжело открывается в гидрализаторную (попробовать поправить, задевает металл-металл) |  | 1h | 2026-08-06 09:00 A | 2026-08-06 10:00 A |  | 100% |  |  |  | start no earlier than 2026-08-06 08:00 | Труфанов А | 1h | 1h |
| 210 | 1.83 | заменить плафон в душе | manual | 1h | 2026-08-06 09:00 A | 2026-08-06 10:00 A |  | 100% |  |  |  | start no earlier than 2026-08-06 09:00 | Бундин В | 1h | 1h |
| 211 | 1.84 | ТО пробники и Теко 0,4 (чистка тен, ножей, смазка) |  | 4h | 2026-08-05 08:00 A | 2026-08-05 13:00 A |  | 100% |  |  |  | start no earlier than 2026-08-05 08:00 | Макаревич А | 4h | 4h |
| 212 | 1.85 | **палетообмостчик монтаж в 1ц** |  | 61.38d | 2026-08-12 09:00 A | 2026-10-23 12:00 |  | 20% | 49.1d | 98.22d |  |  |  | 11.25h | 1.25h |
| 213 | 1.85.1 | получить договор + счет |  | 1h | 2026-08-12 09:00 A | 2026-08-12 10:00 A |  | 100% |  |  |  | start no earlier than 2026-08-12 09:00 | Зорькин В | 1h | 1h |
| 214 | 1.85.2 | **согласвоание договор** |  | 2.89d | 2026-08-12 10:00 A | 2026-08-17 09:05 A | 213 | 100% |  |  |  |  |  | 0.17h | 0.17h |
| 215 | 1.85.2.1 | передать Маше |  | 5min | 2026-08-12 10:00 A | 2026-08-12 10:05 A |  | 100% |  |  |  | start no earlier than 2026-08-12 09:00 | Домоводов К | 0.08h | 0.08h |
| 216 | 1.85.2.2 | контроль |  | 5min | 2026-08-17 09:00 A | 2026-08-17 09:05 A | 215FS+3d | 100% |  |  |  | start no earlier than 2026-08-17 09:00 | Домоводов К | 0.08h | 0.08h |
| 217 | 1.85.3 | оплата подать счет | milestone | 0d | 2026-08-12 09:00 A | 2026-08-12 09:00 A |  | 100% |  |  |  | start no earlier than 2026-08-12 09:00 | Домоводов К |  |  |
| 218 | 1.85.4 | доставка конетроль |  | 5min | 2026-09-01 09:00 A | 2026-09-01 09:05 A |  | 100% |  |  |  | start no earlier than 2026-09-01 09:00 | Зорькин В | 0.08h | 0.08h |
| 219 | 1.85.5 | прокинуть кабель для подключения обмотчика |  | 2h | 2026-10-23 09:00 | 2026-10-23 11:00 |  |  |  | 98.34d |  | start no earlier than 2026-10-23 09:00 | Труфанов А; Некрасов А | 4h |  |
| 220 | 1.85.6 | монтаж |  | 3h | 2026-10-23 09:00 | 2026-10-23 12:00 |  |  |  | 98.22d |  | start no earlier than 2026-10-23 09:00 | Некрасов А; Труфанов А | 6h |  |
| 221 | 1.86 | **замена сетка печи линия 1** |  | 44.09d? | 2026-08-12 09:00 A | 2026-10-02 09:45 |  | 8% | 40.52d? | 115.5d |  |  |  | 9.5h | 1h |
| 222 | 1.86.1 | замерить параметры сетки |  | 15min | 2026-08-12 09:00 A | 2026-08-12 09:15 A |  | 100% |  |  |  | start no earlier than 2026-08-12 09:00 | Домоводов К; Тимофеев В | 0.5h | 0.5h |
| 223 | 1.86.2 | получить счет на сетку КИТАЙ |  | 15min | 2026-08-17 09:00 A | 2026-08-17 09:15 A | 222 | 100% |  |  |  | start no earlier than 2026-08-17 09:00 | Зорькин В | 0.25h | 0.25h |
| 224 | 1.86.3 | контроль оплата | milestone | 0d | 2026-08-21 09:00 A | 2026-08-21 09:00 A | 223FS+2d | 100% |  |  |  | start no earlier than 2026-08-21 09:00 | Зорькин В |  |  |
| 225 | 1.86.4 | контроль доставки |  | 15min | 2026-09-30 09:00 A | 2026-09-30 09:15 A | 224FS+30d | 100% |  |  |  | start no earlier than 2026-09-30 09:00 | Зорькин В | 0.25h | 0.25h |
| 226 | 1.86.5 | приемка |  | 30min | 2026-09-30 09:15 | 2026-09-30 09:45 | 225 |  |  | 115.5d | 0d | start no earlier than 2026-08-10 08:00 | Зорькин В | 0.5h |  |
| 227 | 1.86.6 | замена |  | 1d? | 2026-10-01 09:45 | 2026-10-02 09:45 | 226FS+1d |  |  | 115.5d |  | start no earlier than 2026-09-26 09:00 | Тимофеев В | 8h |  |

| ID | WBS | Task | Type | Duration | Start | Finish | Predecessors | Complete | Remaining | Actual finish | Total slack | Constraint | Resources | Work | Actual work |
| --- | --- | --- | --- | --- | --- | --- | --- | --- | --- | --- | --- | --- | --- | --- | --- |
| 228 | 1.87 | **зависает диспелей на расходомере 2л** |  | 59.06d | 2026-08-11 09:00 A | 2026-10-20 09:30 |  | 82% | 10.74d |  | 101.53d |  |  | 2.75h | 2.25h |
| 229 | 1.87.1 | контроль поставки |  | 15min | 2026-08-11 09:00 A | 2026-08-11 09:15 A |  | 100% |  |  |  | start no earlier than 2026-08-11 09:00 | Домоводов К | 0.25h | 0.25h |
| 230 | 1.87.2 | замена кабель к монитору |  | 30min | 2026-08-19 09:00 A | 2026-08-19 09:30 A | 229 | 100% |  |  |  | start no earlier than 2026-08-19 09:00 | Домоводов К | 0.5h | 0.5h |
| 231 | 1.87.3 | объеденить минус шину контроллера с нулевым проводом оборудования ч/з резистор 10 Ом |  | 30min | 2026-10-20 09:00 | 2026-10-20 09:30 |  |  |  |  | 101.53d | start no earlier than 2026-10-20 09:00 | Дедов В | 0.5h |  |
| 232 | 1.87.4 | замена кабель от ЧП к контроллеру на экранированный |  | 30min | 2026-08-24 09:00 A | 2026-08-24 09:30 A |  | 100% |  |  |  | start no earlier than 2026-08-24 09:00 | Домоводов К | 0.5h | 0.5h |
| 233 | 1.87.5 | замена блок питания 5в |  | 1h | 2026-08-13 09:00 A | 2026-08-13 10:00 A |  | 100% |  |  |  | start no earlier than 2026-08-13 09:00 | Труфанов А | 1h | 1h |
| 234 | 1.88 | подключить розетку на правой ноге квадропака (отключить квадропак на 5 минут) |  | 2h | 2026-08-11 09:00 A | 2026-08-11 11:00 A |  | 100% |  |  |  | start no earlier than 2026-08-11 09:00 | Бобренок В | 2h | 2h |
| 235 | 1.89 | **перенос вентилятор охладителя линия2 в реверс, убрать шкаф** |  | 24.12d | 2026-08-18 09:00 A | 2026-09-16 10:00 A |  | 100% |  |  |  |  |  | 38.25h | 38.25h |
| 236 | 1.89.1 | проектирование рамы |  | 2d | 2026-08-19 09:00 A | 2026-08-20 18:00 A |  | 100% |  |  |  | start no earlier than 2026-08-19 09:00 | Зорькин В | 16h | 16h |
| 237 | 1.89.2 | чертеж рамы под вентилятор |  | 2h | 2026-08-18 09:00 A | 2026-08-18 11:00 A |  | 100% |  |  |  | start no earlier than 2026-08-18 09:00 | Зорькин В; Домоводов К | 4h | 4h |
| 238 | 1.89.3 | заявка вент фитинги |  | 1h | 2026-08-21 09:00 A | 2026-08-21 10:00 A | 237 | 100% |  |  |  | start no earlier than 2026-08-21 09:00 | Зорькин В | 1h | 1h |
| 239 | 1.89.4 | конроль поставки |  | 15min | 2026-09-09 09:00 A | 2026-09-09 09:15 A | 238FS+10d | 100% |  |  |  | start no earlier than 2026-09-09 09:00 | Зорькин В | 0.25h | 0.25h |
| 240 | 1.89.5 | сборка рама |  | 4h | 2026-09-07 09:00 A | 2026-09-07 13:00 A |  | 100% |  |  |  | start no earlier than 2026-09-07 09:00 | Некрасов А; Труфанов А | 8h | 8h |
| 241 | 1.89.6 | модернизация венттилятора/монтаж вентилляции |  | 4h | 2026-09-11 09:00 A | 2026-09-11 13:00 A | 240 | 100% |  |  |  | start no earlier than 2026-09-11 09:00 | Некрасов А; Труфанов А | 8h | 8h |
| 242 | 1.89.7 | Подключение улитки, монтаж щитка к стене |  | 1h | 2026-09-16 09:00 A | 2026-09-16 10:00 A |  | 100% |  |  |  | start no earlier than 2026-09-16 09:00 | Макаревич А | 1h | 1h |
| 243 | 1.90 | **ревизия красного смесителя 2 линия (просыпается мука)** |  | 34.03d | 2026-08-17 09:00 A | 2026-09-25 09:15 |  | 92% | 2.62d |  | 122.56d |  |  | 3.25h | 3h |
| 244 | 1.90.1 | подтянуть торцевое уплотнение смесителя |  | 30min | 2026-08-17 09:00 A | 2026-08-17 09:30 A |  | 100% |  |  |  | start no earlier than 2026-08-17 09:00 | Бундин В | 0.5h | 0.5h |
| 245 | 1.90.2 | запрос штатное уплотнеие у производителя / заявка |  | 30min | 2026-08-19 09:00 A | 2026-08-19 09:30 A |  | 100% |  |  |  | start no earlier than 2026-08-19 09:00 | Шуранов Ю | 0.5h | 0.5h |
| 246 | 1.90.3 | контроль поставки уплотнение торцевое вала |  | 15min | 2026-09-25 09:00 | 2026-09-25 09:15 | 245FS+5d |  |  |  | 122.56d | start no earlier than 2026-09-25 09:00 | Зорькин В | 0.25h |  |
| 247 | 1.90.4 | замена |  | 2h | 2026-09-01 09:00 A | 2026-09-01 11:00 A | 246FS+1d | 100% |  |  |  | start no earlier than 2026-09-04 09:00 | Тимофеев В | 2h | 2h |
| 248 | 1.91 | шум зл двигателя 2 линия / смазка |  | 1h | 2026-08-10 08:00 A | 2026-08-10 10:00 A |  | 100% |  |  |  | start no earlier than 2026-08-10 08:00 | Тимофеев В | 1h | 1h |
| 249 | 1.92 | натяжка транспортер №2 линия 2 |  | 2h | 2026-08-12 09:00 A | 2026-08-12 11:00 A |  | 100% |  |  |  | start no earlier than 2026-08-12 09:00 | Тимофеев В | 2h | 2h |
| 250 | 1.93 | монтаж- подключение внутреннего блока кондиционера |  | 2h | 2026-08-05 09:00 A | 2026-08-05 11:00 A |  | 100% |  |  |  | start no earlier than 2026-08-05 09:00 | Труфанов А; Тимофеев В | 4h | 4h |
| 251 | 1.94 | **теко 0,4 -восстановить или заменить блок для тепловухи** |  | 1.12d? | 2026-08-04 09:00 A | 2026-08-05 10:00 |  | 100% |  | 2026-08-05 18:00 |  |  | Макаревич А | 17h | 17h |
| 252 | 1.94.1 | проверить подключение транспортера и тепловуху |  | 1d? | 2026-08-05 09:00 A | 2026-08-05 18:00 A |  | 100% |  |  |  | start no earlier than 2026-08-05 09:00 | Шуранов Ю | 8h | 8h |
| 253 | 1.95 | замена перегоревших светильников, монтаж доп. Светильников (Шуранов- покажу) |  | 4h | 2026-08-05 09:00 A | 2026-08-05 13:00 A |  | 100% |  |  |  | start no earlier than 2026-08-12 09:00 | Труфанов А; Тимофеев В | 8h | 8h |
| 254 | 1.96 | включить мухоловку 1 линия экструдер | manual | 0.5h | 2026-08-02 09:00 A | 2026-08-02 09:30 A |  | 100% |  |  |  | start no earlier than 2026-08-02 09:00 | Бобренок В | 0.5h | 0.5h |
| 255 | 1.97 | пропадает питание на весах смесителя 2 линия- проверить | manual | 1h | 2026-08-01 09:00 A | 2026-08-01 10:00 A |  | 100% |  |  |  | start no earlier than 2026-08-01 09:00 | Бундин В | 1h | 1h |
| 256 | 1.98 | эксперимент с лейкой жиры |  | 2h | 2026-08-06 09:00 A | 2026-08-06 11:00 A |  | 100% |  |  |  | start no earlier than 2026-08-07 09:00 | Тимофеев В | 2h | 2h |
| 257 | 1.99 | камера над компрессором снять и поменять (камеры у нас в кабинете) |  | 1h | 2026-08-03 09:00 A | 2026-08-03 10:00 A |  | 100% |  |  |  | start no earlier than 2026-08-03 09:00 | Макаревич А; Тимофеев В | 2h | 2h |
| 258 | 1.100 | на мезонине смотрит на квадропак, поменять и сделать чуть ниже обзор |  | 1h | 2026-08-03 09:00 A | 2026-08-03 10:00 A |  | 100% |  |  |  | start no earlier than 2026-08-03 09:00 | Макаревич А; Тимофеев В | 2h | 2h |
| 259 | 1.101 | камера 1 линия повернуть чуть правее и приподнять |  | 1h | 2026-08-03 09:00 A | 2026-08-03 10:00 A |  | 100% |  |  |  | start no earlier than 2026-08-03 09:00 | Макаревич А; Тимофеев В | 2h | 2h |
| 260 | 1.102 | камера на углу, где вывозят готовую продукцию с люльки поменять (камеры у нас в кабинете) |  | 2h | 2026-08-03 09:00 A | 2026-08-03 11:00 A |  | 100% |  |  |  | start no earlier than 2026-08-03 09:00 | Макаревич А; Тимофеев В | 4h | 4h |
| 261 | 1.103 | повесить камеру над входом в фасовку, чтобы смотрела на коридор и как обрабатывают руки, монтаж кабеля |  | 3h | 2026-08-03 09:00 A | 2026-08-03 12:00 A |  | 100% |  |  |  | start no earlier than 2026-08-03 09:00 | Макаревич А; Тимофеев В | 6h | 6h |

| ID | WBS | Task | Type | Duration | Start | Finish | Predecessors | Complete | Remaining | Total slack | Free slack | Constraint | Resources | Work | Actual work |
| --- | --- | --- | --- | --- | --- | --- | --- | --- | --- | --- | --- | --- | --- | --- | --- |
| 262 | 1.104 | **снять камеру зона экструдера и повесить на жирах со стороны экструдера, монтаж кабель** |  | 0.12d | 2026-09-09 09:00 A | 2026-09-09 10:00 A |  | 100% |  |  |  |  |  | 2h | 2h |
| 263 | 1.104.1 | на мойке попробовать снять камеру |  | 1h | 2026-09-09 09:00 A | 2026-09-09 10:00 A |  | 100% |  |  |  | start no earlier than 2026-09-09 09:00 | Труфанов А; Некрасов А | 2h | 2h |
| 264 | 1.105 | открутить полочку на столе на жирах, сделать ребра жесткости |  | 1h | 2026-07-31 09:00 A | 2026-07-31 10:00 A |  | 100% |  |  |  | start no earlier than 2026-07-31 08:00 | Бундин В | 1h | 1h |
| 265 | 1.106 | слив конденсата с компрессора и продуть радиаторы и фильтры |  | 1h | 2026-07-31 08:00 A | 2026-07-31 10:00 A |  | 100% |  |  |  | start no earlier than 2026-07-31 08:00 | Тимофеев В | 1h | 1h |
| 266 | 1.107 | Ревизия головы от Нотис/заключение |  | 1h | 2026-07-27 08:00 A | 2026-07-27 10:00 A |  | 100% |  |  |  | start no earlier than 2026-07-27 08:00 | Дедов В | 1h | 1h |
| 267 | 1.108 | Снять клавиатуру с головы нотис, подготовить ее к замене лежит на верстаке |  | 30min | 2026-07-29 08:00 A | 2026-07-29 09:30 A |  | 100% |  |  |  | start no earlier than 2026-07-29 08:00 | Дедов В | 0.5h | 0.5h |
| 268 | 1.109 | Ремонт клавиатуры от головы нотис, клаву получить на складе, голову взять у нас в кабинете |  | 1h | 2026-09-01 09:00 A | 2026-09-01 10:00 A |  | 100% |  |  |  | start no earlier than 2026-09-01 08:00 | Бундин В | 1h | 1h |
| 269 | 1.110 | **ремонт кондиционер зона фасовки** |  | 0.5d | 2026-07-16 09:00 A | 2026-07-16 13:00 A |  | 100% |  |  |  |  |  | 6h | 6h |
| 270 | 1.110.1 | демонтаж внутреннего блока |  | 2h | 2026-07-16 09:00 A | 2026-07-16 11:00 A |  | 100% |  |  |  | start no earlier than 2026-07-16 09:00 | Некрасов А; Труфанов А | 4h | 4h |
| 271 | 1.110.2 | разборка, отделить испаритель от рамы |  | 1h | 2026-07-16 11:00 A | 2026-07-16 12:00 A | 270 | 100% |  |  |  | start no earlier than 2026-07-15 09:00 | Бундин В | 1h | 1h |
| 272 | 1.110.3 | опресовка в воде |  | 1h | 2026-07-16 12:00 A | 2026-07-16 13:00 A | 271 | 100% |  |  |  | start no earlier than 2026-07-15 09:00 | Бундин В | 1h | 1h |
| 273 | 1.111 | редуктор конвейера выгрузки пакетов квадропак -> обеспечить гибкое соединеине к раме, жесткое будет ломать либо вал либо редутор |  | 2h | 2026-07-16 09:00 A | 2026-07-16 11:00 A |  | 100% |  |  |  | start no earlier than 2026-07-16 09:00 | Некрасов А | 2h | 2h |
| 274 | 1.112 | **выполнить смотровые люки состояния цепи средниий и верхние этажи. На торцевой крышке с стороны экструдера.** |  | 37d | 2026-07-14 09:00 A | 2026-09-02 18:00 |  | 13% | 32.29d | 143.59d |  |  |  | 9.17h | 1.17h |
| 275 | 1.112.1 | заявка шарниры нерж + бугельный зажим |  | 1h | 2026-07-14 09:00 A | 2026-07-14 10:00 A |  | 100% |  |  |  | start no earlier than 2026-07-14 08:00 | Домоводов К | 1h | 1h |
| 276 | 1.112.2 | контроль доставка |  | 10min | 2026-08-17 09:00 A | 2026-08-17 09:10 A | 275FS+7d | 100% |  |  |  | start no earlier than 2026-08-17 09:00 | Шуранов Ю | 0.17h | 0.17h |
| 277 | 1.112.3 | монтаж 1 линия |  | 4h | 2026-09-02 09:00 | 2026-09-02 13:00 | 276FS+1d |  |  | 143.59d | 0d | start no earlier than 2026-09-02 09:00 | Макаревич А | 4h |  |
| 278 | 1.112.4 | монтаж 2 линия |  | 4h | 2026-09-02 14:00 | 2026-09-02 18:00 | 277 |  |  | 143.59d |  | start no earlier than 2026-07-14 08:00 | Макаревич А | 4h |  |
| 279 | 1.113 | монтаж светильник под площадку дозатора квадропака |  | 4h | 2026-07-10 09:00 A | 2026-07-10 13:00 A |  | 100% |  |  |  | start no earlier than 2026-07-10 09:00 | Бобренок В | 4h | 4h |
| 280 | 1.114 | **замена вентилятор вытяжка с экструдеров** |  | 2.25d | 2026-07-13 09:00 A | 2026-07-15 11:00 A |  | 100% |  |  |  |  |  | 13h | 13h |
| 281 | 1.114.1 | подключение воздуховоды |  | 4h | 2026-07-13 09:00 A | 2026-07-13 13:00 A |  | 100% |  |  |  | start no earlier than 2026-07-13 09:00 | Некрасов А; Бундин В | 8h | 8h |
| 282 | 1.114.2 | установить крыльчатку на мотор |  | 1h | 2026-07-14 09:00 A | 2026-07-14 10:00 A |  | 100% |  |  |  | start no earlier than 2026-07-14 08:00 | Труфанов А | 1h | 1h |
| 283 | 1.114.3 | устарнить причину вибрации мотора |  | 2h | 2026-07-15 09:00 A | 2026-07-15 11:00 A |  | 100% |  |  |  | start no earlier than 2026-07-15 09:00 | Некрасов А; Труфанов А | 4h | 4h |
| 284 | 1.115 | **сборка дозатор на квадропак** |  | 83.25d | 2026-07-09 08:00 A | 2026-10-21 11:00 |  | 96% | 3.48d | 100.34d |  |  |  | 62.83h | 58.83h |
| 285 | 1.115.1 | тест сублиматов №2 |  | 2h | 2026-10-21 09:00 | 2026-10-21 11:00 |  |  |  | 100.34d |  | start no earlier than 2026-10-21 09:00 | Зорькин В; Труфанов А | 4h |  |
| 286 | 1.115.2 | установить переключатель блокировки сброса дозатором |  | 30min | 2026-08-15 09:00 A | 2026-08-17 09:30 A |  | 100% |  |  |  | start no earlier than 2026-08-15 09:00 | Труфанов А | 0.5h | 0.5h |
| 287 | 1.115.3 | упорядочить схему |  | 30min | 2026-08-15 09:00 A | 2026-08-17 09:30 A |  | 100% |  |  |  | start no earlier than 2026-08-15 09:00 | Труфанов А | 0.5h | 0.5h |
| 288 | 1.115.4 | транспортировка дозатора в слесарку |  | 1h | 2026-08-04 08:00 A | 2026-08-04 10:00 A |  | 100% |  |  |  | start no earlier than 2026-08-04 08:00 | Труфанов А; Тимофеев В | 2h | 2h |
| 289 | 1.115.5 | установить розетку для дозатора. Вывод кабель сверлить платформу, что бы он был не под ногами и удобен при уборке |  | 2h | 2026-07-09 08:00 A | 2026-07-09 11:00 A |  | 100% |  |  |  | start no earlier than 2026-07-09 08:00 | Бобренок В | 2h | 2h |
| 290 | 1.115.6 | закрепить монитор фото Зорькин |  | 2h | 2026-07-09 08:00 A | 2026-07-09 11:00 A |  | 100% |  |  |  | start no earlier than 2026-07-09 08:00 | Бобренок В | 2h | 2h |
| 291 | 1.115.7 | подключение дозатора к машине / поиск кабеля в 3 цехе / изучение документации |  | 4h | 2026-07-14 09:00 A | 2026-07-14 13:00 A |  | 100% |  |  |  | start no earlier than 2026-07-14 09:00 | Труфанов А | 4h | 4h |
| 292 | 1.115.8 | подключить реле аварии дозатора паралельно датчику отсутствия пакета квадропака (схема прилагается) |  | 1h | 2026-08-12 09:00 A | 2026-08-12 10:00 A | 291 | 100% |  |  |  | start no earlier than 2026-08-12 09:00 | Труфанов А | 1h | 1h |
| 293 | 1.115.9 | калибровка весов и разгон наполнения, тестирование работы |  | 4h | 2026-08-12 09:00 A | 2026-08-12 13:00 A |  | 100% |  |  |  | start no earlier than 2026-08-12 09:00 | Труфанов А | 4h | 4h |
| 294 | 1.115.10 | монтаж кабель выравнивания потенциалов площадка дозатора и площадка квадропака |  | 30min | 2026-08-15 09:00 A | 2026-08-17 09:30 A |  | 100% |  |  |  | start no earlier than 2026-08-15 09:00 | Труфанов А | 0.5h | 0.5h |
| 295 | 1.115.11 | контроль поставки маткериал | milestone | 0d | 2026-08-27 09:00 A | 2026-08-27 09:00 A |  | 100% |  |  |  | start no earlier than 2026-08-27 09:00 | Зорькин В |  |  |
| 296 | 1.115.12 | тестирование весов / разгон |  | 2h | 2026-09-14 09:00 A | 2026-09-14 11:00 A | 295 | 100% |  |  |  | start no earlier than 2026-09-14 09:00 | Зорькин В | 2h | 2h |
| 297 | 1.115.13 | подключить синхронизацию пуска дозатора паралельно катушки открытия заслонки квадропака |  | 4h | 2026-08-04 11:00 A | 2026-08-04 16:00 A | 292 | 100% |  |  |  | start no earlier than 2026-07-16 09:00 | Труфанов А | 4h | 4h |
| 298 | 1.115.14 | монтаж перила на площадку - подготовка |  | 2h | 2026-08-14 09:00 A | 2026-08-14 11:00 A |  | 100% |  |  |  | start no earlier than 2026-08-14 09:00 | Тимофеев В | 2h | 2h |
| 299 | 1.115.15 | монтаж перила на площадку |  | 2h | 2026-08-17 09:00 A | 2026-08-17 11:00 A |  | 100% |  |  |  | start no earlier than 2026-08-17 09:00 | Тимофеев В; Бобренок В | 4h | 4h |
| 300 | 1.115.16 | сверлить для крепления перил |  | 2h | 2026-09-04 09:00 A | 2026-09-04 11:00 A | 296 | 100% |  |  |  | start no earlier than 2026-09-04 09:00 | Макаревич А | 2h | 2h |
| 301 | 1.115.17 | закрыть зад крышку |  | 20min | 2026-09-13 09:00 A | 2026-09-13 09:20 A |  | 100% |  |  |  | start no earlier than 2026-09-13 09:00 | Дедов В | 0.33h | 0.33h |
| 302 | 1.115.18 | сборка дозатор |  | 2h | 2026-09-25 09:00 A | 2026-09-25 11:00 A |  | 100% |  |  |  | start no earlier than 2026-09-28 09:00 | Труфанов А; Некрасов А | 4h | 4h |
| 303 | 1.115.19 | тест компонентов |  | 1h | 2026-09-23 09:00 A | 2026-09-23 10:00 A |  | 100% |  |  |  | start no earlier than 2026-09-23 09:00 | Зорькин В | 1h | 1h |
| 304 | 1.115.20 | установить на пружины раму дозатора + квеличить её массу |  | 4h | 2026-09-25 09:00 A | 2026-09-25 13:00 A |  | 100% |  |  |  | start no earlier than 2026-09-25 08:00 | Некрасов А; Труфанов А | 8h | 8h |
| 305 | 1.115.21 | покупка за нал / найти доп пружины |  | 1h | 2026-09-28 09:00 A | 2026-09-28 10:00 A |  | 100% |  |  |  | start no earlier than 2026-09-28 09:00 | Зорькин В | 1h | 1h |
| 306 | 1.115.22 | увеличить доп пружины, сжались ноль |  | 4h | 2026-10-01 09:00 A | 2026-10-01 13:00 A |  | 100% |  |  |  | start no earlier than 2026-10-02 09:00 | Некрасов А; Труфанов А | 8h | 8h |
| 307 | 1.115.23 | монтаж кнопка дозатор ОН/ОФФ |  | 1h | 2026-09-30 09:00 A | 2026-09-30 10:00 A | 301 | 100% |  |  |  | start no earlier than 2026-09-30 09:00 | Труфанов А | 1h | 1h |
| 308 | 1.115.24 | закрыть металлом пустые места между площадками квадропак и дозатор |  | 2h | 2026-10-07 09:00 A | 2026-10-07 11:00 A | 300 | 100% |  |  |  | start no earlier than 2026-10-07 09:00 | Тимофеев В | 2h | 2h |
| 309 | 1.115.25 | Сделать перегородки в бункер дозатора для увеличения объема секций |  | 3h | 2026-09-02 09:00 A | 2026-09-02 12:00 A |  | 100% |  |  |  | start no earlier than 2026-09-04 09:00 | Тимофеев В | 3h | 3h |
| 310 | 1.116 | навести сортиировка / порядок пандус 1ц |  | 4h | 2026-07-10 09:00 A | 2026-07-10 13:00 A |  | 100% |  |  |  | start no earlier than 2026-07-10 09:00 | Тимофеев В; Амрулин Р | 7h | 7h |

| ID | WBS | Task | Type | Duration | Start | Finish | Predecessors | Complete | Remaining | Actual start | Actual finish | Total slack | Free slack | Constraint | Resources | Work | Actual work |
| --- | --- | --- | --- | --- | --- | --- | --- | --- | --- | --- | --- | --- | --- | --- | --- | --- | --- |
| 311 | 1.117 | **Кондиционер зоны экструдера** |  | 0.5d | 2026-07-07 09:00 A | 2026-07-07 13:00 A |  | 100% |  |  |  |  |  |  |  | 4h | 4h |
| 312 | 1.117.1 | Чистка сливной магистрали |  | 4h | 2026-07-07 09:00 A | 2026-07-07 13:00 A |  | 100% |  |  |  |  |  | start no earlier than 2026-07-07 09:00 | Бундин В | 4h | 4h |
| 313 | 1.118 | **установить датчик давления на экструдер** |  | 49.53d | 2026-07-06 08:00 A | 2026-09-10 14:15 |  | 68% | 15.89d |  |  | 137.06d |  |  |  | 15.25h | 11h |
| 314 | 1.118.1 | контроль поставка фитинги |  | 15min | 2026-09-10 09:00 | 2026-09-10 09:15 |  |  |  |  |  | 137.06d | 0d | start no earlier than 2026-09-10 09:00 | Зорькин В | 0.25h |  |
| 315 | 1.118.2 | монтаж кронштейны для фиксации датчикоа давления 1+2 линия |  | 2h | 2026-07-10 09:00 A | 2026-07-10 11:00 A |  | 100% |  |  |  |  |  | start no earlier than 2026-07-10 09:00 | Макаревич А; Некрасов А | 4h | 4h |
| 316 | 1.118.3 | установить датчики давления через гидравлические шланги |  | 2h | 2026-07-06 08:00 A | 2026-07-06 11:00 A |  | 100% |  |  |  |  |  | start no earlier than 2026-07-06 08:00 | Дедов В | 2h | 2h |
| 317 | 1.118.4 | доработка кожух нож узла для закрытия |  | 2h | 2026-07-07 09:00 A | 2026-07-07 11:00 A |  | 100% |  |  |  |  |  | start no earlier than 2026-07-07 09:00 | Бобренок В | 2h | 2h |
| 318 | 1.118.5 | Прокинуть кабель ШВВП 2х0,75 от датчиков давления до регистраторов, сделать по красоте. |  | 3h | 2026-07-10 09:00 A | 2026-07-10 12:00 A |  | 100% |  |  |  |  |  | start no earlier than 2026-07-10 09:00 | Бобренок В | 3h | 3h |
| 319 | 1.118.6 | подключение датчиков давления к регистратору |  | 4h | 2026-09-10 09:15 | 2026-09-10 14:15 | 314 |  |  |  |  | 137.06d |  | start no earlier than 2026-09-02 09:00 | Домоводов К | 4h |  |
| 320 | 1.119 | печь №1 ревизия/замена перемычек |  | 4h | 2026-07-04 09:00 A | 2026-07-06 13:00 A |  | 100% |  |  |  |  |  | start no earlier than 2026-07-04 09:00 | Макаревич А | 4h | 4h |
| 321 | 1.120 | печь №2 ревизия/замена перемычек |  | 2h | 2026-07-16 09:00 A | 2026-07-16 11:00 A |  | 100% |  |  |  |  |  | start no earlier than 2026-07-16 09:00 | Бобренок В | 2h | 2h |
| 322 | 1.121 | **заменить амперметры неиспрвные на ШУ 1 и 2 линия (они на складе приехали сегодня новые посмотреть фото в выдаче)** |  | 1h? | 2026-09-04 09:00 | 2026-09-04 10:00 |  | 100% |  | 2026-09-05 09:00 | 2026-09-11 13:00 |  |  |  |  | 6h | 6h |
| 323 | 1.121.1 | монтаж - оказалить не те |  | 2h | 2026-09-05 09:00 A | 2026-09-05 11:00 A |  | 100% |  |  |  |  |  | start no earlier than 2026-09-05 09:00 | Дедов В | 2h | 2h |
| 324 | 1.121.2 | контроль датч тока | milestone | 0d | 2026-09-09 09:00 A | 2026-09-09 09:00 A |  | 100% |  |  |  |  |  | start no earlier than 2026-09-09 09:00 | Зорькин В |  |  |
| 325 | 1.121.3 | монтаж датчиковтока на 2л |  | 4h | 2026-09-11 09:00 A | 2026-09-11 13:00 A |  | 100% |  |  |  |  |  | start no earlier than 2026-09-11 09:00 | Макаревич А | 4h | 4h |
| 326 | 1.122 | **ставим 2 частотника на вентиляторы вытяжки с печек №1 и 2** |  | 0.5d | 2026-07-02 09:00 A | 2026-07-02 13:00 A |  | 100% |  |  |  |  |  |  |  | 4h | 4h |
| 327 | 1.122.1 | подключение к улиткам вытяжки 1 и 2 линия (помошника дадим) |  | 4h | 2026-07-02 09:00 A | 2026-07-02 13:00 A |  | 100% |  |  |  |  |  | start no earlier than 2026-07-02 09:00 | Тимофеев В | 4h | 4h |
| 328 | 1.123 | подключить частотный привод вентилятор на площадке жиротопки |  | 4h | 2026-07-14 09:00 A | 2026-07-14 13:00 A |  | 100% |  |  |  |  |  | start no earlier than 2026-07-14 09:00 | Дедов В | 4h | 4h |
| 329 | 1.124 | установка частотника для улитку в жиротопке (по телефону расскажу) |  | 4h | 2026-07-02 09:00 A | 2026-07-02 13:00 A |  | 100% |  |  |  |  |  | start no earlier than 2026-07-02 09:00 | Дедов В | 4h | 4h |
| 330 | 1.125 | заменить шнеки и гильзы на 2 линии (ставим усиленные, 2 гильзы) по уровню (операторы помогут) | manual | 10h | 2026-07-05 09:00 A | 2026-07-06 11:00 A |  | 100% |  |  |  |  |  | start no earlier than 2026-07-05 09:00 | Бундин В | 10h | 10h |
| 331 | 1.126 | **поменять фильтрующую ткань на фильтрах кондиционеров 1 цех** |  | 0.25d | 2026-07-01 09:00 A | 2026-07-01 11:00 A |  | 100% |  |  |  |  |  |  |  | 4h | 4h |
| 332 | 1.126.1 | установка фильтров закрываем внутренние блоки |  | 2h | 2026-07-01 09:00 A | 2026-07-01 11:00 A |  | 100% |  |  |  |  |  | start no earlier than 2026-07-01 09:00 | Макаревич А; Некрасов А | 4h | 4h |
| 333 | 1.127 | изготовление кронштейна для установки вентилятора крепим на место в зоне экструдера |  | 2h | 2026-06-30 09:00 A | 2026-06-30 11:00 A |  | 100% |  |  |  |  |  | start no earlier than 2026-06-30 09:00 | Некрасов А; Тимофеев В | 4h | 4h |
| 334 | 1.128 | снять на всех валах барабанов колеса, будем покрывать полиуретаном |  | 3h | 2026-06-29 09:00 A | 2026-06-29 12:00 A |  | 100% |  |  |  |  |  | start no earlier than 2026-06-29 09:00 | Бундин В | 3h | 3h |

| ID | WBS | Task | Type | Duration | Start | Finish | Predecessors | Complete | Actual start | Actual finish | Total slack | Free slack | Constraint | Resources | Work | Actual work |
| --- | --- | --- | --- | --- | --- | --- | --- | --- | --- | --- | --- | --- | --- | --- | --- | --- |
| 335 | 1.129 | **сборка раковина нерж для мойки конвейер** |  | 7.25d? | 2026-11-09 09:00 | 2026-11-18 11:00 |  |  |  |  | 80.34d |  |  |  | 34h |  |
| 336 | 1.129.1 | подготовить данные, оформить как проект / инициировать совещание |  | 2h | 2026-11-09 09:00 | 2026-11-09 11:00 |  |  |  |  | 80.34d | 0d | start no earlier than 2026-11-09 09:00 | Зорькин В | 2h |  |
| 337 | 1.129.2 | совещание с руководителями / фиксация решения |  | 1d? | 2026-11-10 11:00 | 2026-11-11 11:00 | 336FS+1d |  |  |  | 80.34d | 0d | start no earlier than 2026-08-31 09:00 | Зорькин В | 8h |  |
| 338 | 1.129.3 | подготовить чертеж раковины, проверить материал |  | 1d? | 2026-11-12 11:00 | 2026-11-13 11:00 | 337FS+1d |  |  |  | 80.34d | 0d | start no earlier than 2026-09-08 09:00 | Зорькин В | 8h |  |
| 339 | 1.129.4 | сборка |  | 2d | 2026-11-16 11:00 | 2026-11-18 11:00 | 338FS+1d |  |  |  | 80.34d |  | start no earlier than 2026-07-14 08:00 | Бундин В | 16h |  |
| 340 | 1.130 | ревизия шестеренок питателя 2 линия, если нужно замена с зип- питатель синий склад |  | 3h | 2026-06-29 09:00 A | 2026-06-29 12:00 A |  | 100% |  |  |  |  | start no earlier than 2026-06-29 09:00 | Бундин В | 3h | 3h |
| 341 | 1.131 | повесить полочки у ОТК в кабинете- крепеж по гипсокортону у меня на столе |  | 1h | 2026-06-26 09:00 A | 2026-06-26 10:00 A |  | 100% |  |  |  |  | start no earlier than 2026-06-26 09:00 | Тимофеев В; Дедов В | 2h | 2h |
| 342 | 1.132 | нормально прикрутить светильник на стойке со сканером QR- кодов на фасовке, если нужно заменить на другой | manual | 2h | 2026-07-03 09:00 A | 2026-07-03 11:00 A |  | 100% |  |  |  |  | start no earlier than 2026-07-03 09:00 | Макаревич А | 2h | 2h |
| 343 | 1.133 | прикрутить розетку возле ШУ приточки |  | 1h | 2026-07-04 09:00 A | 2026-07-06 10:00 A |  | 100% |  |  |  |  | start no earlier than 2026-07-04 09:00 | Дедов В | 1h | 1h |
| 344 | 1.134 | заменить светильник 50Вт на жиротопке | manual | 2h | 2026-06-27 09:00 A | 2026-06-27 11:00 A |  | 100% |  |  |  |  | start no earlier than 2026-06-27 09:00 | Дедов В | 2h | 2h |
| 345 | 1.135 | мойка внутрених и внешних блоков керхером |  | 4h | 2026-06-24 09:00 A | 2026-06-24 13:00 A |  | 100% |  |  |  |  | start no earlier than 2026-06-24 09:00 | Тимофеев В; Дедов В | 8h | 8h |
| 346 | 1.136 | 1 линия средняя зона печи 115А |  | 2h | 2026-07-01 09:00 A | 2026-07-01 11:00 A |  | 100% |  |  |  |  | start no earlier than 2026-07-01 09:00 | Некрасов А | 2h | 2h |
| 347 | 1.137 | продуть внешний блок кондиционера (посередине) |  | 2h | 2026-06-24 09:00 A | 2026-06-24 11:00 A |  | 100% |  |  |  |  | start no earlier than 2026-06-24 09:00 | Тимофеев В | 2h | 2h |
| 348 | 1.138 | слить конденсат и продуть радиаторы на компрессоре |  | 1h | 2026-06-22 09:00 A | 2026-06-22 10:00 A |  | 100% |  |  |  |  | start no earlier than 2026-06-22 08:00 | Бундин В | 1h | 1h |
| 349 | 1.139 | взять ключи на складе и повесить возле каждого щитка | manual | 1h | 2026-07-05 09:00 A | 2026-07-05 10:00 A |  | 100% |  |  |  |  | start no earlier than 2026-07-05 09:00 | Бундин В | 1h | 1h |
| 350 | 1.140 | заменить монтажную коробку- пускатели улиток, зона экструдера | manual | 1h | 2026-06-30 09:00 A | 2026-06-30 10:00 A |  | 100% |  |  |  |  | start no earlier than 2026-06-30 09:00 | Бундин В | 1h | 1h |
| 351 | 1.141 | герметизация стыков в душевой женской, потечка воды | manual | 1h | 2026-06-21 09:00 A | 2026-06-21 10:00 A |  | 100% |  |  |  |  | start no earlier than 2026-06-21 09:00 | Бундин В | 1h | 1h |
| 352 | 1.142 | **вернуть колбу уровня подачи воды на 2 линию** |  | 1h? | 2026-06-26 09:00 | 2026-06-26 10:00 |  | 100% | 2026-06-29 09:00 | 2026-06-29 18:00 |  |  |  |  | 8h | 8h |
| 353 | 1.142.1 | найти колбу |  | 1d? | 2026-06-29 09:00 A | 2026-06-29 18:00 A |  | 100% |  |  |  |  | start no earlier than 2026-06-29 09:00 | Шуранов Ю | 8h | 8h |
| 354 | 1.143 | **изготовить шило для экструдерщиков, они подскажут** |  | 1h? | 2026-06-26 09:00 | 2026-06-26 10:00 |  |  |  |  |  |  |  |  | 0.25h |  |
| 355 | 1.143.1 | заказать спицы не пустые |  | 15min | 2026-09-01 09:00 | 2026-09-01 09:15 |  |  |  |  | 145.56d |  | start no earlier than 2026-09-01 09:00 | Шуранов Ю | 0.25h |  |
| 356 | 1.144 | отключить кондеры и продуть внешние блоки кондиционеров 1 ц. |  | 2h | 2026-06-20 09:00 A | 2026-06-22 11:00 A |  | 100% |  |  |  |  | start no earlier than 2026-06-20 09:00 | Бундин В | 2h | 2h |
| 357 | 1.145 | **померить верхний воздуховод и трассу для подключения новой улитки** |  | 1d? | 2026-06-22 09:00 A | 2026-06-22 18:00 A |  | 100% |  |  |  |  |  | Тимофеев В; Зорькин В | 24h | 24h |
| 358 | 1.145.1 | заказать переходник |  | 1d? | 2026-06-22 09:00 A | 2026-06-22 18:00 A |  | 100% |  |  |  |  | start no earlier than 2026-06-22 08:00 | Зорькин В | 8h | 8h |
| 359 | 1.146 | слив конденсата с компрессора и продуть радиаторы и фильтры |  | 1h | 2026-06-14 09:00 A | 2026-06-15 10:00 A |  | 100% |  |  |  |  | start no earlier than 2026-06-14 09:00 | Бобренок В | 1h | 1h |

| ID | WBS | Task | Duration | Start | Finish | Predecessors | Complete | Total slack | Constraint | Resources | Work | Actual work |
| --- | --- | --- | --- | --- | --- | --- | --- | --- | --- | --- | --- | --- |
| 360 | 1.147 | **закрепить редуктор к отводящему транспортеру** | 1d? | 2026-06-17 09:00 A | 2026-06-17 18:00 A |  | 100% |  |  | Некрасов А | 16h | 16h |
| 361 | 1.147.1 | сделать надежное крепление на мойке | 1d? | 2026-06-17 09:00 A | 2026-06-17 18:00 A |  | 100% |  | start no earlier than 2026-06-17 09:00 | Бундин В | 8h | 8h |
| 362 | 1.148 | заменить сальник на вакууматоре (редуктор) | 1h | 2026-06-11 09:00 A | 2026-06-11 10:00 A |  | 100% |  | start no earlier than 2026-06-11 09:00 | Тимофеев В | 1h | 1h |
| 363 | 1.149 | законтрогаить шпильки-ножки запайщиков | 1h | 2026-06-12 09:00 A | 2026-06-12 10:00 A |  | 100% |  | start no earlier than 2026-06-12 09:00 | Бундин В | 1h | 1h |
| 364 | 1.150 | настроить подачу масла на квадропаке по пневмо системе (спросить у Дедова) | 1h | 2026-06-10 09:00 A | 2026-06-10 10:00 A |  | 100% |  | start no earlier than 2026-06-10 09:00 | Труфанов А | 1h | 1h |
| 365 | 1.151 | **проверить давление в гидроаккумуляторе водоподготовки** | 0.25d | 2026-06-10 09:00 A | 2026-06-10 11:00 A |  | 100% |  |  | Дедов В | 4h | 4h |
| 366 | 1.151.1 | замена мембраны | 2h | 2026-06-10 09:00 A | 2026-06-10 11:00 A |  | 100% |  | start no earlier than 2026-06-10 09:00 | Дедов В | 2h | 2h |
| 367 | 1.152 | модернизация опроры пневмоцилиндра встряживателя №1 квадропак | 4h | 2026-10-21 09:00 | 2026-10-21 13:00 |  |  | 100.09d | start no earlier than 2026-10-21 09:00 | Некрасов А | 4h |  |
| 368 | 1.153 | **готовить в зип сетку оборотную для печей (нижняя)** | 0.5d | 2026-06-09 09:00 A | 2026-06-09 13:00 A |  | 100% |  |  |  | 4.5h | 4.5h |
| 369 | 1.153.1 | проверка материал | 30min | 2026-06-09 09:00 A | 2026-06-09 09:30 A |  | 100% |  | start no earlier than 2026-06-09 09:00 | Тимофеев В | 0.5h | 0.5h |
| 370 | 1.153.2 | сборка | 4h | 2026-06-09 09:00 A | 2026-06-09 13:00 A |  | 100% |  | start no earlier than 2026-06-09 09:00 | Тимофеев В | 4h | 4h |
| 371 | 1.154 | подключить частотный привод насос жир 2 линия/ при остановке | 2h | 2026-06-07 09:00 A | 2026-06-08 11:00 A |  | 100% |  | start no earlier than 2026-06-07 09:00 | Дедов В | 2h | 2h |
| 372 | 1.155 | **жиротопка текет сальник насоса** | 36.03d? | 2026-06-28 09:00 A | 2026-08-18 09:15 A |  | 100% |  |  |  | 18.5h | 18.5h |
| 373 | 1.155.1 | замена насос из зип | 1h | 2026-06-28 09:00 A | 2026-06-29 10:00 A |  | 100% |  | start no earlier than 2026-06-28 09:00 | Дедов В | 1h | 1h |
| 374 | 1.155.2 | замена сальник на снятом насосе | 1h | 2026-06-28 10:00 A | 2026-06-29 10:00 A | 373 | 100% |  | start no earlier than 2026-06-17 09:00 | Дедов В | 1h | 1h |
| 375 | 1.155.3 | заказать | 1d? | 2026-06-29 09:00 A | 2026-06-29 18:00 A |  | 100% |  | start no earlier than 2026-06-29 09:00 | Шуранов Ю | 8h | 8h |
| 376 | 1.155.4 | ревизия прогресса утечки | 15min | 2026-08-05 09:00 A | 2026-08-05 09:15 A |  | 100% |  | start no earlier than 2026-08-05 09:00 | Дедов В | 0.25h | 0.25h |
| 377 | 1.155.5 | контроль наличия сальника | 15min | 2026-08-18 09:00 A | 2026-08-18 09:15 A |  | 100% |  | start no earlier than 2026-08-18 09:00 | Шуранов Ю | 0.25h | 0.25h |
| 378 | 1.155.6 | замена сальника | 1d? | 2026-08-05 09:00 A | 2026-08-05 18:00 A |  | 100% |  | start no earlier than 2026-08-05 09:00 | Дедов В | 8h | 8h |
| 379 | 1.156 | ремонт весов напольный (палетные) проверить кабель на обрыв | 3h | 2026-06-11 09:00 A | 2026-06-11 12:00 A |  | 100% |  | start no earlier than 2026-06-11 09:00 | Дедов В | 3h | 3h |
| 380 | 1.157 | печь №2 проверка токов, тен, замена | 2h | 2026-06-04 09:00 A | 2026-06-04 11:00 A |  | 100% |  | start no earlier than 2026-06-04 09:00 | Некрасов А; Бундин В | 4h | 4h |
| 381 | 1.158 | изготовление шторки после приемного лотка циклона | 2h | 2026-06-04 09:00 A | 2026-06-04 11:00 A |  | 100% |  | start no earlier than 2026-06-04 09:00 | Бундин В | 2h | 2h |
| 382 | 1.159 | **на аппликаторе настроить печать QR-кода на пакет, чтобы не размазывало (по тел. Объясню)** | 3.12d | 2026-06-04 09:00 A | 2026-06-09 10:00 A |  | 100% |  |  |  | 2h | 2h |
| 383 | 1.159.1 | тест (подключить доп. Датчик -настроить печать без размытия, картридж находиться у Луговских подписанный) | 1h | 2026-06-04 09:00 A | 2026-06-04 10:00 A |  | 100% |  | start no earlier than 2026-06-04 09:00 | Дедов В | 1h | 1h |
| 384 | 1.159.2 | тест | 1h | 2026-06-09 09:00 A | 2026-06-09 10:00 A |  | 100% |  | start no earlier than 2026-06-09 09:00 | Тимофеев В | 1h | 1h |
| 385 | 1.160 | целкает аппликатор -разобраться, устранить | 1h | 2026-06-03 08:00 A | 2026-06-03 10:00 A |  | 100% |  | start no earlier than 2026-06-03 08:00 | Дедов В | 1h | 1h |

| ID | WBS | Task | Type | Duration | Start | Finish | Predecessors | Complete | Remaining | Total slack | Free slack | Constraint | Resources | Work | Actual work |
| --- | --- | --- | --- | --- | --- | --- | --- | --- | --- | --- | --- | --- | --- | --- | --- |
| 386 | 1.161 | **установить резервную трубку/штангу с форсункой на подачу жира** |  | 31d | 2026-09-08 09:00 A | 2026-10-09 18:00 |  | 10% | 27.9d | 108.59d |  |  |  | 10h | 1h |
| 387 | 1.161.1 | проект-схема разработать |  | 1h | 2026-09-08 09:00 A | 2026-09-08 10:00 A |  | 100% |  |  |  | start no earlier than 2026-09-08 09:00 | Домоводов К | 1h | 1h |
| 388 | 1.161.2 | разработать спецкронштейн крепления 4х трубок |  | 1h | 2026-09-10 09:00 | 2026-09-10 10:00 |  |  |  | 128.47d | 19.88d | start no earlier than 2026-09-10 09:00 | Домоводов К | 1h |  |
| 389 | 1.161.3 | монтаж спец кронштенна |  | 1h | 2026-10-01 09:00 | 2026-10-01 10:00 | 388FS+1d |  |  | 108.59d | 0d | start no earlier than 2026-10-01 09:00 | Тимофеев В | 1h |  |
| 390 | 1.161.4 | заявка фитинги / тройники / краны / трубка |  | 1h | 2026-10-01 10:00 | 2026-10-01 11:00 | 387FS+1d, 389 |  |  | 108.59d | 0d | start no earlier than 2026-06-03 08:00 | Зорькин В | 1h |  |
| 391 | 1.161.5 | доставка контроль | milestone | 0d | 2026-10-07 11:00 | 2026-10-07 11:00 | 390FS+5d |  |  | 108.59d | 0d | start no earlier than 2026-06-03 08:00 | Зорькин В |  |  |
| 392 | 1.161.6 | сборка в мастерской |  | 4h | 2026-10-08 11:00 | 2026-10-08 16:00 | 391FS+1d |  |  | 108.59d | 0d | start no earlier than 2026-06-15 09:00 | Тимофеев В | 4h |  |
| 393 | 1.161.7 | монтаж на линию |  | 2h | 2026-10-09 16:00 | 2026-10-09 18:00 | 392FS+1d |  |  | 108.59d |  | start no earlier than 2026-06-03 08:00 | Тимофеев В | 2h |  |
| 394 | 1.162 | **установить автоматику запуска шнека + смеситель по датчику уровня сырья в бункере экструдера** |  | 10.4d? | 2026-10-22 09:00 | 2026-11-05 12:10 |  |  |  | 89.2d |  |  |  | 19.17h |  |
| 395 | 1.162.1 | разработка схема / компановка |  | 1h | 2026-10-22 09:00 | 2026-10-22 10:00 |  |  |  | 89.2d | 0d | start no earlier than 2026-10-22 09:00 | Домоводов К | 1h |  |
| 396 | 1.162.2 | заявка датчики / пускатели / эл щит |  | 2h | 2026-10-22 10:00 | 2026-10-22 12:00 | 395 |  |  | 89.2d | 0d | start no earlier than 2026-06-04 09:00 | Домоводов К | 2h |  |
| 397 | 1.162.3 | доставка контроль |  | 5min | 2026-11-02 12:00 | 2026-11-02 12:05 | 396FS+7d |  |  | 89.2d | 0d | start no earlier than 2026-06-03 08:00 | Зорькин В | 0.08h |  |
| 398 | 1.162.4 | контроль поставки |  | 5min | 2026-11-03 12:05 | 2026-11-03 12:10 | 397FS+1d |  |  | 89.2d | 0d | start no earlier than 2026-06-03 08:00 | Зорькин В | 0.08h |  |
| 399 | 1.162.5 | сборка ШУ |  | 1d? | 2026-11-03 12:10 | 2026-11-04 12:10 | 398 |  |  | 89.2d | 0d | start no earlier than 2026-06-24 09:00 | Дедов В | 8h |  |
| 400 | 1.162.6 | монтаж в линию |  | 1d? | 2026-11-04 12:10 | 2026-11-05 12:10 | 399 |  |  | 89.2d |  | start no earlier than 2026-06-03 08:00 | Дедов В | 8h |  |
| 401 | 1.163 | поставить на двигатели накопительных столов тепловые реле |  | 2h | 2026-06-15 09:00 | 2026-06-15 11:00 |  |  |  | 201.34d |  | start no earlier than 2026-06-15 09:00 | Дедов В | 2h |  |
| 402 | 1.164 | влагоотделитель крышки загрузки квадропак треснул- замена |  | 1h | 2026-06-10 09:00 | 2026-06-10 10:00 |  |  |  | 204.47d |  | start no earlier than 2026-06-10 09:00 | Дедов В | 1h |  |
| 403 | 1.165 | установка ПЧ на насос жира 2 линия |  | 2h | 2026-06-02 09:00 A | 2026-06-02 11:00 A |  | 100% |  |  |  | start no earlier than 2026-06-02 09:00 | Дедов В | 2h | 2h |
| 404 | 1.166 | установка ПЧ на барабаны жиров 1 и 2 линия |  | 2h | 2026-06-02 09:00 A | 2026-06-02 11:00 A |  | 100% |  |  |  | start no earlier than 2026-06-02 09:00 | Дедов В | 2h | 2h |
| 405 | 1.167 | **рассекатели после шлюзовика 1 и 2 линия сделать, чтобы корм равномерно ложился по поверхности сетки** |  | 5.25d | 2026-06-03 09:00 A | 2026-06-10 11:00 A |  | 100% |  |  |  |  |  | 11h | 11h |
| 406 | 1.167.1 | после обеда будет остановка 2 линия- модернизация рассекателя |  | 1h | 2026-06-03 09:00 A | 2026-06-03 10:00 A |  | 100% |  |  |  | start no earlier than 2026-06-03 09:00 | Бундин В | 1h | 1h |
| 407 | 1.167.2 | **установить зубчатую пластину для выравнивания слоя на входе в печь** |  | 5.25d | 2026-06-03 09:00 A | 2026-06-10 11:00 A |  | 100% |  |  |  |  |  | 10h | 10h |
| 408 | 1.167.2.1 | подготовиьт чертеж |  | 2h | 2026-06-03 09:00 A | 2026-06-03 11:00 A |  | 100% |  |  |  | start no earlier than 2026-06-03 08:00 | Домоводов К | 2h | 2h |
| 409 | 1.167.2.2 | изготовить |  | 6h | 2026-06-05 09:00 A | 2026-06-05 16:00 A | 408 | 100% |  |  |  | start no earlier than 2026-06-05 09:00 | Бундин В | 6h | 6h |
| 410 | 1.167.2.3 | монтаж |  | 2h | 2026-06-10 09:00 A | 2026-06-10 11:00 A | 409 | 100% |  |  |  | start no earlier than 2026-06-10 09:00 | Некрасов А | 2h | 2h |

| ID | WBS | Task | Type | Duration | Start | Finish | Predecessors | Complete | Remaining | Total slack | Constraint | Resources | Work | Actual work |
| --- | --- | --- | --- | --- | --- | --- | --- | --- | --- | --- | --- | --- | --- | --- |
| 411 | 1.168 | **монтаж 2х прожекторов на барабаны жиров** |  | 0.25d | 2026-06-02 09:00 A | 2026-06-02 11:00 A |  | 100% |  |  |  |  | 2h | 2h |
| 412 | 1.168.1 | подключить в ШУ самого транспортера на автомат |  | 2h | 2026-06-02 09:00 A | 2026-06-02 11:00 A |  | 100% |  |  | start no earlier than 2026-06-02 09:00 | Макаревич А | 2h | 2h |
| 413 | 1.169 | **проверка вентилятор упавший в зимний период. Тест на месте** |  | 6.25d | 2026-06-05 09:00 A | 2026-06-15 11:00 A |  | 100% |  |  |  |  | 10h | 10h |
| 414 | 1.169.1 | изготовить подиум под улитку |  | 6h | 2026-06-05 09:00 A | 2026-06-05 16:00 A |  | 100% |  |  | start no earlier than 2026-06-05 09:00 | Тимофеев В | 6h | 6h |
| 415 | 1.169.2 | перенос вентилятора |  | 2h | 2026-06-15 09:00 A | 2026-06-15 11:00 A |  | 100% |  |  | start no earlier than 2026-06-15 09:00 | Тимофеев В; Некрасов А | 4h | 4h |
| 416 | 1.170 | прачка 1ц замена светильник |  | 1h | 2026-05-29 09:00 A | 2026-05-29 10:00 A |  | 100% |  |  | start no earlier than 2026-05-29 08:00 | Бундин В | 1h | 1h |
| 417 | 1.171 | запайщик замена нихром |  | 1h | 2026-05-29 09:00 A | 2026-05-29 10:00 A |  | 100% |  |  | start no earlier than 2026-05-29 08:00 | Бундин В | 1h | 1h |
| 418 | 1.172 | устранить провисание патрубка подачи ГДЗ линия 2 |  | 1h | 2026-08-31 09:00 A | 2026-08-31 10:00 A |  | 100% |  |  | start no earlier than 2026-08-31 09:00 | Тимофеев В | 1h | 1h |
| 419 | 1.173 | крепеление РР магистраль ф20 воздух в склад гдз |  | 15min | 2026-05-27 09:00 A | 2026-05-27 09:15 A |  | 100% |  |  | start no earlier than 2026-05-27 09:00 | Бундин В | 0.25h | 0.25h |
| 420 | 1.174 | **перевод насосов ГДЗ на канистры с трассой на насос > 1/2** |  | 3.25d | 2026-05-28 09:00 A | 2026-06-02 11:00 |  | 50% | 1.62d | 210.34d |  |  | 4h | 2h |
| 421 | 1.174.1 | подготовка канистры установить штуцер, подготовить шланг + фитинги на насос |  | 2h | 2026-05-28 09:00 A | 2026-05-28 11:00 A |  | 100% |  |  | start no earlier than 2026-05-28 09:00 | Бундин В | 2h | 2h |
| 422 | 1.174.2 | монаж на линию 1 |  | 2h | 2026-06-02 09:00 | 2026-06-02 11:00 | 421 |  |  | 210.34d | start no earlier than 2026-06-02 09:00 | Бундин В | 2h |  |
| 423 | 1.175 | **с тена печей осыпается оребрение, попадая в продукт** |  | 10.5d | 2026-05-27 09:00 A | 2026-06-10 13:00 A |  | 100% |  |  |  |  | 11h | 11h |
| 424 | 1.175.1 | осмотр тенов печей линия 1 и линия 2 на предмет отслоения оребрения. Очистка / замена |  | 3h | 2026-05-27 09:00 A | 2026-05-27 12:00 A |  | 100% |  |  | start no earlier than 2026-05-27 09:00 | Некрасов А | 3h | 3h |
| 425 | 1.175.2 | замена неисправных тенов линия 2, по диагностике Некрасова 27.05 (токи) 2 линия |  | 4h | 2026-06-02 09:00 A | 2026-06-02 13:00 A |  | 100% |  |  | start no earlier than 2026-06-02 09:00 | Некрасов А | 4h | 4h |
| 426 | 1.175.3 | замена прогнувшихся тен |  | 4h | 2026-06-10 09:00 A | 2026-06-10 13:00 A |  | 100% |  |  | start no earlier than 2026-06-10 09:00 | Некрасов А | 4h | 4h |
| 427 | 1.176 | перенести частотный привод ШУ печи 1л для доступа обслуживания |  | 2h | 2026-06-02 09:00 A | 2026-06-02 11:00 A |  | 100% |  |  | start no earlier than 2026-06-02 09:00 | Дедов В | 2h | 2h |
| 428 | 1.177 | нет фазы линия 2 печь оперативно |  | 1h | 2026-05-26 09:00 A | 2026-05-26 10:00 A |  | 100% |  |  | start no earlier than 2026-05-26 09:00 | Тимофеев В; Бундин В | 2h | 2h |
| 429 | 1.178 | замена твердотельное реле фаза В 2шт (найти пробитый) |  | 30min | 2026-05-27 09:00 A | 2026-05-27 09:30 A |  | 100% |  |  | start no earlier than 2026-05-27 09:00 | Бундин В | 0.5h | 0.5h |
| 430 | 1.179 | выравнивание потенциалов ШУ тв реле печей 1 и 2 |  | 1h | 2026-05-27 09:00 A | 2026-05-27 10:00 A |  | 100% |  |  | start no earlier than 2026-05-27 09:00 | Бундин В | 1h | 1h |
| 431 | 1.180 | **заменить фитинги с гайками (они на складе) на жирах 1 + 2 линия** |  | 28d | 2026-05-27 09:00 A | 2026-07-04 11:00 A |  | 100% |  |  |  |  | 6.08h | 6.08h |
| 432 | 1.180.1 | доставка шланг 8х12мм. Контроль |  | 5min | 2026-05-27 09:00 A | 2026-05-27 09:05 A |  | 100% |  |  | start no earlier than 2026-05-27 09:00 | Шуранов Ю | 0.08h | 0.08h |
| 433 | 1.180.2 | замена 2 линия |  | 2h | 2026-05-27 09:00 A | 2026-05-27 11:00 A |  | 100% |  |  | start no earlier than 2026-05-27 09:00 | Тимофеев В | 2h | 2h |
| 434 | 1.180.3 | замена 1 линия |  | 2h | 2026-06-15 09:00 A | 2026-06-15 11:00 A |  | 100% |  |  | start no earlier than 2026-06-15 09:00 | Тимофеев В | 2h | 2h |
| 435 | 1.180.4 | проверить где не поставлены фитинги с гайками- поменять | manual | 2h | 2026-07-04 09:00 A | 2026-07-04 11:00 A |  | 100% |  |  | start no earlier than 2026-07-04 09:00 | Тимофеев В | 2h | 2h |
| 436 | 1.181 | подключить Sаvema на теко 0,4 через ИБП (ибп на складе) |  | 1h | 2026-05-26 09:00 A | 2026-05-26 10:00 A |  | 100% |  |  | start no earlier than 2026-05-26 09:00 | Дедов В | 1h | 1h |
| 437 | 1.182 | найти и закрутить мотор-редукторы на транспортерах и отписаться на каких были не прикручены и не законтрогаек. |  | 1h | 2026-05-25 09:00 A | 2026-05-25 10:00 A |  | 100% |  |  | start no earlier than 2026-05-25 09:00 | Макаревич А | 1h | 1h |
| 438 | 1.183 | транспортер с жиров на виброохладитель- поменять кнопку стоп 2 линия | manual | 1h | 2026-05-27 09:00 A | 2026-05-27 10:00 A |  | 100% |  |  | start no earlier than 2026-05-27 09:00 | Дедов В | 1h | 1h |
| 439 | 1.184 | демонтировать на накопительном столе квадропака силиконовую резинку по диаметру | manual | 1h | 2026-05-24 09:00 A | 2026-05-24 10:00 A |  | 100% |  |  | start no earlier than 2026-05-24 09:00 | Макаревич А | 1h | 1h |

| ID | WBS | Task | Type | Duration | Start | Finish | Predecessors | Complete | Remaining | Total slack | Constraint | Resources | Work | Actual work |
| --- | --- | --- | --- | --- | --- | --- | --- | --- | --- | --- | --- | --- | --- | --- |
| 440 | 1.185 | **установка фосунок - подача жира 1 линия** |  | 22.12d? | 2026-06-05 09:00 A | 2026-07-07 10:00 |  | 17% | 18.44d? | 185.47d |  |  | 4h | 2h |
| 441 | 1.185.1 | сборка кронштейн для фильтров + счетчик/ покраска |  | 1h | 2026-06-05 09:00 A | 2026-06-05 10:00 A |  | 100% |  |  | start no earlier than 2026-06-05 09:00 | Тимофеев В | 1h | 1h |
| 442 | 1.185.2 | установка |  | 1d? | 2026-07-06 09:00 | 2026-07-06 18:00 |  |  |  | 185.59d | start no earlier than 2026-07-06 09:00 |  |  |  |
| 443 | 1.185.3 | монтаж в линию |  | 2h | 2026-07-06 09:00 | 2026-07-06 11:00 |  |  |  | 186.34d | start no earlier than 2026-07-06 09:00 | Тимофеев В | 2h |  |
| 444 | 1.185.4 | монтаж розетка для блок питания 5в для регистратора |  | 1h | 2026-07-07 09:00 A | 2026-07-07 10:00 A |  | 100% |  |  | start no earlier than 2026-07-07 09:00 | Тимофеев В | 1h | 1h |
| 445 | 1.186 | **конв №2 линия 2 нижний вал нет защиты подшипников (был фетр)** |  | 9.16d | 2026-08-19 09:00 A | 2026-09-01 10:15 A |  | 100% |  |  |  |  | 5.25h | 5.25h |
| 446 | 1.186.1 | разборка, ревизия, подбор / чертеж уплотнеия |  | 2h | 2026-08-26 09:00 A | 2026-08-26 11:00 A |  | 100% |  |  | start no earlier than 2026-08-26 09:00 | Тимофеев В | 2h | 2h |
| 447 | 1.186.2 | заявка уплотнение |  | 1h | 2026-08-19 09:00 A | 2026-08-19 10:00 A |  | 100% |  |  | start no earlier than 2026-08-19 09:00 | Шуранов Ю | 1h | 1h |
| 448 | 1.186.3 | контроль поставки |  | 15min | 2026-09-01 10:00 A | 2026-09-01 10:15 A | 447FS+10d | 100% |  |  | start no earlier than 2026-08-12 09:00 | Шуранов Ю | 0.25h | 0.25h |
| 449 | 1.186.4 | монтаж уплотнения |  | 2h | 2026-08-31 09:00 A | 2026-08-31 11:00 A | 448FS+1d | 100% |  |  | start no earlier than 2026-08-12 09:00 | Тимофеев В | 2h | 2h |
| 450 | 1.187 | вентилятор на охладителе верхний краний слишком большой - переделать крепление |  | 1h | 2026-08-26 09:00 A | 2026-08-26 10:00 A |  | 100% |  |  | start no earlier than 2026-08-26 09:00 | Тимофеев В | 1h | 1h |
| 451 | 1.188 | устанить утечку на мойке зона экструдера |  | 1h | 2023-03-10 09:00 A | 2023-03-10 10:00 A |  | 100% |  |  |  | Бобренок В | 1h | 1h |
| 452 | 1.189 | выдать шестигранные болты и шайбы на ножевой узел экструдерщикам (штук 20) |  | 1h | 2026-05-21 09:00 A | 2026-05-21 10:00 A |  | 100% |  |  | start no earlier than 2026-05-21 08:00 | Бундин В | 1h | 1h |
| 453 | 1.190 | приварить болты к заслонке подачи гранулы на квадропаке (остановить, с мастером согласовать) |  | 1h | 2026-05-26 09:00 A | 2026-05-26 10:00 A |  | 100% |  |  | start no earlier than 2026-05-26 09:00 | Бобренок В | 1h | 1h |
| 454 | 1.191 | увеличить диаметр отверстия, чтобы горловина подачи сух. Гидрализата проходила (жиротопка) |  | 1h | 2026-05-20 09:00 A | 2026-05-20 10:00 A |  | 100% |  |  | start no earlier than 2026-05-20 09:00 | Некрасов А | 1h | 1h |
| 455 | 1.192 | посмотреть приточку, выпадает часто в аварию по насосу |  | 2h | 2026-05-18 08:00 A | 2026-05-18 11:00 A |  | 100% |  |  | start no earlier than 2026-05-18 08:00 | Дедов В | 2h | 2h |
| 456 | 1.193 | замена светильника в зоне завоза навесок (работа на высоте) |  | 2h | 2026-05-15 09:00 A | 2026-05-15 11:00 A |  | 100% |  |  | start no earlier than 2026-05-15 09:00 | Некрасов А; Труфанов А | 4h | 4h |
| 457 | 1.194 | закрепить встиряхиватель полного пакета №1 квадропак |  | 1h | 2026-05-14 08:00 A | 2026-05-14 10:00 A |  | 100% |  |  | start no earlier than 2026-05-14 08:00 | Бобренок В | 1h | 1h |
| 458 | 1.195 | замена лампа светильник гардероб М = на короткий. |  | 1h | 2026-05-13 09:00 A | 2026-05-13 10:00 A |  | 100% |  |  | start no earlier than 2026-05-13 09:00 | Бундин В | 1h | 1h |
| 459 | 1.196 | устранить потерю мощности печи в 2х фазах |  | 2h | 2026-05-12 08:00 A | 2026-05-12 11:00 A |  | 100% |  |  | start no earlier than 2026-05-12 08:00 | Тимофеев В; Бобренок В | 4h | 4h |
| 460 | 1.197 | квадропак изготовить и заменить текстолит на термоноже |  | 2h | 2026-05-12 09:00 A | 2026-05-12 11:00 A |  | 100% |  |  | start no earlier than 2026-05-12 08:00 | Некрасов А | 2h | 2h |
| 461 | 1.198 | **бак стабилизации воды-утечка** |  | 0.25d | 2026-05-22 09:00 A | 2026-05-22 11:00 A |  | 100% |  |  |  | Тимофеев В | 4h | 4h |
| 462 | 1.198.1 | монтаж подачи воды 2 линия в прекондиционер |  | 2h | 2026-05-22 09:00 A | 2026-05-22 11:00 A |  | 100% |  |  | start no earlier than 2026-05-22 09:00 | Тимофеев В | 2h | 2h |
| 463 | 1.199 | **парогенератор 1ц ремонт по гарантии** |  | 30d? | 2026-04-27 09:00 A | 2026-06-05 18:00 A |  | 100% |  |  |  |  | 11.33h | 11.33h |
| 464 | 1.199.1 | отправить ПГ на ремонт орг курьера |  | 10min | 2026-04-27 09:00 A | 2026-04-27 09:10 A |  | 100% |  |  | start no earlier than 2026-04-27 08:00 | Шуранов Ю | 0.17h | 0.17h |
| 465 | 1.199.2 | контроль ремонт |  | 10min | 2026-05-04 09:10 A | 2026-05-04 09:20 A | 464FS+5d | 100% |  |  | start no earlier than 2026-04-27 08:00 | Шуранов Ю | 0.17h | 0.17h |
| 466 | 1.199.3 | нужно посмотреть парогенератор там релюха не щелкает- может разберешься, он находиться на складе у Веры |  | 2h | 2026-05-11 09:00 A | 2026-05-11 11:00 A |  | 100% |  |  | start no earlier than 2026-05-11 09:00 | Дедов В | 2h | 2h |
| 467 | 1.199.4 | орг ремонт по гарантии |  | 1h | 2026-05-13 09:00 A | 2026-05-13 10:00 A |  | 100% |  |  | start no earlier than 2026-05-13 09:00 | Шуранов Ю | 1h | 1h |
| 468 | 1.199.5 | контроль возврата |  | 1d? | 2026-06-05 09:00 A | 2026-06-05 18:00 A |  | 100% |  |  | start no earlier than 2026-06-05 09:00 | Шуранов Ю | 8h | 8h |
| 469 | 1.200 | проверить мотор-редуктор на накопительном столе фасовка и | manual | 4h | 2026-05-11 09:00 A | 2026-05-11 13:00 A |  | 100% |  |  | start no earlier than 2026-05-11 09:00 | Бундин В | 4h | 4h |
| 470 | 1.201 | прикрутить ножку на 2 столе (ножка у Луговских в кабинете) |  | 1h | 2026-05-12 09:00 A | 2026-05-12 10:00 A |  | 100% |  |  | start no earlier than 2026-05-12 08:00 | Бундин В | 1h | 1h |

| ID | WBS | Task | Duration | Start | Finish | Predecessors | Complete | Constraint | Resources | Work | Actual work |
| --- | --- | --- | --- | --- | --- | --- | --- | --- | --- | --- | --- |
| 471 | 1.202 | **отодвинуть миксер подачи сухого гидрализата, чтобы сыпал не на ребра барабана, а на обод выхода** | 0.38d | 2026-05-08 08:00 A | 2026-05-08 12:00 A |  | 100% |  |  | 3h | 3h |
| 472 | 1.202.1 | перекрутить платформу миксера подачи сухого гидрализата снизу, чтобы дуло не задевало барабан | 3h | 2026-05-08 08:00 A | 2026-05-08 12:00 A |  | 100% | start no earlier than 2026-05-08 08:00 | Макаревич А | 3h | 3h |
| 473 | 1.203 | монтаж светильник в районе ВРУ сверху (зона экструдера) | 2h | 2026-05-16 09:00 A | 2026-05-18 11:00 A |  | 100% | start no earlier than 2026-05-16 09:00 | Макаревич А | 2h | 2h |
| 474 | 1.204 | закрепить трубу п/п на фасовке в углу, где стеллаж на клипсы к стене | 1h | 2026-05-07 08:00 A | 2026-05-07 10:00 A |  | 100% | start no earlier than 2026-05-07 08:00 | Бобренок В | 1h | 1h |
| 475 | 1.205 | прикрутить пускатели запуска вытяжки перед лестницей на 2 этаж зона экструдера и розетки | 2h | 2026-05-06 08:00 A | 2026-05-06 11:00 A |  | 100% | start no earlier than 2026-05-06 08:00 | Бобренок В | 2h | 2h |
| 476 | 1.206 | нет напряжения в розетке для инсектицидного светильника, корридор где вывозят готовую продукцию | 1h | 2026-05-07 09:00 A | 2026-05-07 10:00 A |  | 100% | start no earlier than 2026-05-07 09:00 | Бобренок В | 1h | 1h |
| 477 | 1.207 | подключить через счетчик подачу жира | 2h | 2026-05-05 08:00 A | 2026-05-05 11:00 A |  | 100% | start no earlier than 2026-05-05 08:00 | Тимофеев В | 2h | 2h |
| 478 | 1.208 | **повесить на места светильники инсектицидные (замена ламп)** | 0.38d | 2026-05-05 09:00 A | 2026-05-05 12:00 A |  | 100% |  |  | 3h | 3h |
| 479 | 1.208.1 | заменить инсектицидные лампы в светильниках (количество, которое поменял -записать) | 3h | 2026-05-05 09:00 A | 2026-05-05 12:00 A |  | 100% | start no earlier than 2026-05-05 08:00 | Бундин В | 3h | 3h |
| 480 | 1.209 | на жиротопке установить газ лифты (они на складе) | 1h | 2026-05-05 08:00 A | 2026-05-05 10:00 A |  | 100% | start no earlier than 2026-05-05 08:00 | Бобренок В | 1h | 1h |
| 481 | 1.210 | **дверь вход в столовую вкрыть заглушки и установить личинку с ключами (взять на складе)** | 14.12d | 2026-05-13 09:00 A | 2026-06-02 10:00 A |  | 100% |  |  | 42.5h | 42.5h |
| 482 | 1.210.1 | заказать ручку / ответ | 30min | 2026-05-13 09:00 A | 2026-05-13 09:30 A |  | 100% | start no earlier than 2026-05-13 09:00 | Шуранов Ю | 0.5h | 0.5h |
| 483 | 1.210.2 | конроль | 5d | 2026-05-18 09:00 A | 2026-05-22 18:00 A | 482 | 100% | start no earlier than 2026-05-18 09:00 | Карабанов | 40h | 40h |
| 484 | 1.210.3 | замена | 1h | 2026-05-30 09:00 A | 2026-06-01 10:00 A | 483 | 100% | start no earlier than 2026-05-30 09:00 | Тимофеев В | 1h | 1h |
| 485 | 1.210.4 | перевернуть замок ручкой вверх, личика переворачивается в любую сторону | 1h | 2026-06-02 09:00 A | 2026-06-02 10:00 A |  | 100% | start no earlier than 2026-06-02 09:00 | Макаревич А | 1h | 1h |
| 486 | 1.211 | поставить шпонки на питатель в слесарке | 1h | 2026-05-04 09:00 A | 2026-05-04 10:00 A |  | 100% | start no earlier than 2026-05-04 08:00 | Тимофеев В | 1h | 1h |
| 487 | 1.212 | установить транспортер на 1 линии | 1h | 2026-05-04 08:00 A | 2026-05-04 10:00 A |  | 100% | start no earlier than 2026-05-04 08:00 | Дедов В | 1h | 1h |
| 488 | 1.213 | собрать транспортер ковшевой (валы приехали, фетр на складе) | 4h | 2026-04-30 08:00 A | 2026-04-30 13:00 A |  | 100% | start no earlier than 2026-04-30 08:00 | Дедов В | 4h | 4h |
| 489 | 1.214 | **со старой ленты снять ковши в слесарке** | 0.5d | 2026-05-05 09:00 A | 2026-05-05 13:00 A |  | 100% |  |  | 4h | 4h |
| 490 | 1.214.1 | подготовить ленту с ковшами (150 мм между ковшами) лента на складе 5120мм в кольце и унести на желтый склад | 4h | 2026-05-05 09:00 A | 2026-05-05 13:00 A |  | 100% | start no earlier than 2026-05-05 09:00 | Бундин В | 4h | 4h |
| 491 | 1.215 | **разбираем улитки циклон и печи, замена подшипников** | 1d? | 2026-06-03 09:00 A | 2026-06-03 18:00 A |  | 100% |  | Тимофеев В; Бундин В | 16h | 16h |
| 492 | 1.215.1 | проверка подшипников на улитках печей | 1d? | 2026-06-03 09:00 A | 2026-06-03 18:00 A |  | 100% | start no earlier than 2026-06-03 09:00 |  |  |  |
| 493 | 1.216 | ТО Теко 1,5 (чистка тен, смазка штоков пневмоцилиндров, подшипников) | 3h | 2026-04-28 09:00 A | 2026-04-28 12:00 A |  | 100% | start no earlier than 2026-04-28 09:00 | Дедов В | 3h | 3h |
| 494 | 1.217 | ТО Теко 0,4 (чистка тен, смазка штоков пневмоцилиндров, подшипников) | 3h | 2026-04-28 09:00 A | 2026-04-28 12:00 A |  | 100% | start no earlier than 2026-04-28 09:00 | Дедов В | 3h | 3h |
| 495 | 1.218 | полное ТО квадропака (чистка тен, смазка штоков пневмоцилиндров, шприцевание подшипников, протяжка болтовых соединений) | 3h | 2026-04-28 09:00 A | 2026-04-28 12:00 A |  | 100% | start no earlier than 2026-04-28 09:00 | Дедов В | 3h | 3h |

| ID | WBS | Task | Type | Duration | Start | Finish | Predecessors | Complete | Constraint | Resources | Work | Actual work |
| --- | --- | --- | --- | --- | --- | --- | --- | --- | --- | --- | --- | --- |
| 496 | 1.219 | **модернизация трассы слива зона мойки экструдеров** |  | 20d? | 2026-04-27 09:00 A | 2026-05-23 10:00 A |  | 100% |  |  | 15.5h | 15.5h |
| 497 | 1.219.1 | заявка соединения и гидрозатвор |  | 15min | 2026-04-27 09:00 A | 2026-04-27 09:15 A |  | 100% | start no earlier than 2026-04-27 08:00 | Шуранов Ю | 0.25h | 0.25h |
| 498 | 1.219.2 | контроль доставки |  | 15min | 2026-05-04 09:15 A | 2026-05-04 09:30 A | 497FS+5d | 100% | start no earlier than 2026-04-27 08:00 | Шуранов Ю | 0.25h | 0.25h |
| 499 | 1.219.3 | монтаж |  | 1d? | 2026-05-06 09:30 A | 2026-05-07 09:30 A | 498FS+2d | 100% | start no earlier than 2026-04-27 08:00 | Тимофеев В | 8h | 8h |
| 500 | 1.219.4 | заявка на бурить стену / получить счет |  | 1h | 2026-04-28 09:00 A | 2026-04-28 10:00 A |  | 100% | start no earlier than 2026-04-28 09:00 | Зорькин В | 1h | 1h |
| 501 | 1.219.5 | расчет угла бурения. Замер + зхарисовать схему |  | 4h | 2026-05-13 09:00 A | 2026-05-13 13:00 A | 500 | 100% | start no earlier than 2026-05-13 09:00 | Зорькин В | 4h | 4h |
| 502 | 1.219.6 | орг работу подрядчика по бурению |  | 1h | 2026-05-20 09:00 A | 2026-05-20 10:00 A | 501 | 100% | start no earlier than 2026-05-20 09:00 | Зорькин В | 1h | 1h |
| 503 | 1.219.7 | запенить стыки в месте бурения | manual | 1h | 2026-05-23 09:00 A | 2026-05-23 10:00 A |  | 100% | start no earlier than 2026-05-23 09:00 | Бобренок В | 1h | 1h |
| 504 | 1.220 | взять на складе 2 гофросифона и заменить на мойке экструдер |  | 1h | 2026-04-24 09:00 A | 2026-04-24 10:00 A |  | 100% | start no earlier than 2026-04-24 08:00 | Бундин В | 1h | 1h |
| 505 | 1.221 | заменить монтажную коробку на 150х200мм -она у них на стяжках. Коробка новая на складе | manual | 1h | 2026-04-26 09:00 A | 2026-04-26 10:00 A |  | 100% | start no earlier than 2026-04-26 09:00 | Бобренок В | 1h | 1h |
| 506 | 1.222 | под мойкой в зоне экструдера на слив 3 греющего кабеля, нужно разобраться |  | 1h | 2026-04-24 09:00 A | 2026-04-24 10:00 A |  | 100% | start no earlier than 2026-04-24 08:00 | Шуранов Ю | 1h | 1h |
| 507 | 1.223 | жиротопка течет сальник, проверить и устранить течи везде. Чистка фильтров. |  | 2h | 2026-04-28 09:00 A | 2026-04-28 11:00 A |  | 100% | start no earlier than 2026-04-28 09:00 | Тимофеев В | 2h | 2h |
| 508 | 1.224 | ТО печи линия 1 ( вскрыть, ревизия- замена перемычек и т.д.) |  | 4h | 2026-04-23 09:00 A | 2026-04-23 13:00 A |  | 100% | start no earlier than 2026-04-23 08:00 | Бундин В | 4h | 4h |
| 509 | 1.225 | протянуть кабель UTP от столя Луговских до шкафа серверного (расскажу как протянуть по звонку) |  | 4h | 2026-04-23 09:00 A | 2026-04-23 13:00 A |  | 100% | start no earlier than 2026-04-23 08:00 | Бундин В | 4h | 4h |
| 510 | 1.226 | **подключить приточку как было** |  | 0.25d | 2026-04-29 09:00 A | 2026-04-29 11:00 A |  | 100% |  | Дедов В | 4h | 4h |
| 511 | 1.226.1 | подключить сервопривод на шибер и подключить |  | 2h | 2026-04-29 09:00 A | 2026-04-29 11:00 A |  | 100% | start no earlier than 2026-04-29 09:00 | Дедов В | 2h | 2h |
| 512 | 1.227 | **замена ленты на транспортере тип 2 2 линия (дособрать)** |  | 1.5d | 2026-04-24 09:00 A | 2026-04-27 13:00 A |  | 100% |  |  | 6h | 6h |
| 513 | 1.227.1 | со снятой ленты транспортера тип 2 снять все ковши (готовим для замены на 1 линии) |  | 2h | 2026-04-24 09:00 A | 2026-04-24 11:00 A |  | 100% | start no earlier than 2026-04-24 09:00 | Бундин В | 2h | 2h |
| 514 | 1.227.2 | установка ковшей со старой ленты на новую со склада 400х 5120мм |  | 4h | 2026-04-25 09:00 A | 2026-04-27 13:00 A |  | 100% | start no earlier than 2026-04-25 09:00 | Макаревич А | 4h | 4h |
| 515 | 1.228 | **система угольной фильтрации вытяжных газов с печей и пневотранспорта** |  | 0.25d | 2026-04-21 09:00 A | 2026-04-21 11:00 A |  | 100% |  |  | 3h | 3h |
| 516 | 1.228.1 | подготовить пластины 200*200 5мм для анкерения колон к полу ф12 6шт |  | 2h | 2026-04-21 09:00 A | 2026-04-21 11:00 A |  | 100% | start no earlier than 2026-04-21 09:00 | Бундин В | 2h | 2h |
| 517 | 1.228.2 | подготовить пластины 100*100 5мм для анкерения колон к стене 8шт |  | 1h | 2026-04-21 09:00 A | 2026-04-21 10:00 A |  | 100% | start no earlier than 2026-04-21 09:00 | Бундин В | 1h | 1h |
| 518 | 1.229 | проверка фильтров воды с редуктором в прекондиционер на ТО |  | 1h | 2026-04-22 09:00 A | 2026-04-22 10:00 A |  | 100% | start no earlier than 2026-04-22 09:00 | Бундин В | 1h | 1h |
| 519 | 1.230 | **заменить фильтры на жиротопка** |  | 17.12d | 2026-09-14 09:00 A | 2026-10-01 10:00 A |  | 100% |  |  | 2.25h | 2.25h |
| 520 | 1.230.1 | выяснить тип фильтров, заказ катриджи |  | 1h | 2026-09-14 09:00 A | 2026-09-14 10:00 A |  | 100% | start no earlier than 2026-09-14 09:00 | Зорькин В | 1h | 1h |
| 521 | 1.230.2 | контроль |  | 15min | 2026-09-24 10:00 A | 2026-09-24 10:15 A | 520FS+10d | 100% | start no earlier than 2026-04-22 09:00 | Зорькин В | 0.25h | 0.25h |
| 522 | 1.230.3 | замена |  | 1h | 2026-10-01 09:00 A | 2026-10-01 10:00 A | 521 | 100% | start no earlier than 2026-10-01 09:00 | Бобренок В | 1h | 1h |
| 523 | 1.231 | проверить напряжение в розетке конатушка вывоза готовой продукции |  | 1h | 2026-04-19 09:00 A | 2026-04-20 10:00 A |  | 100% | start no earlier than 2026-04-19 09:00 | Дедов В | 1h | 1h |

| ID | WBS | Task | Duration | Start | Finish | Predecessors | Complete | Remaining | Total slack | Free slack | Constraint | Resources | Work | Actual work |
| --- | --- | --- | --- | --- | --- | --- | --- | --- | --- | --- | --- | --- | --- | --- |
| 524 | 1.232 | **обслуживание инсекьюеров, утлизация отработанных ламп** | 127.12d | 2026-04-21 08:00 A | 2026-10-05 10:00 |  | 98% | 2.84d | 113.47d |  |  |  | 89.5h | 87.5h |
| 525 | 1.232.1 | Составить список ламп по цехам и передать Зорькину | 2h | 2026-04-21 08:00 A | 2026-04-21 11:00 A |  | 100% |  |  |  | start no earlier than 2026-04-21 08:00 | Тимофеев В | 2h | 2h |
| 526 | 1.232.2 | Заказать новые лампы | 30min | 2026-04-21 10:00 A | 2026-04-21 10:30 A | 525 | 100% |  |  |  | start no earlier than 2026-04-21 08:00 | Зорькин В | 0.5h | 0.5h |
| 527 | 1.232.3 | доставка | 10d | 2026-04-21 10:30 A | 2026-05-05 10:30 A | 526 | 100% |  |  |  | start no earlier than 2026-04-21 08:00 | Карабанов | 80h | 80h |
| 528 | 1.232.4 | снять все светильники мухоловки, извлечь лампы, уложить аккуратно в коробку (оставить в слесарке отработанные) светильники снятые передать мастеру смены для мытья | 2h | 2026-05-05 10:30 A | 2026-05-05 12:30 A | 527 | 100% |  |  |  | start no earlier than 2026-05-01 09:00 | Бобренок В | 2h | 2h |
| 529 | 1.232.5 | после чистки установить лампы в светильники, тусклые замнеить | 2h | 2026-05-12 09:00 A | 2026-05-12 11:00 A | 528 | 100% |  |  |  | start no earlier than 2026-05-12 09:00 | Бундин В | 2h | 2h |
| 530 | 1.232.6 | сообщить кол-во замененных ламп нач цехов | 1h | 2026-05-12 11:00 A | 2026-05-12 12:00 A | 529 | 100% |  |  |  | start no earlier than 2026-05-01 09:00 | Шуранов Ю | 1h | 1h |
| 531 | 1.232.7 | запрос договор на утилизацию ламп | 1h | 2026-09-14 09:00 | 2026-09-14 10:00 |  |  |  | 133.34d | 19.88d | start no earlier than 2026-09-14 09:00 | Домоводов К | 1h |  |
| 532 | 1.232.8 | подготовить лампы к утилизации | 1h | 2026-10-05 09:00 | 2026-10-05 10:00 | 530, 531 |  |  | 113.47d |  | start no earlier than 2026-10-05 09:00 | Тимофеев В | 1h |  |
| 533 | 1.233 | **на 1 линии подготовить из оргстекла обратные крышки транспортера тип 2 (ковшевой), согласовать остановка с мастером и установить** | 0.12d | 2026-04-24 09:00 A | 2026-04-24 10:00 A |  | 100% |  |  |  |  | Бобренок В | 2h | 2h |
| 534 | 1.233.1 | перекрутить оргстекло (операторы подскажут в чем проблема) | 1h | 2026-04-24 09:00 A | 2026-04-24 10:00 A |  | 100% |  |  |  | start no earlier than 2026-04-24 09:00 | Бобренок В | 1h | 1h |
| 535 | 1.234 | проверить гидроаккумуляторы парогенераторов 1 и 2 линия и 100литровый в комнате стабилизации воды, если нужно качаем 2 очка. | 2h | 2026-04-19 09:00 A | 2026-04-20 11:00 A |  | 100% |  |  |  | start no earlier than 2026-04-19 09:00 | Макаревич А | 2h | 2h |
| 536 | 1.235 | проверка фильтров на редукторы экструдеров | 1h | 2026-04-24 09:00 A | 2026-04-24 10:00 A |  | 100% |  |  |  | start no earlier than 2026-04-24 09:00 | Тимофеев В | 1h | 1h |
| 537 | 1.236 | проверка токов, всех перемычек, шприцевание всех подшипников печи №2 | 3h | 2026-04-23 09:00 A | 2026-04-23 12:00 A |  | 100% |  |  |  | start no earlier than 2026-04-24 09:00 | Бобренок В | 3h | 3h |
| 538 | 1.237 | на питателе заменить втулки линия 1 и 2 | 2h | 2026-04-15 08:00 A | 2026-04-15 11:00 A |  | 100% |  |  |  | start no earlier than 2026-04-15 08:00 | Бобренок В | 2h | 2h |
| 539 | 1.238 | проверить радиатор приточки (протечки, есть ли подача горячей воды), если нет - выключить приточку, чтобы не разморозить! | 1h | 2026-04-14 09:00 A | 2026-04-14 10:00 A |  | 100% |  |  |  | start no earlier than 2026-04-14 08:00 | Труфанов А | 1h | 1h |
| 540 | 1.239 | приварить левую ногу мезонина на фасовке (штабелером сместили) | 1h | 2026-04-15 09:00 A | 2026-04-15 10:00 A |  | 100% |  |  |  | start no earlier than 2026-04-15 09:00 | Бобренок В | 1h | 1h |
| 541 | 1.240 | на печи №1 прошприцевать подшипники, проверить токи, если нужно вскрываем на ревизию перемычек | 3h | 2026-04-14 09:00 A | 2026-04-14 12:00 A |  | 100% |  |  |  | start no earlier than 2026-04-14 08:00 | Труфанов А | 3h | 3h |
| 542 | 1.241 | замена электродной группы на парогенераторе линия №1 (электроды подготовили в слесарке) | 4h | 2026-04-14 09:00 A | 2026-04-14 13:00 A |  | 100% |  |  |  | start no earlier than 2026-04-14 08:00 | Труфанов А | 4h | 4h |
| 543 | 1.242 | на квадропаке тена выставить в параллель | 1h | 2026-04-13 09:00 A | 2026-04-13 10:00 A |  | 100% |  |  |  | start no earlier than 2026-04-13 08:00 | Труфанов А | 1h | 1h |
| 544 | 1.243 | покрасить подиум под циклонами линия 1 и 2 | 2h | 2026-04-22 09:00 A | 2026-04-22 11:00 A |  | 100% |  |  |  | start no earlier than 2026-04-22 09:00 | Бундин В | 2h | 2h |
| 545 | 1.244 | подготовить лекало на приемный лоток транспортера тип 2 (у них в работе картонка, можно по ней и сделать), если будет остановка приварить | 1h | 2026-04-27 09:00 A | 2026-04-27 10:00 A |  | 100% |  |  |  | start no earlier than 2026-04-27 09:00 | Тимофеев В | 1h | 1h |
| 546 | 1.245 | на пнемоулитку поставить пистолет (зона экструдера) | 1h | 2026-04-11 09:00 A | 2026-04-13 10:00 A |  | 100% |  |  |  | start no earlier than 2026-04-11 09:00 | Макаревич А | 1h | 1h |
| 547 | 1.246 | установить фильтр на кондиционер между печками (фильтр у Луговских) | 1h | 2026-04-22 09:00 A | 2026-04-22 10:00 A |  | 100% |  |  |  | start no earlier than 2026-04-22 09:00 | Труфанов А | 1h | 1h |

| ID | WBS | Task | Type | Duration | Start | Finish | Predecessors | Complete | Actual start | Actual finish | Total slack | Constraint | Resources | Work | Actual work |
| --- | --- | --- | --- | --- | --- | --- | --- | --- | --- | --- | --- | --- | --- | --- | --- |
| 548 | 1.247 | **зафиксировать ручку в туалет (закрутить)** |  | 856.12d | 2023-03-22 09:00 A | 2026-04-22 10:00 |  | 100% |  | 2026-05-05 10:00 |  |  |  | 2h | 2h |
| 549 | 1.247.1 | заказать ручки |  | 1h | 2023-03-22 09:00 A | 2023-03-22 10:00 A |  | 100% |  |  |  |  | Шуранов Ю | 1h | 1h |
| 550 | 1.247.2 | установка (заменить ручку, взять на складе) |  | 1h | 2026-05-05 09:00 A | 2026-05-05 10:00 A |  | 100% |  |  |  | start no earlier than 2026-05-05 09:00 | Бобренок В | 1h | 1h |
| 551 | 1.248 | ТО теко 1,5 (чистка тен, смазка штоков пневмоцилиндров, подшипников) | manual | 3h | 2026-04-25 09:00 A | 2026-04-25 12:00 A |  | 100% |  |  |  | start no earlier than 2026-04-25 09:00 | Труфанов А | 3h | 3h |
| 552 | 1.249 | слить конденсат с компрессора, чистка фильтров и радиаторов | manual | 2h | 2026-04-12 09:00 A | 2026-04-12 11:00 A |  | 100% |  |  |  | start no earlier than 2026-04-12 09:00 | Макаревич А | 2h | 2h |
| 553 | 1.250 | **заказать газлифт жиротопка** |  | 11.12d? | 2026-04-22 09:00 A | 2026-05-06 10:00 |  | 100% |  | 2026-08-18 09:20 |  |  |  | 84.08h | 84.08h |
| 554 | 1.250.1 | доставка |  | 10d | 2026-04-22 09:00 A | 2026-05-05 18:00 A |  | 100% |  |  |  | start no earlier than 2026-04-22 09:00 | Карабанов | 80h | 80h |
| 555 | 1.250.2 | **установка газ лифт** |  | 69.04d | 2026-05-13 09:00 A | 2026-08-18 09:20 A |  | 100% |  |  |  |  |  | 4.08h | 4.08h |
| 556 | 1.250.2.1 | контроль поставки / размер |  | 20min | 2026-08-18 09:00 A | 2026-08-18 09:20 A |  | 100% |  |  |  | start no earlier than 2026-08-18 09:00 | Шуранов Ю | 0.33h | 0.33h |
| 557 | 1.250.2.2 | наварить уголок для площадки упора газлифта |  | 1h | 2026-05-13 09:00 A | 2026-05-13 10:00 A |  | 100% |  |  |  | start no earlier than 2026-05-13 09:00 | Труфанов А; Некрасов А | 2h | 2h |
| 558 | 1.250.2.3 | заявка газлифт с меньшей усилием/ выяснить координата |  | 30min | 2026-05-27 09:00 A | 2026-05-27 09:30 A |  | 100% |  |  |  | start no earlier than 2026-05-27 09:00 | Зорькин В | 0.5h | 0.5h |
| 559 | 1.250.2.4 | доставка контроль |  | 15min | 2026-08-12 09:00 A | 2026-08-12 09:15 A | 558FS+10d | 100% |  |  |  | start no earlier than 2026-05-13 09:00 | Зорькин В | 0.25h | 0.25h |
| 560 | 1.250.2.5 | замена |  | 1h | 2026-08-12 09:00 A | 2026-08-12 10:00 A |  | 100% |  |  |  | start no earlier than 2026-08-12 09:00 | Бобренок В | 1h | 1h |
| 561 | 1.251 | убрать диммер за еврокубом, где завозят навески (провода заизолировать и спрятать в кабель-канал) |  | 1h | 2026-04-10 08:00 A | 2026-04-10 10:00 A |  | 100% |  |  |  | start no earlier than 2026-04-10 08:00 | Бобренок В | 1h | 1h |
| 562 | 1.252 | закрыть монтажную коробку над дверью зона жиров выход |  | 1h | 2026-04-09 08:00 A | 2026-04-09 10:00 A |  | 100% |  |  |  | start no earlier than 2026-04-09 08:00 | Бобренок В | 1h | 1h |
| 563 | 1.253 | **на аппликаторе установить принтер (взять на складе)** |  | 3h? | 2026-04-10 09:00 | 2026-04-10 12:00 |  | 100% | 2026-04-09 08:00 | 2026-05-14 10:00 |  |  |  | 5h | 5h |
| 564 | 1.253.1 | монтаж витой пары от аппликатора до шкафа где вывозят ГП справа |  | 4h | 2026-04-09 08:00 A | 2026-04-09 13:00 A |  | 100% |  |  |  | start no earlier than 2026-04-09 08:00 | Бобренок В | 4h | 4h |
| 565 | 1.253.2 | тест принтера |  | 1h | 2026-05-14 09:00 A | 2026-05-14 10:00 A |  | 100% |  |  |  | start no earlier than 2026-05-14 09:00 | Зорькин В | 1h | 1h |
| 566 | 1.254 | замена шнек+гильзы (б/у) на 2 линии |  | 4h | 2026-04-09 08:00 A | 2026-04-09 13:00 A |  | 100% |  |  |  | start no earlier than 2026-04-09 08:00 | Тимофеев В | 4h | 4h |
| 567 | 1.255 | закрепить светильник в комнатке перед выходом, где вывозят готовую продукцию справа, оторвался | manual | 1h | 2026-04-08 09:00 A | 2026-04-08 10:00 A |  | 100% |  |  |  | start no earlier than 2026-04-08 08:00 | Бундин В | 1h | 1h |
| 568 | 1.256 | **замена лент на аппликаторе, подумать какой сделать отражатель для фотометки, чтобы не цепляло пакеты в работе** |  | 0.5d | 2026-05-27 09:00 | 2026-05-27 13:00 |  |  |  |  |  |  |  | 4h |  |
| 569 | 1.256.1 | замена ленеты |  | 4h | 2026-10-12 09:00 | 2026-10-12 13:00 |  |  |  |  | 108.09d | start no earlier than 2026-10-12 09:00 | Тимофеев В | 4h |  |
| 570 | 1.257 | подготовить электродную группу для парогенератора (собрать) |  | 2h | 2026-04-08 09:00 A | 2026-04-08 11:00 A |  | 100% |  |  |  | start no earlier than 2026-04-08 08:00 | Бундин В | 2h | 2h |
| 571 | 1.258 | **просыпается гранула на пересыпке с барабана в конвейер** |  | 0.5d | 2026-04-08 09:00 A | 2026-04-08 13:00 A |  | 100% |  |  |  |  |  | 6h | 6h |
| 572 | 1.258.1 | пододвинуть ближе к барабану конвейер + охладитель + вентилятор |  | 2h | 2026-04-08 09:00 A | 2026-04-08 11:00 A |  | 100% |  |  |  | start no earlier than 2026-04-08 09:00 | Бобренок В | 2h | 2h |
| 573 | 1.258.2 | доработка приемного лотка конвейера |  | 4h | 2026-04-08 09:00 A | 2026-04-08 13:00 A |  | 100% |  |  |  | start no earlier than 2026-04-08 09:00 | Некрасов А | 4h | 4h |
| 574 | 1.259 | забрать 2 рохли с пандуса, снять колеса в зип (зад- перед), а сами рохли в контейнер |  | 3h | 2026-04-04 09:00 A | 2026-04-06 12:00 A |  | 100% |  |  |  | start no earlier than 2026-04-04 09:00 | Труфанов А | 3h | 3h |

| ID | WBS | Task | Type | Duration | Start | Finish | Predecessors | Complete | Constraint | Resources | Work | Actual work |
| --- | --- | --- | --- | --- | --- | --- | --- | --- | --- | --- | --- | --- |
| 575 | 1.260 | **квадропак модернизация регулировки пластины нажима роликов для захвата пакета** |  | 2.12d | 2026-04-15 09:00 A | 2026-04-17 10:00 A |  | 100% |  |  | 3h | 3h |
| 576 | 1.260.1 | регулировочной тягой отвезти нажимную площадку на 5мм (остановить работу на 10 минут, согласовать с мастером) |  | 1h | 2026-04-17 09:00 A | 2026-04-17 10:00 A |  | 100% | start no earlier than 2026-04-17 09:00 | Бобренок В | 1h | 1h |
| 577 | 1.260.2 | изготовление пластины на ногу по аналогии как на первой ноге |  | 1h | 2026-04-15 09:00 A | 2026-04-15 10:00 A | 576 | 100% | start no earlier than 2026-04-15 09:00 | Бобренок В | 1h | 1h |
| 578 | 1.260.3 | монтаж |  | 1h | 2026-04-15 10:00 A | 2026-04-15 11:00 A | 577 | 100% | start no earlier than 2026-04-10 09:00 | Бобренок В | 1h | 1h |
| 579 | 1.261 | изготовить крышку на приямок слива канализации под раковинами зона экструдер. Из нерж, с ручкой. |  | 4h | 2026-04-02 08:00 A | 2026-04-02 13:00 A |  | 100% | start no earlier than 2026-04-02 08:00 | Бобренок В | 4h | 4h |
| 580 | 1.262 | выпрямить погнутые роль-ворота на рампе - в сторону слесарки (нужно откутить левую направляшку и вставить воротину на место) |  | 1h | 2026-04-02 08:00 A | 2026-04-02 10:00 A |  | 100% | start no earlier than 2026-04-02 08:00 | Бобренок В | 1h | 1h |
| 581 | 1.263 | **выключатель света на входе в гидролизатную закрепить сам рычаг переключения, проскальзывает** |  | 15.12d | 2026-04-06 09:00 A | 2026-04-27 10:00 A |  | 100% |  | Макаревич А | 123h | 123h |
| 582 | 1.263.1 | заказать выключатель |  | 1h | 2026-04-06 09:00 A | 2026-04-06 10:00 A |  | 100% | start no earlier than 2026-04-06 08:00 | Шуранов Ю | 1h | 1h |
| 583 | 1.263.2 | замена выключателя (выключатель в слесарке тебе показывал) |  | 1h | 2026-04-25 09:00 A | 2026-04-27 10:00 A |  | 100% | start no earlier than 2026-04-25 09:00 | Бобренок В | 1h | 1h |
| 584 | 1.264 | на пандусе 1 цеха справа - пометить шнеки и гильзы что они рабочие и вывести в контейнер |  | 2h | 2026-04-01 08:00 A | 2026-04-01 11:00 A |  | 100% | start no earlier than 2026-04-01 08:00 | Бобренок В | 2h | 2h |
| 585 | 1.265 | взять с контейнера пысос- проверить рабочий или нет (если работает выдать в 1 цех) |  | 2h | 2026-04-01 08:00 A | 2026-04-01 11:00 A |  | 100% | start no earlier than 2026-04-01 08:00 | Бобренок В | 2h | 2h |
| 586 | 1.266 | заменить плату интерфейса RS485 |  | 1h | 2026-04-04 09:00 A | 2026-04-06 10:00 A |  | 100% | start no earlier than 2026-04-04 09:00 | Труфанов А | 1h | 1h |
| 587 | 1.267 | замена шнеки 1 линия |  | 4h | 2026-03-31 08:00 A | 2026-03-31 13:00 A |  | 100% | start no earlier than 2026-03-31 08:00 | Тимофеев В; Бобренок В | 8h | 8h |
| 588 | 1.268 | замер износ шнеков |  | 1h | 2026-03-31 08:00 A | 2026-03-31 10:00 A |  | 100% | start no earlier than 2026-03-31 08:00 | Тимофеев В; Бобренок В; Зорькин В | 3h | 3h |
| 589 | 1.269 | почистить канальные вентиляторы вытяжки в курилке |  | 2h | 2026-03-28 09:00 A | 2026-03-30 11:00 A |  | 100% | start no earlier than 2026-03-28 09:00 | Бундин В | 2h | 2h |
| 590 | 1.270 | монтаж розетки на ногу нотис справа для подключения весов |  | 2h | 2026-03-27 09:00 A | 2026-03-27 11:00 A |  | 100% | start no earlier than 2026-03-27 09:00 | Труфанов А | 2h | 2h |
| 591 | 1.271 | добавить вибрации на виброохладителе линия 2 (согласовать с мастером, если будет остановка) |  | 2h | 2026-04-30 09:00 A | 2026-04-30 11:00 A | 600 | 100% |  | Бундин В | 2h | 2h |
| 592 | 1.272 | **замена ленты конвейер 2 линия 2** |  | 12.38d | 2026-04-07 09:00 A | 2026-04-23 12:00 A |  | 100% |  |  | 15h | 15h |
| 593 | 1.272.1 | взять ленту 400мм и начать крепить ковши для транспортера тип 2 (посчитать количество на транспортере) | manual | 9h | 2026-04-07 09:00 A | 2026-04-08 10:00 A |  | 100% | start no earlier than 2026-04-07 09:00 | Тимофеев В | 9h | 9h |
| 594 | 1.272.2 | замена ленты |  | 3h | 2026-04-23 09:00 A | 2026-04-23 12:00 A |  | 100% | start no earlier than 2026-04-23 09:00 | Тимофеев В; Бундин В | 6h | 6h |
| 595 | 1.273 | заменить на штабелере второй АКБ в зоне экструдера |  | 1h | 2026-03-28 09:00 A | 2026-03-30 10:00 A |  | 100% | start no earlier than 2026-03-28 09:00 | Дедов В | 1h | 1h |
| 596 | 1.274 | на кпп №1 опустить на 10см кабель в гофре для камер видеонаблюдения | manual | 2h | 2026-03-28 09:00 A | 2026-03-28 11:00 A |  | 100% | start no earlier than 2026-03-28 09:00 | Бундин В | 2h | 2h |
| 597 | 1.275 | вход охладителя 1 линии - нужно на среднем лотке между уровнями сделать сбоков шторки (фото скину) |  | 2h | 2026-03-28 09:00 A | 2026-03-30 11:00 A |  | 100% | start no earlier than 2026-03-28 09:00 | Бундин В | 2h | 2h |
| 598 | 1.276 | на первой линии под выходом из печи прикрутить на стенку оргстекло (Слава готовил по размерам оргстекло) |  | 1h | 2026-03-28 09:00 A | 2026-03-30 10:00 A |  | 100% | start no earlier than 2026-03-28 09:00 | Труфанов А | 1h | 1h |
| 599 | 1.277 | На пробниках оторвали разъем питания, нужно припаять |  | 2h | 2026-03-27 09:00 A | 2026-03-27 11:00 A |  | 100% | start no earlier than 2026-03-27 09:00 | Дедов В | 2h | 2h |
| 600 | 1.278 | подготовить 1 ленты с ковшами для транспортера тип 2 (зип) |  | 1d? | 2026-04-29 09:00 A | 2026-04-29 18:00 A |  | 100% | start no earlier than 2026-04-29 09:00 | Шуранов Ю | 8h | 8h |
| 601 | 1.279 | замена на старые капролонновые втулки в питателе линия 1 |  | 1h | 2026-03-26 09:00 A | 2026-03-26 10:00 A |  | 100% | start no earlier than 2026-03-26 09:00 | Тимофеев В | 1h | 1h |
| 602 | 1.280 | сделать на 2 линии вставыш на ленту транспортера тип 2 и установить на транспортер |  | 4h | 2026-03-25 09:00 A | 2026-03-25 13:00 A |  | 100% | start no earlier than 2026-03-25 09:00 | Некрасов А; Бобренок В | 8h | 8h |
| 603 | 1.281 | герметизация мезонина подачи навесок по шву |  | 1h | 2026-04-15 09:00 A | 2026-04-15 10:00 A |  | 100% | start no earlier than 2026-04-15 09:00 | Бобренок В | 1h | 1h |

| ID | WBS | Task | Type | Duration | Start | Finish | Complete | Remaining | Actual start | Actual finish | Constraint | Resources | Work | Actual work |
| --- | --- | --- | --- | --- | --- | --- | --- | --- | --- | --- | --- | --- | --- | --- |
| 604 | 1.282 | **на 2 линии на хомуты закрепить горловину к бункеру подачи сухого гидрализата (все расскажу)** |  | 0.25d | 2026-04-27 09:00 A | 2026-04-27 11:00 A | 100% |  |  |  |  | Некрасов А | 4h | 4h |
| 605 | 1.282.1 | на горловине подачи сухого гидрализата приварить выход под углом 45 градусов (углы из нерж есть в 3 цехе) |  | 2h | 2026-04-27 09:00 A | 2026-04-27 11:00 A | 100% |  |  |  | start no earlier than 2026-04-27 09:00 | Макаревич А | 2h | 2h |
| 606 | 1.283 | **разобрать с двух сторон питатель 2 линия - ревизия шестеренок и втулок спереди (оставить все разобранное)** |  | 2h | 2026-03-24 09:00 | 2026-03-24 11:00 | 100% |  | 2026-03-26 09:00 | 2026-03-26 11:00 |  |  | 2h | 2h |
| 607 | 1.283.1 | собрать питатель, ревизия втулок, подшипников, шнеков, шестеренок. Подогнать капролонновые втулки |  | 2h | 2026-03-26 09:00 A | 2026-03-26 11:00 A | 100% |  |  |  | start no earlier than 2026-03-26 09:00 | Тимофеев В | 2h | 2h |
| 608 | 1.284 | пульт управления кондиционером в зоне экструдера- закрепить гофру и заизолировать разрыв гофры, закрепить к стенке |  | 1h | 2026-03-24 08:00 A | 2026-03-24 10:00 A | 100% |  |  |  | start no earlier than 2026-03-24 08:00 | Бобренок В | 1h | 1h |
| 609 | 1.285 | блок питания для весов на жирах развалился, стянуть изолентой |  | 1h | 2026-03-24 08:00 A | 2026-03-24 10:00 A | 100% |  |  |  | start no earlier than 2026-03-24 08:00 | Бобренок В | 1h | 1h |
| 610 | 1.286 | **ремонт /отключить 2 вентилятора охладитель 1 линия** |  | 801d | 2023-06-21 09:00 A | 2026-07-15 18:00 A | 100% |  |  |  |  | Тимофеев В | 12801h | 12801h |
| 611 | 1.286.1 | заказать в зип |  | 6392h | 2023-06-21 09:00 A | 2026-07-15 18:00 A | 100% |  |  |  |  | Шуранов Ю | 6392h | 6392h |
| 612 | 1.286.2 | заменить 2 вентилятора |  | 1h | 2026-04-04 09:00 A | 2026-04-06 10:00 A | 100% |  |  |  |  | Макаревич А | 1h | 1h |
| 613 | 1.287 | демонтаж крышка лотка в проеме между краем площадки вентиляции приточной и проемом ворот вход в кооридор завода навесок |  | 383520min | 2023-06-21 09:00 A | 2026-07-15 18:00 A | 100% |  |  |  |  | Труфанов А | 6392h | 6392h |
| 614 | 1.288 | стук шнек 2 линия - проверить, при необходимости разобрать |  | 3h | 2026-04-27 09:00 A | 2026-04-27 12:00 A | 100% |  |  |  | start no earlier than 2026-04-27 09:00 | Тимофеев В; Бобренок В | 6h | 6h |
| 615 | 1.289 | слить конденсат и продуть все радиаторы компрессор |  | 1h | 2026-03-21 09:00 A | 2026-03-23 10:00 A | 100% |  |  |  | start no earlier than 2026-03-21 09:00 | Дедов В | 1h | 1h |
| 616 | 1.290 | закрепить аварийную кнопку в гидролизатной (фото в чате будет) / пожарный выключатель |  | 1h | 2026-03-22 09:00 A | 2026-03-23 10:00 A | 100% |  |  |  | start no earlier than 2026-03-22 09:00 | Бобренок В | 1h | 1h |
| 617 | 1.291 | кнопки на управление ворот зона жиров поднять и закпепить выше |  | 2h | 2026-03-18 08:00 A | 2026-03-18 11:00 A | 100% |  |  |  | start no earlier than 2026-03-18 08:00 | Макаревич А | 2h | 2h |
| 618 | 1.292 | закрепить все отбойники где завозят навески экструдерщики |  | 2h | 2026-03-18 08:00 A | 2026-03-18 11:00 A | 100% |  |  |  | start no earlier than 2026-03-18 08:00 | Макаревич А | 2h | 2h |
| 619 | 1.293 | закрыить все электро шкафы |  | 30min | 2026-03-17 08:00 A | 2026-03-17 09:30 A | 100% |  |  |  | start no earlier than 2026-03-17 08:00 | Бобренок В | 0.5h | 0.5h |
| 620 | 1.294 | поломоечная машинка устранить течь |  | 1h | 2026-03-17 08:00 A | 2026-03-17 10:00 A | 100% |  |  |  | start no earlier than 2026-03-17 08:00 | Бобренок В | 1h | 1h |
| 621 | 1.295 | закрыить крышку на пробниках, задняя стенка прикрутить |  | 30min | 2026-03-17 08:00 A | 2026-03-17 09:30 A | 100% |  |  |  | start no earlier than 2026-03-17 08:00 | Бобренок В | 0.5h | 0.5h |
| 622 | 1.296 | продувка кабельного лотка |  | 2h | 2026-03-18 09:00 A | 2026-03-18 11:00 A | 100% |  |  |  | start no earlier than 2026-03-18 09:00 | Труфанов А; Некрасов А | 4h | 4h |
| 623 | 1.297 | монтаж крючков под халаты. Получить у мастера |  | 1h | 2026-03-17 08:00 A | 2026-03-17 10:00 A | 100% |  |  |  | start no earlier than 2026-03-17 08:00 | Бобренок В | 1h | 1h |
| 624 | 1.298 | **установить расходомеры пара на ПГ** |  | 0.38d | 2026-04-01 09:00 | 2026-04-01 12:00 |  | 0.38d | 2026-10-12 09:00 |  |  |  | 3h |  |
| 625 | 1.298.1 | монтаж 1 линия расходомер / кабель / блок питания | manual | 3h | 2026-10-12 09:00 A | 2026-10-12 12:00 |  | 3h |  |  | start no earlier than 2026-10-12 09:00 | Некрасов А | 3h |  |
| 626 | 1.299 | **монтаж регистратор данных линия 1 и 2:** |  | 0.25d | 2026-03-18 09:00 A | 2026-03-18 11:00 A | 100% |  |  |  |  |  | 2h | 2h |
| 627 | 1.299.1 | подключение линия 1 |  | 2h | 2026-03-18 09:00 A | 2026-03-18 11:00 A | 100% |  |  |  | start no earlier than 2026-03-18 09:00 | Домоводов К | 2h | 2h |
| 628 | 1.300 | бойлер на экструдере - установить трубку на клапан сброса и смонтировать её ы раковину |  | 1h | 2026-03-14 09:00 A | 2026-03-16 10:00 A | 100% |  |  |  | start no earlier than 2026-03-14 09:00 | Бундин В | 1h | 1h |
| 629 | 1.301 | смазать дверную ручку (входную) |  | 1h | 2026-03-15 09:00 A | 2026-03-16 10:00 A | 100% |  |  |  | start no earlier than 2026-03-15 09:00 | Бундин В | 1h | 1h |
| 630 | 1.302 | сделать ручку дверную (вход на упаковку) |  | 1h | 2026-03-15 09:00 A | 2026-03-16 10:00 A | 100% |  |  |  | start no earlier than 2026-03-15 09:00 | Бундин В | 1h | 1h |
| 631 | 1.303 | дверная ручка в туалет (подкрутить) |  | 1h | 2026-03-15 09:00 A | 2026-03-16 10:00 A | 100% |  |  |  | start no earlier than 2026-03-15 09:00 | Бундин В | 1h | 1h |
| 632 | 1.304 | штабелер экструдера натянуть цепь |  | 1h | 2026-03-13 08:00 A | 2026-03-13 10:00 A | 100% |  |  |  | start no earlier than 2026-03-13 08:00 | Дедов В | 1h | 1h |
| 633 | 1.305 | установить розетку возле роутера. Место монтажа фото от Шуранова |  | 2h | 2026-03-14 09:00 A | 2026-03-16 11:00 A | 100% |  |  |  | start no earlier than 2026-03-14 09:00 | Бундин В | 2h | 2h |
| 634 | 1.306 | линия 1 лоток охладителя под конвейером (по фото) - поднять на 3см, что бы не цеплял сетку. Снять / пересверлить крепеж |  | 2h | 2026-03-14 09:00 A | 2026-03-16 11:00 A | 100% |  |  |  | start no earlier than 2026-03-14 09:00 | Бундин В | 2h | 2h |
| 635 | 1.307 | изготовтиь полочку для роутера с "крышей. Двух скатная". |  | 4h | 2026-03-14 09:00 A | 2026-03-16 13:00 A | 100% |  |  |  | start no earlier than 2026-03-14 09:00 | Бундин В | 4h | 4h |

| ID | WBS | Task | Type | Duration | Start | Finish | Predecessors | Complete | Remaining | Actual start | Total slack | Constraint | Resources | Work | Actual work |
| --- | --- | --- | --- | --- | --- | --- | --- | --- | --- | --- | --- | --- | --- | --- | --- |
| 636 | 1.308 | **АКБ штабелер на навесках** |  | 43d | 2026-03-13 08:00 A | 2026-05-12 18:00 A |  | 100% |  |  |  |  |  | 2h | 2h |
| 637 | 1.308.1 | заявка на новые АКБ, отправить | milestone | 0d | 2026-03-13 08:00 A | 2026-03-13 08:00 A |  | 100% |  |  |  | start no earlier than 2026-03-13 08:00 | Шуранов Ю |  |  |
| 638 | 1.308.2 | получить счет | milestone | 0d | 2026-03-16 09:00 A | 2026-03-16 09:00 A | 637 | 100% |  |  |  | start no earlier than 2026-03-16 09:00 | Шуранов Ю |  |  |
| 639 | 1.308.3 | доставыка\ |  | 40d | 2026-03-16 09:00 A | 2026-05-12 18:00 A | 638 | 100% |  |  |  | start no earlier than 2026-03-13 08:00 |  |  |  |
| 640 | 1.308.4 | замена (получить на складе 2 АКБ и поменять на штабелере) |  | 2h | 2026-03-25 09:00 A | 2026-03-25 11:00 A |  | 100% |  |  |  | start no earlier than 2026-03-25 09:00 | Бобренок В | 2h | 2h |
| 641 | 1.309 | замена шнеков на 1 линии по команде. Подготовить / старые увезти |  | 1h | 2026-03-14 09:00 A | 2026-03-16 10:00 A |  | 100% |  |  |  | start no earlier than 2026-03-14 09:00 | Бобренок В; Некрасов А | 2h | 2h |
| 642 | 1.310 | **установить принтер датаматрикс на пролистыватель** |  | 151d? | 2026-03-13 09:00 A | 2026-09-30 18:00 |  | 20% | 120.8d? |  | 116.59d |  |  | 11h | 3h |
| 643 | 1.310.1 | разработка крепления принтера |  | 1h | 2026-03-13 09:00 A | 2026-03-13 10:00 A |  | 100% |  |  |  | start no earlier than 2026-03-13 08:00 | Зорькин В; Шуранов Ю | 2h | 2h |
| 644 | 1.310.2 | настройка ПО с агрегатором |  | 1d? | 2026-09-30 09:00 | 2026-09-30 18:00 |  |  |  |  | 116.59d | start no earlier than 2026-09-30 09:00 | Домоводов К | 8h |  |
| 645 | 1.310.3 | изучение документации |  | 1h | 2026-05-28 09:00 A | 2026-05-28 10:00 A |  | 100% |  |  |  | start no earlier than 2026-05-28 09:00 | Домоводов К | 1h | 1h |
| 646 | 1.311 | **заменить мятый профлист коррдиор подачи навесок** |  | 32.25d | 2026-03-13 09:00 A | 2026-04-28 11:00 A |  | 100% |  |  |  |  |  | 85h | 85h |
| 647 | 1.311.1 | расчет материал / заявка |  | 1h | 2026-03-13 09:00 A | 2026-03-13 10:00 A |  | 100% |  |  |  | start no earlier than 2026-03-13 09:00 | Шуранов Ю | 1h | 1h |
| 648 | 1.311.2 | доставка |  | 10d | 2026-03-13 10:00 A | 2026-03-27 10:00 A | 647 | 100% |  |  |  | start no earlier than 2026-03-12 08:00 | Карабанов | 80h | 80h |
| 649 | 1.311.3 | замена |  | 2h | 2026-04-28 09:00 A | 2026-04-28 11:00 A | 648 | 100% |  |  |  | start no earlier than 2026-04-28 09:00 | Некрасов А; Труфанов А | 4h | 4h |
| 650 | 1.312 | **заменить плинтус стена вдольпечи 2** |  | 11.06d? | 2026-03-26 09:00 | 2026-04-10 09:30 |  | 91% | 1d? | 2026-03-13 09:00 |  |  |  | 96.5h | 80.5h |
| 651 | 1.312.1 | заявка |  | 30min | 2026-03-13 09:00 A | 2026-03-13 09:30 A |  | 100% |  |  |  | start no earlier than 2026-03-13 09:00 | Шуранов Ю | 0.5h | 0.5h |
| 652 | 1.312.2 | доставка |  | 10d | 2026-03-13 09:30 A | 2026-03-27 09:30 A | 651 | 100% |  |  |  | start no earlier than 2026-03-12 08:00 | Карабанов | 80h | 80h |
| 653 | 1.312.3 | замена |  | 1d? | 2026-10-12 09:00 | 2026-10-12 18:00 | 652 |  |  |  | 107.59d | start no earlier than 2026-10-12 09:00 | Некрасов А; Олег | 16h |  |
| 654 | 1.313 | **заменить аллюминевый скотч на швах вентиляции** |  | 18.25d | 2026-03-12 09:00 A | 2026-04-07 11:00 A |  | 100% |  |  |  |  |  | 82.33h | 82.33h |
| 655 | 1.313.1 | заявка |  | 20min | 2026-03-12 09:00 A | 2026-03-12 09:20 A |  | 100% |  |  |  | start no earlier than 2026-03-12 08:00 | Зорькин В | 0.33h | 0.33h |
| 656 | 1.313.2 | доставка |  | 10d | 2026-03-12 09:20 A | 2026-03-26 09:20 A | 655 | 100% |  |  |  | start no earlier than 2026-03-12 08:00 | Карабанов | 80h | 80h |
| 657 | 1.313.3 | замена (также на улитках печей, циклона, стык регулировки шибера улитки) | manual | 2h | 2026-04-07 09:00 A | 2026-04-07 11:00 A | 656 | 100% |  |  |  | start no earlier than 2026-04-07 09:00 | Бундин В | 2h | 2h |
| 658 | 1.314 | **замена скорлупа утеплитель горячих труб печи** |  | 16d | 2026-03-13 09:00 A | 2026-04-05 11:00 A |  | 100% |  |  |  |  |  | 83h | 83h |
| 659 | 1.314.1 | заявка |  | 1h | 2026-03-13 09:00 A | 2026-03-13 10:00 A |  | 100% |  |  |  | start no earlier than 2026-03-13 09:00 | Зорькин В | 1h | 1h |
| 660 | 1.314.2 | доставка |  | 10d | 2026-03-13 10:00 A | 2026-03-27 10:00 A | 659 | 100% |  |  |  | start no earlier than 2026-03-12 08:00 | Карабанов | 80h | 80h |
| 661 | 1.314.3 | замена | manual | 2h | 2026-04-05 09:00 A | 2026-04-05 11:00 A | 660 | 100% |  |  |  | start no earlier than 2026-04-05 09:00 | Бундин В | 2h | 2h |

| ID | WBS | Task | Type | Duration | Start | Finish | Predecessors | Complete | Actual start | Actual finish | Constraint | Resources | Work | Actual work |
| --- | --- | --- | --- | --- | --- | --- | --- | --- | --- | --- | --- | --- | --- | --- |
| 662 | 1.315 | **купить прокатный запайщик** |  | 85.12d? | 2026-03-16 09:00 A | 2026-07-13 10:00 A |  | 100% |  |  |  |  | 11h | 11h |
| 663 | 1.315.1 | поиск / заявка |  | 2h | 2026-03-16 09:00 A | 2026-03-16 11:00 A |  | 100% |  |  | start no earlier than 2026-03-16 09:00 | Зорькин В | 2h | 2h |
| 664 | 1.315.2 | получить счет + договор |  | 1h | 2026-05-12 09:00 A | 2026-05-12 10:00 A | 663 | 100% |  |  | start no earlier than 2026-05-12 09:00 | Зорькин В | 1h | 1h |
| 665 | 1.315.3 | оплата | milestone | 0d | 2026-05-12 10:00 A | 2026-05-12 10:00 A | 664 | 100% |  |  | start no earlier than 2026-03-12 08:00 | Домоводов К |  |  |
| 666 | 1.315.4 | доставка |  | 40d | 2026-05-12 10:00 A | 2026-07-13 10:00 A | 665 | 100% |  |  | start no earlier than 2026-03-12 08:00 |  |  |  |
| 667 | 1.315.5 | приемка / сборка |  | 1d? | 2026-06-29 09:00 A | 2026-06-29 18:00 A | 666 | 100% |  |  | start no earlier than 2026-03-12 08:00 | Тимофеев В | 8h | 8h |
| 668 | 1.316 | сборка рохли 2шт |  | 1h | 2026-03-13 09:00 A | 2026-03-13 10:00 A |  | 100% |  |  | start no earlier than 2026-03-13 09:00 | Тимофеев В | 1h | 1h |
| 669 | 1.317 | изготовить герметичную крышку на подачку гидролизата |  | 2h | 2026-05-20 09:00 A | 2026-05-20 11:00 A |  | 100% |  |  | start no earlier than 2026-05-20 09:00 | Дедов В; Шуранов Ю | 4h | 4h |
| 670 | 1.318 | **установить крышку печи торцевую с стороны экструдера на шарниры** |  | 12.5d | 2026-03-25 09:00 | 2026-04-10 13:00 |  | 100% | 2026-03-06 09:00 | 2026-09-11 13:00 |  |  | 88.08h | 88.08h |
| 671 | 1.318.1 | заказ шарниры |  | 5min | 2026-03-06 09:00 A | 2026-03-06 09:05 A |  | 100% |  |  | start no earlier than 2026-03-06 08:00 | Шуранов Ю | 0.08h | 0.08h |
| 672 | 1.318.2 | доставка |  | 10d | 2026-03-06 09:05 A | 2026-03-20 09:05 A | 671 | 100% |  |  | start no earlier than 2026-03-06 08:00 | Карабанов | 80h | 80h |
| 673 | 1.318.3 | монтаж линия 1 |  | 4h | 2026-05-13 09:00 A | 2026-05-13 13:00 A | 672 | 100% |  |  | start no earlier than 2026-05-13 09:00 | Бобренок В | 4h | 4h |
| 674 | 1.318.4 | монтаж линия 1 и 2 печи (чтобы открывалась и не мешала открыванию лотку сверху) | manual | 4h | 2026-09-11 09:00 A | 2026-09-11 13:00 A | 672 | 100% |  |  | start no earlier than 2026-09-11 09:00 | Макаревич А | 4h | 4h |
| 675 | 1.319 | **квадропак заменить пружины на лапках** |  | 10.12d | 2026-03-18 09:00 A | 2026-04-01 10:00 A |  | 100% |  |  |  |  | 3h | 3h |
| 676 | 1.319.1 | попытка заменить |  | 1h | 2026-03-18 09:00 A | 2026-03-18 10:00 A |  | 100% |  |  | start no earlier than 2026-03-18 09:00 | Дедов В | 1h | 1h |
| 677 | 1.319.2 | проврить ролики на износ / заказать |  | 1h | 2026-03-19 09:00 A | 2026-03-19 10:00 A |  | 100% |  |  | start no earlier than 2026-03-19 08:00 | Зорькин В | 1h | 1h |
| 678 | 1.319.3 | проверить / разрабоать полпн прижимная пластина регулировка |  | 1h | 2026-04-01 09:00 A | 2026-04-01 10:00 A |  | 100% |  |  | start no earlier than 2026-04-01 09:00 | Шуранов Ю | 1h | 1h |
| 679 | 1.320 | **звонок на ворота по привозу навесок** |  | 37.25d | 2026-03-05 09:00 A | 2026-04-27 11:00 A |  | 100% |  |  |  |  | 82.5h | 82.5h |
| 680 | 1.320.1 | заявка на сирену / звонок |  | 30min | 2026-03-05 09:00 A | 2026-03-05 09:30 A |  | 100% |  |  | start no earlier than 2026-03-05 09:00 | Шуранов Ю | 0.5h | 0.5h |
| 681 | 1.320.2 | доставка |  | 10d | 2026-03-12 09:00 A | 2026-03-25 18:00 A | 680 | 100% |  |  | start no earlier than 2026-03-12 08:00 | Карабанов | 80h | 80h |
| 682 | 1.320.3 | монтаж кнопка и звонок на складе (кнопку устанавливаем справа от ворот- звонок возле ВРУ слева |  | 2h | 2026-04-25 09:00 A | 2026-04-27 11:00 A | 681 | 100% |  |  | start no earlier than 2026-04-25 09:00 | Бобренок В | 2h | 2h |
| 683 | 1.321 | **установить профлист на левую стену** |  | 47d? | 2026-03-12 09:00 A | 2026-05-15 18:00 A |  | 100% |  |  |  |  | 185.5h | 185.5h |
| 684 | 1.321.1 | расчет материал с Олегом |  | 1h | 2026-03-12 09:00 A | 2026-03-12 10:00 A |  | 100% |  |  | start no earlier than 2026-03-12 09:00 | Шуранов Ю | 1h | 1h |
| 685 | 1.321.2 | заявка |  | 30min | 2026-03-19 09:00 A | 2026-03-19 09:30 A | 684 | 100% |  |  | start no earlier than 2026-03-19 09:00 | Шуранов Ю | 0.5h | 0.5h |
| 686 | 1.321.3 | доставка |  | 10d | 2026-03-19 09:30 A | 2026-04-02 09:30 A | 685 | 100% |  |  | start no earlier than 2026-03-04 08:00 | Карабанов | 80h | 80h |
| 687 | 1.321.4 | монтаж пробный ряд |  | 4h | 2026-04-22 09:00 A | 2026-04-22 13:00 A |  | 100% |  |  | start no earlier than 2026-04-22 09:00 | Некрасов А; Олег; Труфанов А | 12h | 12h |
| 688 | 1.321.5 | монтаж каркас |  | 1d? | 2026-04-23 14:00 A | 2026-04-24 13:00 A | 686, 687FS+1d | 100% |  |  | start no earlier than 2026-04-22 09:00 | Некрасов А; Труфанов А | 16h | 16h |
| 689 | 1.321.6 | монтаж лист |  | 6h | 2026-04-28 09:00 A | 2026-04-28 16:00 A | 688 | 100% |  |  | start no earlier than 2026-04-28 09:00 | Некрасов А; Труфанов А | 12h | 12h |
| 690 | 1.321.7 | монтаж уровень 2 |  | 4d | 2026-05-12 09:00 A | 2026-05-15 18:00 A |  | 100% |  |  | start no earlier than 2026-05-12 08:00 | Некрасов А; Труфанов А | 64h | 64h |

| ID | WBS | Task | Type | Duration | Start | Finish | Predecessors | Complete | Constraint | Resources | Work | Actual work |
| --- | --- | --- | --- | --- | --- | --- | --- | --- | --- | --- | --- | --- |
| 691 | 1.322 | **модернизация вентиляции** |  | 135.5d | 2026-03-13 09:00 A | 2026-09-15 13:00 A |  | 100% |  |  | 14.5h | 14.5h |
| 692 | 1.322.1 | заявка врезки для отбора проб |  | 15min | 2026-08-21 09:00 A | 2026-08-21 09:15 A |  | 100% | start no earlier than 2026-08-21 09:00 | Зорькин В | 0.25h | 0.25h |
| 693 | 1.322.2 | контроль доставки врезки для отбора проб |  | 15min | 2026-09-09 09:00 A | 2026-09-09 09:15 A | 692FS+7d | 100% | start no earlier than 2026-09-09 09:00 | Зорькин В | 0.25h | 0.25h |
| 694 | 1.322.3 | монтаж врезки для отбора проб |  | 4h | 2026-09-15 09:00 A | 2026-09-15 13:00 A | 693FS+1d | 100% | start no earlier than 2026-09-15 09:00 | Некрасов А; Труфанов А | 8h | 8h |
| 695 | 1.322.4 | составить схему, расчет |  | 2h | 2026-03-13 09:00 A | 2026-03-13 11:00 A |  | 100% | start no earlier than 2026-03-13 09:00 | Домоводов К | 2h | 2h |
| 696 | 1.322.5 | монтаж вентиляторов |  | 4h | 2026-05-12 09:00 A | 2026-05-12 13:00 A |  | 100% | start no earlier than 2026-05-12 08:00 | оплот | 4h | 4h |
| 697 | 1.323 | **заменаить фитинги на жирах** |  | 44.12d | 2026-02-19 09:00 A | 2026-04-22 10:00 A |  | 100% |  |  | 81.5h | 81.5h |
| 698 | 1.323.1 | заявка |  | 30min | 2026-02-19 09:00 A | 2026-02-19 09:30 A |  | 100% | start no earlier than 2026-02-19 09:00 | Шуранов Ю | 0.5h | 0.5h |
| 699 | 1.323.2 | доставка |  | 10d | 2026-02-19 09:30 A | 2026-03-05 09:30 A | 698 | 100% |  | Карабанов | 80h | 80h |
| 700 | 1.323.3 | контроль поставки | milestone | 0d | 2026-03-12 08:00 A | 2026-03-12 08:00 A | 699 | 100% | start no earlier than 2026-03-12 08:00 | Шуранов Ю |  |  |
| 701 | 1.323.4 | контроль. Пришли опять не те | milestone | 0min | 2026-03-12 09:00 A | 2026-03-12 09:00 A | 699, 700 | 100% | start no earlier than 2026-03-12 09:00 | Зорькин В |  |  |
| 702 | 1.323.5 | контроль | milestone | 0d | 2026-04-01 09:00 A | 2026-04-01 09:00 A |  | 100% | start no earlier than 2026-04-01 09:00 | Зорькин В |  |  |
| 703 | 1.323.6 | замена |  | 1h | 2026-04-22 09:00 A | 2026-04-22 10:00 A | 701FS+2d | 100% | start no earlier than 2026-04-22 09:00 | Бобренок В | 1h | 1h |
| 704 | 1.324 | **жиротопка замена воздухоотводчиков** |  | 24.12d | 2026-03-04 09:00 A | 2026-04-07 10:00 A |  | 100% |  |  | 41.25h | 41.25h |
| 705 | 1.324.1 | заявка |  | 15min | 2026-03-04 09:00 A | 2026-03-04 09:15 A |  | 100% | start no earlier than 2026-03-04 09:00 | Зорькин В | 0.25h | 0.25h |
| 706 | 1.324.2 | доставка |  | 5d | 2026-03-04 09:15 A | 2026-03-11 09:15 A | 705 | 100% | start no earlier than 2026-02-27 08:00 | Карабанов | 40h | 40h |
| 707 | 1.324.3 | замена |  | 1h | 2026-04-07 09:00 A | 2026-04-07 10:00 A | 706 | 100% | start no earlier than 2026-04-07 09:00 | Бундин В | 1h | 1h |
| 708 | 1.325 | **увеличить освещение в зоне квадропака** |  | 11.12d | 2026-03-04 09:00 A | 2026-03-19 10:00 A |  | 100% |  |  | 83.5h | 83.5h |
| 709 | 1.325.1 | составить список мматериал для монтажа |  | 30min | 2026-03-04 09:00 A | 2026-03-04 09:30 A |  | 100% | start no earlier than 2026-03-04 09:00 | Зорькин В; Шуранов Ю | 1h | 1h |
| 710 | 1.325.2 | заявка трос, светильники |  | 30min | 2026-03-04 09:30 A | 2026-03-04 10:00 A | 709 | 100% | start no earlier than 2026-02-27 08:00 | Шуранов Ю | 0.5h | 0.5h |
| 711 | 1.325.3 | доставка |  | 10d | 2026-03-05 10:00 A | 2026-03-19 10:00 A | 710FS+1d | 100% | start no earlier than 2026-02-27 08:00 | Карабанов | 80h | 80h |
| 712 | 1.325.4 | монтаж |  | 2h | 2026-03-06 09:00 A | 2026-03-06 11:00 A |  | 100% | start no earlier than 2026-03-06 09:00 | Бобренок В | 2h | 2h |
| 713 | 1.326 | **установить орг стекло/нерж на обратный ход ленты на раму конвейера** |  | 38.25d | 2026-03-03 09:00 A | 2026-04-24 11:00 A |  | 100% |  |  | 83.5h | 83.5h |
| 714 | 1.326.1 | заявка нерж |  | 30min | 2026-03-03 09:00 A | 2026-03-03 09:30 A |  | 100% | start no earlier than 2026-03-03 09:00 | Зорькин В | 0.5h | 0.5h |
| 715 | 1.326.2 | доставка |  | 10d | 2026-03-03 09:30 A | 2026-03-17 09:30 A | 714 | 100% | start no earlier than 2026-03-02 09:00 | Карабанов | 80h | 80h |
| 716 | 1.326.3 | подготовка материала в размер по аналогии 2 линии |  | 1h | 2026-04-15 09:00 A | 2026-04-15 10:00 A | 715 | 100% | start no earlier than 2026-04-15 09:00 | Бундин В | 1h | 1h |
| 717 | 1.326.4 | установка на остановке 1 линии (переустановить) |  | 2h | 2026-04-24 09:00 A | 2026-04-24 11:00 A |  | 100% | start no earlier than 2026-04-24 09:00 | Бобренок В | 2h | 2h |

| ID | WBS | Task | Duration | Start | Finish | Predecessors | Complete | Constraint | Resources | Work | Actual work |
| --- | --- | --- | --- | --- | --- | --- | --- | --- | --- | --- | --- |
| 718 | 1.327 | **установить роутер в зону экструдера для регистрации данных** | 2.12d | 2026-03-02 09:00 A | 2026-03-04 10:00 A |  | 100% |  |  | 10.17h | 10.17h |
| 719 | 1.327.1 | монтаж кабель / розетка, роутер | 4h | 2026-03-02 09:00 A | 2026-03-02 13:00 A |  | 100% | start no earlier than 2026-03-02 09:00 | Некрасов А; Труфанов А | 8h | 8h |
| 720 | 1.327.2 | Монтаж розетки для роутера | 1h | 2026-03-03 09:00 A | 2026-03-03 10:00 A |  | 100% | start no earlier than 2026-03-03 09:00 | Тимофеев В | 1h | 1h |
| 721 | 1.327.3 | Заявка Айтишнику на монтаж наконечников | 10min | 2026-03-03 09:00 A | 2026-03-03 09:10 A |  | 100% | start no earlier than 2026-03-03 09:00 | Зорькин В | 0.17h | 0.17h |
| 722 | 1.327.4 | Монтаж штекеров на кабель | 1h | 2026-03-04 09:00 A | 2026-03-04 10:00 A |  | 100% | start no earlier than 2026-03-04 09:00 | Коленкоров | 1h | 1h |
| 723 | 1.328 | **ремонт приточной вентиляции** | 47.25d | 2026-02-26 09:00 A | 2026-05-04 11:00 A |  | 100% |  |  | 334.5h | 334.5h |
| 724 | 1.328.1 | заявка калорифер | 30min | 2026-03-04 09:00 A | 2026-03-04 09:30 A |  | 100% | start no earlier than 2026-03-04 09:00 | Зорькин В | 0.5h | 0.5h |
| 725 | 1.328.2 | доставка | 10d | 2026-03-04 09:30 A | 2026-03-20 09:30 A | 724 | 100% |  | Карабанов | 80h | 80h |
| 726 | 1.328.3 | замена калорифер | 4h | 2026-03-11 09:00 A | 2026-03-11 13:00 A |  | 100% | start no earlier than 2026-03-11 09:00 | Некрасов А; Труфанов А | 8h | 8h |
| 727 | 1.328.4 | дать фото насоса | 20min | 2026-02-26 09:00 A | 2026-02-26 09:20 A |  | 100% | start no earlier than 2026-02-26 08:00 | Бундин В | 0.33h | 0.33h |
| 728 | 1.328.5 | заявка насос вода | 30min | 2026-03-02 09:30 A | 2026-03-02 10:00 A | 724, 727 | 100% | start no earlier than 2026-02-26 08:00 | Зорькин В | 0.5h | 0.5h |
| 729 | 1.328.6 | доставка | 10d | 2026-03-02 10:00 A | 2026-03-16 10:00 A | 728 | 100% | start no earlier than 2026-02-26 08:00 | Карабанов | 80h | 80h |
| 730 | 1.328.7 | контроль доставки насос и заслонка | 10min | 2026-03-24 09:00 A | 2026-03-24 09:10 A |  | 100% | start no earlier than 2026-03-24 08:00 | Зорькин В | 0.17h | 0.17h |
| 731 | 1.328.8 | замена насоса | 1h | 2026-03-25 09:10 A | 2026-03-25 10:10 A | 730FS+1d | 100% | start no earlier than 2026-03-24 09:00 | Труфанов А | 1h | 1h |
| 732 | 1.328.9 | заявка привод заслонки | 30min | 2026-03-04 09:00 A | 2026-03-04 09:30 A | 728 | 100% | start no earlier than 2026-03-04 09:00 | Зорькин В | 0.5h | 0.5h |
| 733 | 1.328.10 | доставка | 10d | 2026-03-04 09:30 A | 2026-03-18 09:30 A | 732 | 100% | start no earlier than 2026-02-26 08:00 | Карабанов | 80h | 80h |
| 734 | 1.328.11 | замена привода заслонки | 1h | 2026-05-04 09:00 A | 2026-05-04 10:00 A | 730FS+1d | 100% | start no earlier than 2026-05-04 09:00 | Бобренок В | 1h | 1h |
| 735 | 1.328.12 | заявка фильтры на приточная вентиляция | 30min | 2026-03-04 09:00 A | 2026-03-04 09:30 A |  | 100% | start no earlier than 2026-03-04 09:00 | Зорькин В | 0.5h | 0.5h |
| 736 | 1.328.13 | доставка | 10d | 2026-03-04 09:30 A | 2026-03-18 09:30 A | 735 | 100% | start no earlier than 2026-02-27 08:00 | Карабанов | 80h | 80h |
| 737 | 1.328.14 | замена | 2h | 2026-05-04 09:00 A | 2026-05-04 11:00 A | 736 | 100% | start no earlier than 2026-05-04 09:00 | Некрасов А | 2h | 2h |
| 738 | 1.329 | **монтаж регистратор данных линия 1 и 2:** | 1.12d | 2026-02-24 09:00 A | 2026-02-25 10:00 A |  | 100% |  |  | 5h | 5h |
| 739 | 1.329.1 | установить розетку и автомат для для блока питания в ШУ экструдера, без подключения | 2h | 2026-02-24 09:00 A | 2026-02-24 11:00 A |  | 100% | start no earlier than 2026-02-24 09:00 | Дедов В | 2h | 2h |
| 740 | 1.329.2 | монтаж безподключения кабель RS485 по аналогии с линия 3 - только часотный привод. На складе. | 1h | 2026-02-24 09:00 A | 2026-02-24 10:00 A |  | 100% | start no earlier than 2026-02-24 09:00 | Дедов В | 1h | 1h |
| 741 | 1.329.3 | подключение розеток для блока питания в ШУ | 1h | 2026-02-25 09:00 A | 2026-02-25 10:00 A |  | 100% | start no earlier than 2026-02-25 09:00 | Некрасов А | 1h | 1h |
| 742 | 1.329.4 | монтаж пультов управления и индикации регистратор, по аналогии с линия 3 | 1h | 2026-02-25 09:00 A | 2026-02-25 10:00 A |  | 100% | start no earlier than 2026-02-25 09:00 | Некрасов А | 1h | 1h |
| 743 | 1.330 | заменить пластик втулку на металл деталь уплотнение вала прекондицинера 2 линия | 1d? | 2025-09-08 09:00 A | 2025-09-08 18:00 A |  | 100% | start no earlier than 2025-09-08 09:00 |  |  |  |

| ID | WBS | Task | Duration | Start | Finish | Predecessors | Complete | Actual finish | Total slack | Constraint | Resources | Work | Actual work |
| --- | --- | --- | --- | --- | --- | --- | --- | --- | --- | --- | --- | --- | --- |
| 744 | 1.331 | **баки жир 2 линия устноавить наконечники. От 23.05.25** | 265.25d | 2025-04-16 09:00 A | 2026-04-22 11:00 A |  | 100% |  |  |  |  | 42.5h | 42.5h |
| 745 | 1.331.1 | заявка на наконечнки | 30min | 2025-04-16 09:00 A | 2025-04-16 09:30 A |  | 100% |  |  | start no earlier than 2025-04-16 09:00 | Зорькин В | 0.5h | 0.5h |
| 746 | 1.331.2 | доставка | 5d | 2025-04-16 09:30 A | 2025-04-23 09:30 A | 745 | 100% |  |  | start no earlier than 2025-04-14 09:00 | Мультан | 40h | 40h |
| 747 | 1.331.3 | ТО каблей, клемников | 2h | 2026-04-22 09:00 A | 2026-04-22 11:00 A | 746 | 100% |  |  | start no earlier than 2026-04-22 09:00 | Труфанов А | 2h | 2h |
| 748 | 1.332 | **установить фильтры на жир** | 89.12d? | 2025-05-14 09:00 A | 2025-09-16 10:00 A |  | 100% |  |  |  |  | 50h | 50h |
| 749 | 1.332.1 | изготовить переходники токарь разместить | 1h | 2025-09-08 09:00 A | 2025-09-08 10:00 A |  | 100% |  |  | start no earlier than 2025-09-08 09:00 | Зорькин В | 1h | 1h |
| 750 | 1.332.2 | контроль доставки | 5d | 2025-09-08 10:00 A | 2025-09-15 10:00 A | 749 | 100% |  |  | start no earlier than 2025-09-08 09:00 | Зорькин В | 40h | 40h |
| 751 | 1.332.3 | замена | 1d? | 2025-09-15 10:00 A | 2025-09-16 10:00 A | 750 | 100% |  |  | start no earlier than 2025-09-08 09:00 | Тимофеев В | 8h | 8h |
| 752 | 1.332.4 | установить фильтры на жир 2шт через краны на тройник | 1h | 2025-05-14 09:00 A | 2025-05-14 10:00 A |  | 100% |  |  | start no earlier than 2025-05-14 09:00 | Тимофеев В | 1h | 1h |
| 753 | 1.333 | **палетные ворота подача навесок + подача жир** | 14d? | 2025-07-17 09:00 A | 2025-08-05 18:00 A |  | 100% |  |  |  |  | 32h | 32h |
| 754 | 1.333.1 | подготовить чертеж | 1d? | 2025-07-17 09:00 A | 2025-07-17 18:00 A |  | 100% |  |  | start no earlier than 2025-07-17 09:00 | Зорькин В | 8h | 8h |
| 755 | 1.333.2 | сборка рамы | 2d | 2025-07-25 09:00 A | 2025-07-28 18:00 A | 754 | 100% |  |  | start no earlier than 2025-07-25 09:00 | Некрасов А | 16h | 16h |
| 756 | 1.333.3 | монтаж | 1d? | 2025-08-05 09:00 A | 2025-08-05 18:00 A | 755 | 100% |  |  | start no earlier than 2025-08-05 09:00 | Некрасов А | 8h | 8h |
| 757 | 1.334 | защита подшипников паронтом + подготовка | 4h | 2025-06-18 09:00 A | 2025-06-18 13:00 A |  | 100% |  |  | start no earlier than 2025-06-18 09:00 | Тимофеев В | 4h | 4h |
| 758 | 1.335 | **квадропак ТО + составить карту смазки и ТО + составить список ЗИП** | 0.5d | 2025-04-02 09:00 A | 2025-04-02 13:00 A |  | 100% |  |  |  |  | 4h | 4h |
| 759 | 1.335.1 | оформить карту ТО | 4h | 2025-04-02 09:00 A | 2025-04-02 13:00 A |  | 100% |  |  | start no earlier than 2025-04-02 09:00 | Зорькин В | 4h | 4h |
| 760 | 1.336 | **квадропак некрасивый шов - золотинка** | 104.25d | 2025-01-13 09:00 A | 2025-06-06 11:00 |  | 100% | 2025-04-17 16:30 |  |  |  | 8h | 8h |
| 761 | 1.336.1 | **изготовление термоножа с вставкойвставкой** | 0.12d | 2025-01-13 09:00 A | 2025-01-13 10:00 A |  | 100% |  |  |  |  | 1h | 1h |
| 762 | 1.336.1.1 | чертеж | 1h | 2025-01-13 09:00 A | 2025-01-13 10:00 A |  | 100% |  |  | start no earlier than 2025-01-13 09:00 | Зорькин В | 1h | 1h |
| 763 | 1.336.2 | **установка тефлона на термонож** | 42.25d | 2025-04-17 09:00 A | 2025-06-06 11:00 |  | 100% | 2025-04-17 16:30 |  |  |  | 7h | 7h |
| 764 | 1.336.2.1 | разработать метод крепления | 30min | 2025-04-17 09:00 A | 2025-04-17 09:30 A |  | 100% |  |  | start no earlier than 2025-04-17 09:00 | Зорькин В; Шуранов Ю | 1h | 1h |
| 765 | 1.336.2.2 | чертеж | 4h | 2025-04-17 09:30 A | 2025-04-17 14:30 A | 764 | 100% |  |  | start no earlier than 2025-01-17 09:00 | Зорькин В | 4h | 4h |
| 766 | 1.336.2.3 | орг изготовление деталей | 2h | 2025-04-17 14:30 A | 2025-04-17 16:30 A | 765 | 100% |  |  | start no earlier than 2025-04-16 09:00 | Шуранов Ю | 2h | 2h |
| 767 | 1.337 | **режет кабель ЛУКАС силовой в лотке эстакада у КПП** | 444.5d | 2024-08-02 09:00 | 2026-04-16 13:00 |  |  |  | 243.09d |  |  | 4.5h |  |
| 768 | 1.337.1 | решение о переговорах ГП | 30min | 2024-08-02 09:00 | 2024-08-02 09:30 |  |  |  | 687.53d | start no earlier than 2024-08-02 09:00 | Домоводов К | 0.5h |  |
| 769 | 1.337.2 | перекладка кабель | 4h | 2026-04-16 09:00 | 2026-04-16 13:00 |  |  |  | 243.09d | start no earlier than 2026-04-16 08:00 | Олег | 4h |  |

| ID | WBS | Task | Duration | Start | Finish | Predecessors | Complete | Total slack | Constraint | Resources | Work | Actual work |
| --- | --- | --- | --- | --- | --- | --- | --- | --- | --- | --- | --- | --- |
| 770 | 1.338 | **ШР2.2 замена автомат на циклон на номинальный** | 5.06d | 2026-04-10 09:00 A | 2026-04-17 09:30 A |  | 100% |  |  |  | 41.5h | 41.5h |
| 771 | 1.338.1 | прорверить какой стоит / заявка по мощности мотора | 30min | 2026-04-10 09:00 A | 2026-04-10 09:30 A |  | 100% |  | start no earlier than 2026-04-10 09:00 | Тимофеев В | 0.5h | 0.5h |
| 772 | 1.338.2 | достьавка | 5d | 2026-04-10 09:30 A | 2026-04-17 09:30 A | 771 | 100% |  | start no earlier than 2024-03-04 09:00 | Малинина М | 40h | 40h |
| 773 | 1.338.3 | замена | 1h | 2026-04-16 09:30 A | 2026-04-16 10:30 A | 772 | 100% |  | start no earlier than 2026-04-06 09:00 | Шуранов Ю | 1h | 1h |
| 774 | 1.339 | **кронштейн фотометки ТЕКО усилить** | 10.12d | 2024-09-11 09:00 A | 2024-09-25 10:00 A |  | 100% |  |  |  | 82h | 82h |
| 775 | 1.339.1 | поиск заявка кронштейна для датчика с регулировкой в3 плоскостях | 1h | 2024-09-11 09:00 A | 2024-09-11 10:00 A |  | 100% |  | start no earlier than 2024-09-11 09:00 | Зорькин В | 1h | 1h |
| 776 | 1.339.2 | доставка | 10d | 2024-09-11 10:00 A | 2024-09-25 10:00 A | 775 | 100% |  | start no earlier than 2024-09-11 09:00 | Мультан | 80h | 80h |
| 777 | 1.339.3 | замена | 1h | 2024-09-21 10:00 A | 2024-09-23 10:00 A | 776 | 100% |  | start no earlier than 2024-09-11 09:00 | Тимофеев В | 1h | 1h |
| 778 | 1.340 | **квадропак греет пневмоцилиндр термоножа** | 14.5d | 2024-09-12 09:00 A | 2024-10-02 13:00 A |  | 100% |  |  |  | 85h | 85h |
| 779 | 1.340.1 | решение о применении теплоизоляц пластины / заявка | 1h | 2024-09-12 09:00 A | 2024-09-12 10:00 A |  | 100% |  | start no earlier than 2024-09-12 09:00 | Зорькин В | 1h | 1h |
| 780 | 1.340.2 | доставка | 10d | 2024-09-12 10:00 A | 2024-09-26 10:00 A | 779 | 100% |  | start no earlier than 2024-09-11 09:00 | Мультан | 80h | 80h |
| 781 | 1.340.3 | замена | 4h | 2024-10-02 09:00 A | 2024-10-02 13:00 A | 780 | 100% |  | start no earlier than 2024-10-02 09:00 | Тимофеев В | 4h | 4h |
| 782 | 1.341 | **ремонт комппрессора - сдать по гарантии** | 739.12d | 2023-10-31 09:00 A | 2026-08-31 10:00 A |  | 100% |  |  |  | 2h | 2h |
| 783 | 1.341.1 | контроль снабжения - отправитьт поставщику | 1h | 2023-10-31 09:00 A | 2023-10-31 10:00 A |  | 100% |  | start no earlier than 2023-10-31 09:00 | Лобанов И | 1h | 1h |
| 784 | 1.341.2 | контроль возврата | 1h | 2026-08-31 09:00 A | 2026-08-31 10:00 A | 783 | 100% |  | start no earlier than 2026-08-31 09:00 | Зорькин В | 1h | 1h |
| 785 | 1.342 | **убрать кабеля с пола на упаковке 1 цех** | 0.02d | 2026-09-01 09:00 | 2026-09-01 09:10 |  |  | 145.57d |  |  | 0.17h |  |
| 786 | 1.342.1 | проверить на актуальность | 10min | 2026-09-01 09:00 | 2026-09-01 09:10 |  |  | 145.57d | start no earlier than 2026-09-01 09:00 | Зорькин В | 0.17h |  |
| 787 | 1.343 | режет металлом изоляцию кабеля в прорходе стены в 1 цех угол комппрессора - обезвредить | 1h | 2023-12-28 09:00 A | 2023-12-28 10:00 A |  | 100% |  | start no earlier than 2023-12-28 09:00 | Бобренок В; Дедов В | 2h | 2h |
| 788 | 1.344 | **убрать кабеля с пола и заменить переноски штатными розетками - участок жира 1 цех** | 0.01d | 2026-09-01 09:00 | 2026-09-01 09:05 |  |  | 145.58d |  |  | 0.08h |  |
| 789 | 1.344.1 | проверить на актуальность | 5min | 2026-09-01 09:00 | 2026-09-01 09:05 |  |  | 145.58d | start no earlier than 2026-09-01 09:00 | Зорькин В | 0.08h |  |
| 790 | 1.345 | изготовить ключь для ТП | 2h | 2023-06-21 09:00 A | 2023-06-21 11:00 A |  | 100% |  | start no earlier than 2023-06-21 09:00 | Домоводов К | 2h | 2h |
| 791 | 1.346 | заменитьт автомат 63С кондиционер 1 цех | 1h | 2023-06-22 09:00 A | 2023-06-22 10:00 A |  | 100% |  | start no earlier than 2023-06-22 09:00 | Тимофеев В | 1h | 1h |
| 792 | 1.347 | **Барабаны 2 линия дражжировка** | 18d | 2026-04-21 09:00 A | 2026-05-14 18:00 A |  | 100% |  |  |  | 94.5h | 94.5h |
| 793 | 1.347.1 | Проработать модернизацию форсунок | 3h | 2026-04-22 09:00 A | 2026-04-22 12:00 A |  | 100% |  | start no earlier than 2026-04-22 09:00 | Зорькин В; Домоводов К | 6h | 6h |
| 794 | 1.347.2 | сделать заявку на доп форсунки, расходники | 30min | 2026-04-22 09:00 A | 2026-04-22 09:30 A |  | 100% |  | start no earlier than 2026-04-22 09:00 | Зорькин В | 0.5h | 0.5h |
| 795 | 1.347.3 | доставка | 10d | 2026-04-30 09:00 A | 2026-05-14 18:00 A |  | 100% |  | start no earlier than 2026-04-30 09:00 | Карабанов | 80h | 80h |
| 796 | 1.347.4 | Внедрение и монтаж | 2h | 2026-05-08 09:00 A | 2026-05-08 11:00 A |  | 100% |  | start no earlier than 2026-05-08 09:00 | Зорькин В; Тимофеев В | 4h | 4h |

| ID | WBS | Task | Type | Duration | Start | Finish | Predecessors | Complete | Actual start | Actual finish | Constraint | Resources | Work | Actual work |
| --- | --- | --- | --- | --- | --- | --- | --- | --- | --- | --- | --- | --- | --- | --- |
| 797 | 1.347.5 | **Парогенератор** |  | 0.25d | 2026-04-21 09:00 A | 2026-04-21 11:00 A |  | 100% |  |  |  |  | 4h | 4h |
| 798 | 1.347.5.1 | Проверить термадатчик (панельтемпературы) TC4R на корректность работы, скачет температура, по необходимости заменить |  | 2h | 2026-04-21 09:00 A | 2026-04-21 11:00 A |  | 100% |  |  | start no earlier than 2026-04-21 08:00 | Бундин В; Зорькин В | 4h | 4h |
| 799 | 1.348 | **Звонок на экструдер** |  | 14.12d | 2026-04-07 09:00 A | 2026-04-27 10:00 A |  | 100% |  |  |  |  | 6h | 6h |
| 800 | 1.348.1 | Протяжка кабеля от ворот к экструдерщикам |  | 4h | 2026-04-07 09:00 A | 2026-04-07 13:00 A |  | 100% |  |  | start no earlier than 2026-04-22 09:00 | Дедов В | 4h | 4h |
| 801 | 1.348.2 | монтаж звонка |  | 1h | 2026-04-25 09:00 A | 2026-04-27 10:00 A | 800 | 100% |  |  | start no earlier than 2026-04-25 09:00 | Дедов В | 1h | 1h |
| 802 | 1.348.3 | монтаж кнопки за воротами |  | 1h | 2026-04-25 10:00 A | 2026-04-27 10:00 A | 801 | 100% |  |  | start no earlier than 2026-04-21 08:00 | Дедов В | 1h | 1h |
| 803 | 1.349 | **Насос гидролизата** |  | 28.01d | 2026-08-04 09:00 A | 2026-09-10 09:05 A |  | 100% |  |  |  |  | 0.42h | 0.42h |
| 804 | 1.349.1 | Заказать ремкомплект шнек, резинка, трубка, связаться с производителем |  | 20min | 2026-08-04 09:00 A | 2026-08-04 09:20 A |  | 100% |  |  | start no earlier than 2026-08-04 09:00 | Зорькин В | 0.33h | 0.33h |
| 805 | 1.349.2 | Доставка контроль сам насос шетсрен |  | 5min | 2026-09-10 09:00 A | 2026-09-10 09:05 A |  | 100% |  |  | start no earlier than 2026-09-10 09:00 | Зорькин В | 0.08h | 0.08h |
| 806 | 1.350 | **Дражжировка конвейер №1 после печки** |  | 122.12d | 2026-04-22 08:00 A | 2026-09-30 10:00 A |  | 100% |  |  |  |  | 13.08h | 13.08h |
| 807 | 1.350.1 | Поставить резьбовые клепки на боковой кожух, где кончается лента |  | 1h | 2026-09-30 09:00 A | 2026-09-30 10:00 A |  | 100% |  |  | start no earlier than 2026-09-30 09:00 | Тимофеев В | 1h | 1h |
| 808 | 1.350.2 | Ремонт насоса от 2 линии 1 цех, статор взять на складе |  | 2h | 2026-09-10 09:00 A | 2026-09-10 11:00 A |  | 100% |  |  | start no earlier than 2026-09-10 09:00 | Некрасов А | 2h | 2h |
| 809 | 1.350.3 | контроль героторная пара оплата |  | 5min | 2026-08-21 09:00 A | 2026-08-21 09:05 A |  | 100% |  |  | start no earlier than 2026-08-21 09:00 | Зорькин В | 0.08h | 0.08h |
| 810 | 1.350.4 | Замена сальника на поворотном столе/проверить |  | 1h | 2026-07-23 09:00 A | 2026-07-23 10:00 A |  | 100% |  |  | start no earlier than 2026-07-23 08:00 | Бундин В | 1h | 1h |
| 811 | 1.350.5 | **дражжировка** |  | 0.62d | 2026-04-22 08:00 A | 2026-04-22 15:00 A |  | 100% |  |  |  |  | 9h | 9h |
| 812 | 1.350.5.1 | Установка рамы для фильтров |  | 3h | 2026-04-22 08:00 A | 2026-04-22 12:00 A |  | 100% |  |  | start no earlier than 2026-04-22 08:00 | Тимофеев В | 3h | 3h |
| 813 | 1.350.5.2 | установка счетчика |  | 1h | 2026-04-22 11:00 A | 2026-04-22 12:00 A | 812 | 100% |  |  | start no earlier than 2026-04-22 08:00 | Тимофеев В | 1h | 1h |
| 814 | 1.350.5.3 | кронштейн под пульт расходомера |  | 2h | 2026-04-22 12:00 A | 2026-04-22 15:00 A | 813 | 100% |  |  | start no earlier than 2026-04-22 08:00 | Тимофеев В | 2h | 2h |
| 815 | 1.350.5.4 | **Парогенератор** |  | 0.38d | 2026-04-22 09:00 A | 2026-04-22 12:00 A |  | 100% |  |  |  |  | 3h | 3h |
| 816 | 1.350.5.4.1 | чистка парогенераторов 1 и 2 линия |  | 3h | 2026-04-22 09:00 A | 2026-04-22 12:00 A |  | 100% |  |  | start no earlier than 2026-04-22 08:00 | Бундин В | 3h | 3h |
| 817 | 1.351 | **отмена** |  | 70.75d? | 2026-04-22 09:00 | 2026-07-29 16:00 A |  | 100% | 2026-07-08 09:00 |  |  |  | 12.33h | 12.33h |
| 818 | 1.351.1 | **Парогенератор** |  | 27.5d? | 2026-04-22 09:00 | 2026-05-25 13:00 |  | 100% | 2026-07-08 09:00 | 2026-07-29 16:00 |  |  | 12.33h | 12.33h |
| 819 | 1.351.1.1 | Замена говротрубы 1 линия |  | 1h | 2026-07-08 09:00 A | 2026-07-08 10:00 A |  | 100% |  |  | start no earlier than 2026-07-08 09:00 | Бобренок В | 1h | 1h |
| 820 | 1.351.1.2 | Осмотр стоек где стоит реле давления до расширительного бачка |  | 30min | 2026-07-27 09:00 A | 2026-07-27 09:30 A |  | 100% |  |  | start no earlier than 2026-07-27 09:00 | Тимофеев В | 0.5h | 0.5h |
| 821 | 1.351.1.3 | Составить список материала для ремонта и изготовления стоек |  | 30min | 2026-07-27 09:30 A | 2026-07-27 10:00 A | 820 | 100% |  |  | start no earlier than 2026-05-27 09:00 | Тимофеев В | 0.5h | 0.5h |
| 822 | 1.351.1.4 | Заказать недостающий материал |  | 20min | 2026-07-27 09:00 A | 2026-07-27 09:20 A |  | 100% |  |  | start no earlier than 2026-07-27 09:00 | Зорькин В | 0.33h | 0.33h |
| 823 | 1.351.1.5 | Изготовление стоек |  | 3h | 2026-07-29 09:00 A | 2026-07-29 12:00 A | 821 | 100% |  |  | start no earlier than 2026-07-29 09:00 | Некрасов А | 3h | 3h |
| 824 | 1.351.1.6 | Замена стойки под реле давления |  | 3h | 2026-07-29 12:00 A | 2026-07-29 16:00 A | 823 | 100% |  |  | start no earlier than 2026-05-27 09:00 | Некрасов А | 3h | 3h |
| 825 | 1.351.1.7 | Составить список материалов или заключение по 2-м частотникам из 1 цеха от теко 0,4 (поворотный стол и конвейер) |  | 1h | 2026-07-27 08:00 A | 2026-07-27 10:00 A |  | 100% |  |  | start no earlier than 2026-07-27 08:00 | Дедов В | 1h | 1h |
| 826 | 1.351.1.8 | Взять трубку в нашем кабинете и насверлить по всей длине симметрично отверстия самым маленьким сверлом которое у нас есть (по этому заданию позвонить) |  | 3h | 2026-07-28 08:00 A | 2026-07-28 12:00 A |  | 100% |  |  | start no earlier than 2026-07-28 08:00 | Макаревич А | 3h | 3h |
| 827 | 1.352 | Демонтаж разборка/сборка редукторы шлюз. Питателей циклона 1 и 2 линия | manual | 3h | 2026-04-24 09:00 A | 2026-04-24 12:00 A |  | 100% |  |  | start no earlier than 2026-04-24 09:00 | Бундин В | 3h | 3h |

| ID | WBS | Task | Type | Duration | Start | Finish | Predecessors | Complete | Remaining | Actual start | Total slack | Free slack | Constraint | Resources | Work | Actual work |
| --- | --- | --- | --- | --- | --- | --- | --- | --- | --- | --- | --- | --- | --- | --- | --- | --- |
| 828 | 1.353 | **Теко 0,4** |  | 0.38d | 2026-04-03 09:00 A | 2026-04-03 12:00 A |  | 100% |  |  |  |  |  |  | 3h | 3h |
| 829 | 1.353.1 | замена ковшей | manual | 3h | 2026-04-03 09:00 A | 2026-04-03 12:00 A |  | 100% |  |  |  |  | start no earlier than 2026-04-03 09:00 | Макаревич А | 3h | 3h |
| 830 | 2 | **2 цех** |  | 249d? | 2023-11-16 09:00 | 2024-10-29 18:00 |  | 88% | 30.25d? | 2024-01-08 09:00 |  |  |  |  | 3023h | 2646.67h |
| 831 | 2.1 | закрепить воздушные шланги на упаковке водль стены на подобии как в ГДЗ |  | 2h | 2026-10-19 09:00 | 2026-10-19 11:00 |  |  |  |  | 102.34d |  | start no earlier than 2026-10-19 08:00 | Бундин В | 2h |  |
| 832 | 2.2 | установить вентилятор на охладитель который отсутсвует, должен быть снятый с 3ц |  | 1h | 2026-10-20 09:00 | 2026-10-20 10:00 |  |  |  |  | 101.47d |  | start no earlier than 2026-10-20 09:00 | Тимофеев В; Николаев | 2h |  |
| 833 | 2.3 | резервный кабель у компрессора убрать в лоток |  | 20min | 2026-10-19 09:00 | 2026-10-19 09:20 |  |  |  |  | 102.55d |  | start no earlier than 2026-10-19 08:00 | Бундин В | 0.33h |  |
| 834 | 2.4 | **замена трубки на насос гидролизат** |  | 2.25d | 2026-10-20 09:00 | 2026-10-22 11:00 |  |  |  |  | 99.34d |  |  |  | 2.75h |  |
| 835 | 2.4.1 | по очереди установить на насосах трубку 12/10 |  | 30min | 2026-10-20 09:00 | 2026-10-20 09:30 |  |  |  |  | 101.53d |  | start no earlier than 2026-10-20 09:00 | Тимофеев В | 0.5h |  |
| 836 | 2.4.2 | контроль поставки фитингов под гайку 12/10 |  | 15min | 2026-10-20 09:00 | 2026-10-20 09:15 |  |  |  |  | 101.56d |  | start no earlier than 2026-10-20 09:00 | Зорькин В | 0.25h |  |
| 837 | 2.4.3 | замена всех трубок на 12/10 |  | 2h | 2026-10-22 09:00 | 2026-10-22 11:00 |  |  |  |  | 99.34d |  | start no earlier than 2026-10-22 09:00 | Тимофеев В | 2h |  |
| 839 | 2.5 | **получить образцы пакет мешок на БЕСТРОМ на пленке PE** |  | 1d | 2026-10-22 09:00 | 2026-10-22 18:00 |  |  |  |  | 98.59d |  |  |  | 28h |  |
| 840 | 2.5.1 | Установка оснастки на бестром, которую привезете. Старую снимаем и вешаем на специальную стойку, ее подготовить |  | 2h | 2026-10-22 09:00 | 2026-10-22 11:00 |  |  |  |  | 99.34d |  | start no earlier than 2026-10-22 09:00 | Труфанов А; Некрасов А | 4h |  |
| 841 | 2.5.2 | замена головы / настройка / тесты |  | 8h | 2026-10-22 09:00 | 2026-10-22 18:00 |  |  |  |  | 98.59d |  | start no earlier than 2026-10-22 09:00 | Зорькин В; Тимофеев В; Николаев | 24h |  |
| 842 | 2.6 | Поставить зарядку для поломоечной машинки |  | 1h | 2026-10-14 09:00 A | 2026-10-14 10:00 A |  | 100% |  |  |  |  | start no earlier than 2026-10-14 08:00 | Бобренок В | 1h | 1h |
| 843 | 2.7 | Ремонт светильника на углу здания, со стороны склада упаковки |  | 1h | 2026-10-20 09:00 | 2026-10-20 10:00 |  |  |  |  | 101.47d |  | start no earlier than 2026-10-20 09:00 | Тимофеев В; Николаев | 2h |  |
| 844 | 2.8 | **Борьба с запахом корма на антрисоли офисы** |  | 6.27d | 2026-10-13 09:00 A | 2026-10-20 11:10 |  | 7% | 5.82d |  | 101.32d |  |  |  | 2.33h | 0.17h |
| 845 | 2.8.1 | Заказать пистолет и очиститель для пены |  | 10min | 2026-10-13 09:00 A | 2026-10-13 09:10 A |  | 100% |  |  |  |  | start no earlier than 2026-10-13 09:00 | Зорькин В | 0.17h | 0.17h |
| 846 | 2.8.2 | Контроль |  | 10min | 2026-10-20 09:00 | 2026-10-20 09:10 | 845 |  |  |  | 101.32d | 0d | start no earlier than 2026-10-20 09:00 | Зорькин В | 0.17h |  |
| 847 | 2.8.3 | Под потолком в корридоре кабинетов дополнительно запенить балку |  | 2h | 2026-10-20 09:10 | 2026-10-20 11:10 | 846 |  |  |  | 101.32d |  | start no earlier than 2026-10-20 09:00 | Бобренок В | 2h |  |
| 848 | 2.9 | С 3 цеха притащить плитку армстронг и заменить на целую на втором этаже в корридоре, при необходимости вырезать в размер |  | 2h | 2026-10-13 09:00 A | 2026-10-13 11:00 A |  | 100% |  |  |  |  | start no earlier than 2026-10-13 08:00 | Бобренок В | 2h | 2h |
| 849 | 2.10 | Сфотать шильдик компрессора (попросить пацанов с фасовки) и скинуть Зорькину |  | 1h | 2026-10-12 09:00 A | 2026-10-12 10:00 A |  | 100% |  |  |  |  | start no earlier than 2026-10-12 08:00 | Бундин В | 1h | 1h |
| 850 | 2.11 | Слить весь антифриз с приточки в вентиляции, перемотать соединения ПП к колориферу и насос |  | 2h | 2026-10-12 09:00 A | 2026-10-12 11:00 A |  | 100% |  |  |  |  | start no earlier than 2026-10-12 08:00 | Бундин В | 2h | 2h |
| 851 | 2.12 | Открыть приточку под потолком, где кабинеты в корридоре (по возможности найти диффузор и установить его, либо подумать, как ограничить поток) |  | 2h | 2026-10-12 09:00 A | 2026-10-12 11:00 A |  | 100% |  |  |  |  | start no earlier than 2026-10-12 08:00 | Бундин В | 2h | 2h |
| 852 | 2.13 | Бежит со стыка в раковине с сифоном, проверить/исправить на жирах |  | 1h | 2026-10-12 09:00 A | 2026-10-12 10:00 A |  | 100% |  |  |  |  | start no earlier than 2026-10-12 08:00 | Бундин В | 1h | 1h |
| 853 | 2.14 | Поставить воздухоотводчик с боковым отводом на котел с которого бежало | manual | 1h | 2026-10-12 09:00 A | 2026-10-12 10:00 A | 854 | 100% |  |  |  |  |  | Бобренок В | 1h | 1h |
| 854 | 2.15 | Поставить сливной шланг на поломоечную машинку, должен быть на ней | manual | 30min | 2026-10-10 09:00 A | 2026-10-10 09:30 A |  | 100% |  |  |  |  | start no earlier than 2026-10-10 09:00 | Бундин В | 0.5h | 0.5h |
| 855 | 2.16 | Собрать новый электрод для парогенератора из цельного нерж прутка, конец немного закруглить лепестковым диском |  | 4h | 2026-10-12 10:00 A | 2026-10-12 15:00 A | 853 | 100% |  |  |  |  |  | Бобренок В; Зорькин В | 8h | 8h |
| 856 | 2.17 | Сделать штекер поломоечной машинки. Склеить или взять со старого зарядного и приделать в замен нынешнего, проявить смекалку как это можно сделать. Созвониться с зорькиным |  | 2h | 2026-10-06 09:00 A | 2026-10-06 11:00 A |  | 100% |  |  |  |  | start no earlier than 2026-10-06 08:00 | Бобренок В | 2h | 2h |
| 857 | 2.18 | При запуске отопления приточки, как будет давление в системе проверить антифриз, долить |  | 1h | 2026-10-28 09:00 | 2026-10-28 10:00 |  |  |  |  | 95.47d |  | start no earlier than 2026-10-28 09:00 | Тимофеев В | 1h |  |
| 858 | 2.19 | Устранить течь в вентялиционной, проверить количество антифриза |  | 1h | 2026-10-06 09:00 A | 2026-10-06 10:00 A |  | 100% |  |  |  |  | start no earlier than 2026-10-06 09:00 | Бобренок В | 1h | 1h |
| 859 | 2.20 | Перебрать ножевой узел, понять причину люфта/устранить |  | 2h | 2026-10-06 09:00 A | 2026-10-06 11:00 A |  | 100% |  |  |  |  | start no earlier than 2026-10-06 09:00 | Бобренок В | 2h | 2h |
| 860 | 2.21 | Откалибровать смеситель |  | 1h | 2026-10-09 09:00 | 2026-10-09 10:00 |  |  |  |  | 109.47d |  | start no earlier than 2026-10-09 09:00 | Дедов В | 1h |  |
| 861 | 2.22 | Восстановление платы от рециркуляторной лампы, составление списка комплектующих, подбор аналога платы |  | 3h | 2026-10-07 09:00 A | 2026-10-07 12:00 A |  | 100% |  |  |  |  | start no earlier than 2026-10-07 09:00 | Дедов В | 3h | 3h |
| 862 | 2.23 | Ремонт шпингалета на воротох, где навески, получить у мастеров, если нет, звони Зорькину | manual | 1h | 2026-10-03 09:00 A | 2026-10-03 10:00 A |  | 100% |  |  |  |  | start no earlier than 2026-10-03 09:00 | Бобренок В | 1h | 1h |
| 863 | 2.24 | Замена дырявой трубы под парогенератором |  | 1h | 2026-10-08 09:00 A | 2026-10-08 10:00 A |  | 100% |  |  |  |  | start no earlier than 2026-10-08 09:00 | Некрасов | 1h | 1h |
| 864 | 2.25 | Плата связи RS485 замена |  | 1h | 2026-10-01 09:00 A | 2026-10-01 10:00 A |  | 100% |  |  |  |  | start no earlier than 2026-10-01 08:00 | Дедов В | 1h | 1h |
| 865 | 2.26 | Ремонт электрики Бестром (в случае если не будет работать) |  | 4h | 2026-10-07 09:00 A | 2026-10-07 13:00 A |  | 100% |  |  |  |  | start no earlier than 2026-10-07 09:00 | Дедов В | 4h | 4h |
| 866 | 2.27 | Подключить кабель датчика пирометра с печи, разобраться, где что |  | 2h | 2026-10-23 09:00 | 2026-10-23 11:00 |  |  |  |  | 98.34d |  | start no earlier than 2026-10-23 09:00 | Дедов В; Домоводов К | 4h |  |
| 867 | 2.28 | Изготовить пластину для удобного сбора гранулы лопатой, позвонить зорькину | manual | 2h | 2026-10-06 09:00 A | 2026-10-06 11:00 A |  | 100% |  |  |  |  | start no earlier than 2026-10-06 09:00 | Бобренок В | 2h | 2h |
| 868 | 2.29 | Посмотреть ручки на складе, по возможности замена, если их нет ,сообщить какие закупить. Если ничего нет и ремонт невозможен, фиксируем язычок или убираем его. | manual | 1h | 2026-10-03 09:00 A | 2026-10-03 10:00 A |  | 100% |  |  |  |  | start no earlier than 2026-10-03 09:00 | Бобренок В | 1h | 1h |
| 869 | 2.30 | Посмотреть пылесос от второго цеха, должен быть в слесарке, если нет, забрать | manual | 1h | 2026-09-29 09:00 A | 2026-09-29 10:00 A |  | 100% |  |  |  |  | start no earlier than 2026-09-29 09:00 | Бобренок В | 1h | 1h |
| 870 | 2.31 | Включить отопление в лабораторию |  | 1h | 2026-10-02 09:00 A | 2026-10-02 10:00 A |  | 100% |  |  |  |  | start no earlier than 2026-10-02 09:00 | Некрасов | 1h | 1h |

| ID | WBS | Task | Duration | Start | Finish | Predecessors | Complete | Remaining | Total slack | Free slack | Constraint | Resources | Work | Actual work |
| --- | --- | --- | --- | --- | --- | --- | --- | --- | --- | --- | --- | --- | --- | --- |
| 871 | 2.32 | **Ремонт бактерицидной лампы возле компрессора** | 8d? | 2026-10-02 09:00 A | 2026-10-12 18:00 |  | 87% | 1.02d? | 107.59d |  |  |  | 9.17h | 8h |
| 872 | 2.32.1 | Заявка на плату управления лампы | 1h | 2026-10-02 09:00 | 2026-10-02 10:00 |  |  |  | 115.47d |  | start no earlier than 2026-10-02 08:00 | Зорькин В | 1h |  |
| 873 | 2.32.2 | контроль | 10min | 2026-10-02 09:00 | 2026-10-02 09:10 |  |  |  | 115.57d |  | start no earlier than 2026-10-02 08:00 | Зорькин В | 0.17h |  |
| 874 | 2.32.3 | Ремонт | 1d? | 2026-10-12 09:00 A | 2026-10-12 18:00 A |  | 100% |  |  |  | start no earlier than 2026-10-12 09:00 | Дедов В | 8h | 8h |
| 875 | 2.33 | **пыление при загрузке при высыпании из мешка в бункер дозатора** | 16.53d | 2026-10-01 09:00 | 2026-10-21 14:15 |  |  |  | 100.06d |  |  |  | 4.75h |  |
| 876 | 2.33.1 | **изготовить рукав на дозатор для помещения в него мешка из гибкого герметичного матриала** | 16.53d | 2026-10-01 09:00 | 2026-10-21 14:15 |  |  |  | 100.06d |  |  |  | 4.75h |  |
| 877 | 2.33.1.1 | заявка на силикон/брезент полотно | 30min | 2026-10-01 09:00 | 2026-10-01 09:30 |  |  |  | 103d | 2.94d | start no earlier than 2026-10-01 09:00 | Зорькин В | 0.5h |  |
| 878 | 2.33.1.2 | доставка контроль | 15min | 2026-10-20 09:00 | 2026-10-20 09:15 | 877FS+12d |  |  | 100.06d | 0d | start no earlier than 2026-10-20 09:00 | Зорькин В | 0.25h |  |
| 879 | 2.33.1.3 | изготовление мешка | 4h | 2026-10-21 09:15 | 2026-10-21 14:15 | 878FS+1d |  |  | 100.06d |  | start no earlier than 2026-09-30 08:00 | Тимофеев В | 4h |  |
| 880 | 2.34 | **установить аспирационный рукав в зону бункера + фильтр + выход в цех/или общ обменную вент** | 17.09d? | 2026-10-05 09:00 | 2026-10-27 09:45 |  |  |  | 96.5d |  |  |  | 8.75h |  |
| 881 | 2.34.1 | заявка на аспирацию как в слесарке | 30min | 2026-10-05 09:00 | 2026-10-05 09:30 |  |  |  | 96.5d | 0d | start no earlier than 2026-10-05 09:00 | Зорькин В | 0.5h |  |
| 882 | 2.34.2 | доставка контроль | 15min | 2026-10-23 09:30 | 2026-10-23 09:45 | 881FS+15d |  |  | 96.5d | 0d | start no earlier than 2026-09-30 08:00 | Зорькин В | 0.25h |  |
| 883 | 2.34.3 | монтаж аспирационная установка | 1d? | 2026-10-26 09:45 | 2026-10-27 09:45 | 882FS+1d |  |  | 96.5d |  | start no earlier than 2026-09-30 08:00 | Тимофеев В | 8h |  |
| 884 | 2.35 | **пыление при дозации из шнека на продукт** | 0.38d | 2026-10-01 09:00 | 2026-10-01 12:00 |  |  |  | 116.22d |  |  |  | 5h |  |
| 885 | 2.35.1 | установить пластину НЕРЖ на выход шнека для отклонения порошка ближе к барабану | 2h | 2026-10-01 09:00 | 2026-10-01 11:00 |  |  |  | 116.34d |  | start no earlier than 2026-10-01 09:00 | Тимофеев В | 2h |  |
| 886 | 2.35.2 | **изготовить /купить патрубок типа 90 колено сантех** | 0.38d | 2026-10-01 09:00 | 2026-10-01 12:00 |  |  |  | 116.22d |  |  |  | 3h |  |
| 887 | 2.35.2.1 | модель + печать на 3д | 2h | 2026-10-01 09:00 | 2026-10-01 11:00 |  |  |  | 116.22d | 0d | start no earlier than 2026-10-01 09:00 | Домоводов К | 2h |  |
| 888 | 2.35.2.2 | монтаж | 1h | 2026-10-01 11:00 | 2026-10-01 12:00 | 887 |  |  | 116.22d |  | start no earlier than 2026-09-30 08:00 | Тимофеев В | 1h |  |
| 889 | 2.36 | **сыпит в одну точку барабана, образуя не нужное кольцо** | 15d | 2026-10-05 09:00 | 2026-10-22 18:00 |  |  |  | 98.59d |  |  |  | 15h |  |
| 890 | 2.36.1 | изготовить отвод на 3д | 4h | 2026-10-20 09:00 | 2026-10-20 13:00 |  |  |  | 100.84d | 1.5d | start no earlier than 2026-10-20 09:00 | Домоводов К | 4h |  |
| 891 | 2.36.2 | монтаж | 2h | 2026-10-22 09:00 | 2026-10-22 11:00 | 890 |  |  | 99.34d |  | start no earlier than 2026-10-22 09:00 | Тимофеев В | 2h |  |
| 892 | 2.36.3 | **перенос дозатора на второй барабан** | 15d | 2026-10-05 09:00 | 2026-10-22 18:00 |  |  |  | 98.59d |  |  |  | 9h |  |
| 893 | 2.36.3.1 | согласовоать с производством технологами старт переноса | 1h | 2026-10-05 09:00 | 2026-10-05 10:00 |  |  |  | 109.47d | 10.88d | start no earlier than 2026-10-05 09:00 | Зорькин В | 1h |  |
| 894 | 2.36.3.2 | изготовить раму - составить чертежи | 2h | 2026-10-21 09:00 | 2026-10-21 11:00 | 893FS+2d |  |  | 98.59d | 0d | start no earlier than 2026-10-21 09:00 | Труфанов А | 2h |  |
| 895 | 2.36.3.3 | сборка рама | 4h | 2026-10-21 11:00 | 2026-10-21 16:00 | 894 |  |  | 98.59d | 0d | start no earlier than 2026-10-02 09:00 | Труфанов А | 4h |  |
| 896 | 2.36.3.4 | перенос шнека дозатора / переключения | 2h | 2026-10-22 16:00 | 2026-10-22 18:00 | 895FS+1d |  |  | 98.59d |  | start no earlier than 2026-09-30 08:00 | Тимофеев В | 2h |  |
| 897 | 2.37 | Продуть всю вентиляшку на жирах с люльки | 2h | 2026-09-29 09:00 A | 2026-09-29 11:00 A |  | 100% |  |  |  | start no earlier than 2026-09-29 08:00 | Бундин В | 2h | 2h |
| 899 | 2.38 | Изготовить носик на подаче сухого гидролизата под уклоном ближе к барабану | 3h | 2026-09-29 09:00 A | 2026-09-29 12:00 A |  | 100% |  |  |  | start no earlier than 2026-09-29 09:00 | Тимофеев В | 3h | 3h |
| 900 | 2.39 | Изготовление рамы на ножках для переноса всего барабана с сухим гидролизатом к нижнему барабану | 4h | 2026-09-29 09:00 | 2026-09-29 13:00 |  |  |  | 118.09d |  | start no earlier than 2026-09-29 09:00 | Тимофеев В | 4h |  |
| 901 | 2.40 | изготовить ножки на бункер нории БЕСТРОМ | 3h | 2026-09-26 09:00 A | 2026-09-26 12:00 A |  | 100% |  |  |  | start no earlier than 2026-09-26 09:00 | Бобренок В | 3h | 3h |

| ID | WBS | Task | Duration | Start | Finish | Predecessors | Complete | Remaining | Total slack | Constraint | Resources | Work | Actual work |
| --- | --- | --- | --- | --- | --- | --- | --- | --- | --- | --- | --- | --- | --- |
| 902 | 2.41 | **установить 4 трубки с быстросъемами в барабаны жиров** | 3.5d | 2026-09-25 09:00 A | 2026-09-28 13:00 |  | 33% | 2.33d | 119.09d |  |  | 6h | 2h |
| 903 | 2.41.1 | подготовить сменную трубку для подачи жира, насверлить резьбу, отверстия | 2h | 2026-09-25 09:00 A | 2026-09-25 11:00 A |  | 100% |  |  | start no earlier than 2026-09-25 09:00 | Тимофеев В | 2h | 2h |
| 904 | 2.41.2 | подготовить трубку 3 и 4 | 4h | 2026-09-28 09:00 | 2026-09-28 13:00 |  |  |  | 119.09d | start no earlier than 2026-09-28 09:00 | Тимофеев В | 4h |  |
| 905 | 2.42 | кран на жирах нет стопора - вращение на 360 устранить, найти этот кран. | 30min | 2026-09-24 09:00 A | 2026-09-24 09:30 A |  | 100% |  |  | start no earlier than 2026-09-24 09:00 | Тимофеев В | 0.5h | 0.5h |
| 906 | 2.43 | Проверить весы на смесителе прыгают в диапазаоне 40кг | 1h | 2026-09-23 09:00 | 2026-09-23 10:00 |  |  |  | 124.47d | start no earlier than 2026-09-23 09:00 | Дедов В | 1h |  |
| 907 | 2.44 | **лаборатория** | 0.12d | 2026-09-22 09:00 A | 2026-09-22 10:00 A |  | 100% |  |  |  |  | 1.5h | 1.5h |
| 908 | 2.44.1 | Перегорел тэн на дигистре | 30min | 2026-09-22 09:00 A | 2026-09-22 09:30 A |  | 100% |  |  | start no earlier than 2026-09-22 09:00 | Тимофеев В | 0.5h | 0.5h |
| 909 | 2.44.2 | Поставить колбу в лаборотории на бульбуляторе, колба в лаборатории | 1h | 2026-09-22 09:00 A | 2026-09-22 10:00 A |  | 100% |  |  | start no earlier than 2026-09-22 09:00 | Тимофеев В | 1h | 1h |
| 910 | 2.45 | Сделать ручки и щеколду для мусорки на улице | 1h | 2026-09-25 09:00 A | 2026-09-25 10:00 A |  | 100% |  |  | start no earlier than 2026-09-25 09:00 | Бундин В | 1h | 1h |
| 911 | 2.46 | установить трубку жир ф12 - нарезать резьбу под фитинг / сверлить под "струйки" | 2h | 2026-09-24 09:00 A | 2026-09-24 11:00 A |  | 100% |  |  | start no earlier than 2026-09-24 09:00 | Тимофеев В | 2h | 2h |
| 912 | 2.47 | **система сброса муки с прекондиционера в мешки** | 2d? | 2026-09-18 09:00 A | 2026-09-19 18:00 A |  | 100% |  |  |  |  | 11h | 11h |
| 913 | 2.47.1 | Продумать варианты предложить, согласовать с Домоводовым и смонтировать, чтоб можно было вешать мешок на экструдере, под рассекатель потока муки выходящий из прекондиционера, который сделал Макаревич | 3h | 2026-09-18 09:00 A | 2026-09-18 12:00 A |  | 100% |  |  | start no earlier than 2026-09-18 09:00 | Бобренок В | 3h | 3h |
| 914 | 2.47.2 | изготовление тележки с креплением для 2х мешков. Покрасить | 1d? | 2026-09-19 09:00 A | 2026-09-19 18:00 A |  | 100% |  |  | start no earlier than 2026-09-19 09:00 | Бобренок В | 8h | 8h |
| 915 | 2.48 | Промывка дистилятора в лаборатории | 3h | 2026-09-18 09:00 A | 2026-09-18 12:00 A |  | 100% |  |  | start no earlier than 2026-09-18 09:00 | Бобренок В | 3h | 3h |
| 916 | 2.49 | Изготовить стопор для пленки на бестром (Обратиться к пацанам на фасовке или к мастеру, должны подсказать) | 2h | 2026-09-16 09:00 A | 2026-09-16 11:00 A |  | 100% |  |  | start no earlier than 2026-09-16 08:00 | Бундин В | 2h | 2h |
| 917 | 2.50 | ремонт лампа бактерициодная (это не инсекюьтер) на ГП (не горит табло). Ревизия. | 2h | 2026-09-13 09:00 A | 2026-09-13 11:00 A |  | 100% |  |  | start no earlier than 2026-09-13 09:00 | Дедов В | 2h | 2h |
| 918 | 2.51 | ремонт ворот ГП слетели тросы | 2h | 2026-09-11 09:00 A | 2026-09-11 11:00 A |  | 100% |  |  | start no earlier than 2026-09-11 08:00 | Бобренок В | 2h | 2h |
| 919 | 2.52 | ремонт светильник корридор у отк | 1h | 2026-09-14 09:00 A | 2026-09-14 10:00 A |  | 100% |  |  | start no earlier than 2026-09-14 09:00 | Макаревич А | 1h | 1h |
| 920 | 2.53 | замена квадрат ручка дверь экструдер | 1h | 2026-09-14 09:00 A | 2026-09-14 10:00 A |  | 100% |  |  | start no earlier than 2026-09-14 09:00 | Макаревич А | 1h | 1h |
| 921 | 2.54 | **ревизия сливной шланг моечная машинка** | 24.25d | 2026-09-14 09:00 A | 2026-10-09 11:00 A |  | 100% |  |  |  |  | 3.5h | 3.5h |
| 922 | 2.54.1 | ревизия / удлинить | 1h | 2026-09-14 09:00 A | 2026-09-14 10:00 A |  | 100% |  |  | start no earlier than 2026-09-14 09:00 | Тимофеев В | 1h | 1h |
| 923 | 2.54.2 | заявка | 15min | 2026-09-18 09:00 A | 2026-09-18 09:15 A |  | 100% |  |  | start no earlier than 2026-09-18 09:00 | Зорькин В | 0.25h | 0.25h |
| 924 | 2.54.3 | контроль доставки | 15min | 2026-10-07 09:00 A | 2026-10-07 09:15 A | 923FS+5d | 100% |  |  | start no earlier than 2026-10-07 09:00 | Зорькин В | 0.25h | 0.25h |
| 925 | 2.54.4 | монтаж | 2h | 2026-10-09 09:00 A | 2026-10-09 11:00 A | 924FS+1d | 100% |  |  | start no earlier than 2026-10-09 09:00 | Тимофеев В | 2h | 2h |
| 926 | 2.55 | Проверка системы под давлением, при необходимости заменить шланги на пневматические?? | 1h | 2026-09-21 09:00 A | 2026-09-21 10:00 A |  | 100% |  |  | start no earlier than 2026-09-22 09:00 | Тимофеев В | 1h | 1h |
| 927 | 2.56 | Установить трубку на жирах, которую сделал викторович | 30min | 2026-09-09 09:00 A | 2026-09-09 09:30 A |  | 100% |  |  | start no earlier than 2026-09-09 08:00 | Тимофеев В | 0.5h | 0.5h |

| ID | WBS | Task | Type | Duration | Start | Finish | Predecessors | Complete | Constraint | Resources | Work | Actual work |
| --- | --- | --- | --- | --- | --- | --- | --- | --- | --- | --- | --- | --- |
| 928 | 2.57 | **реверс теплоносителя в приточном калорифере** |  | 28.25d | 2026-08-24 09:00 A | 2026-09-24 11:00 A |  | 100% |  |  | 2.5h | 2.5h |
| 929 | 2.57.1 | заявка |  | 15min | 2026-08-24 09:00 A | 2026-08-24 09:15 A |  | 100% | start no earlier than 2026-08-24 09:00 | Зорькин В | 0.25h | 0.25h |
| 930 | 2.57.2 | контроль доставки |  | 15min | 2026-09-14 09:05 A | 2026-09-14 09:20 A | 1142FS+5d | 100% | start no earlier than 2026-09-09 09:00 | Зорькин В | 0.25h | 0.25h |
| 931 | 2.57.3 | монтаж |  | 2h | 2026-09-24 09:00 A | 2026-09-24 11:00 A | 1143FS+1d | 100% | start no earlier than 2026-09-24 09:00 | Дедов В | 2h | 2h |
| 932 | 2.58 | востановить потерю токов в печи / ревизия . Замена тенов |  | 4h | 2026-09-09 09:00 A | 2026-09-09 13:00 A |  | 100% | start no earlier than 2026-09-09 09:00 | Бобренок В | 4h | 4h |
| 933 | 2.59 | Смазка подшипников привода охладителя | manual | 1h | 2026-09-09 09:00 A | 2026-09-09 10:00 A |  | 100% |  | Бобренок В | 1h | 1h |
| 934 | 2.60 | Обрезать пенку пвх на двери в охладителе ,сделать ее ровной |  | 1h | 2026-09-07 09:00 A | 2026-09-07 10:00 A |  | 100% | start no earlier than 2026-09-05 09:00 | Макаревич А | 1h | 1h |
| 935 | 2.61 | Переборка парогенератора, поиск неисправности (подключили перемычку между реле времени) |  | 4h | 2026-09-02 09:00 A | 2026-09-02 13:00 A |  | 100% | start no earlier than 2026-09-02 09:00 | Бобренок В | 4h | 4h |
| 936 | 2.62 | **Подготовить электрическую часть для подключения второго насоса без частотника (продолжаем эту задачу)** |  | 13.25d | 2026-09-03 09:00 A | 2026-09-17 11:00 A |  | 100% |  |  | 4.17h | 4.17h |
| 937 | 2.62.1 | установить на линию доп насос (резервный) |  | 1h | 2026-09-10 09:00 A | 2026-09-10 10:00 A |  | 100% | start no earlier than 2026-09-10 09:00 | Тимофеев В | 1h | 1h |
| 938 | 2.62.2 | монтаж |  | 1h | 2026-09-09 09:00 A | 2026-09-09 10:00 A |  | 100% | start no earlier than 2026-09-09 09:00 | Тимофеев В | 1h | 1h |
| 939 | 2.62.3 | Переместить розетки со стола, смонтировать площадку к раме и закрепить на эту раму |  | 2h | 2026-09-17 09:00 A | 2026-09-17 11:00 A |  | 100% | start no earlier than 2026-09-17 09:00 | Тимофеев В | 2h | 2h |
| 940 | 2.62.4 | Подумать место установки автомата |  | 10min | 2026-09-03 09:00 A | 2026-09-03 09:10 A |  | 100% | start no earlier than 2026-09-03 09:00 | Тимофеев В | 0.17h | 0.17h |
| 941 | 2.63 | Ремонт парогенератора, замена реле давления + отвалился контакт + замена мембраны |  | 1h | 2026-09-02 09:00 A | 2026-09-02 10:00 A |  | 100% | start no earlier than 2026-09-02 08:00 | Труфанов А | 1h | 1h |
| 942 | 2.64 | Замена редуктора на печи |  | 2h | 2026-09-01 09:00 A | 2026-09-01 11:00 A |  | 100% | start no earlier than 2026-09-01 09:00 | Бундин В | 2h | 2h |
| 943 | 2.65 | проверка котлов на приточку (замена клапана и тена на большую мощность) | manual | 2h | 2026-09-07 09:00 A | 2026-09-07 11:00 A |  | 100% | start no earlier than 2026-09-07 09:00 | Дедов В | 2h | 2h |
| 944 | 2.66 | проверка всех котлов на отопление по цеху | manual | 4h | 2026-08-30 09:00 A | 2026-08-30 13:00 A |  | 100% | start no earlier than 2026-08-30 09:00 | Дедов В | 4h | 4h |
| 945 | 2.67 | закрепить коробку двери снизу (возле ШУ приточка 2 этаж) |  | 2h | 2026-08-28 09:00 A | 2026-08-28 11:00 A |  | 100% | start no earlier than 2026-08-28 09:00 | Макаревич А | 2h | 2h |
| 946 | 2.68 | **заменить фильтры на воду в цехе (проверить мембрану на гидроаккумуляторе)** |  | 1d? | 2026-08-28 09:00 A | 2026-08-28 18:00 A |  | 100% |  | Бобренок В | 16h | 16h |
| 947 | 2.68.1 | заказать фильтры |  | 1d? | 2026-08-28 09:00 A | 2026-08-28 18:00 A |  | 100% | start no earlier than 2026-08-28 09:00 | Шуранов Ю | 8h | 8h |
| 948 | 2.69 | монтаж и подключение розетки для кондиционера в кабинет ОТК |  | 2h | 2026-08-26 08:00 A | 2026-08-26 11:00 A |  | 100% | start no earlier than 2026-08-26 08:00 | Бобренок В | 2h | 2h |
| 949 | 2.70 | сливной шланг от кондиционеров наш кабинет и Шелепова спрятать в кабель канал 30х25 (он на складе) |  | 2h | 2026-08-26 08:00 A | 2026-08-26 11:00 A |  | 100% | start no earlier than 2026-08-26 08:00 | Бобренок В | 2h | 2h |
| 950 | 2.71 | сливной шланг от кондиционеров кабинет Сапелина спрятать в кабель канал 30х25 (он на складе) с 10 до 11ч |  | 1h | 2026-08-31 09:00 A | 2026-08-31 10:00 A |  | 100% | start no earlier than 2026-08-31 09:00 | Тимофеев В | 1h | 1h |
| 951 | 2.72 | замерить токи на оборудование (таблица в слесарке) |  | 3h | 2026-08-27 09:00 A | 2026-08-27 12:00 A |  | 100% | start no earlier than 2026-08-27 09:00 | Бобренок В | 3h | 3h |

| ID | WBS | Task | Type | Duration | Start | Finish | Predecessors | Complete | Remaining | Total slack | Free slack | Constraint | Resources | Work | Actual work |
| --- | --- | --- | --- | --- | --- | --- | --- | --- | --- | --- | --- | --- | --- | --- | --- |
| 952 | 2.73 | **дренаж кондиционеров жир и упаковка установить отдельный насос от жиров** |  | 28.06d | 2026-08-24 09:00 A | 2026-09-24 09:30 A |  | 100% |  |  |  |  |  | 122.5h | 122.5h |
| 953 | 2.73.1 | заявка насос |  | 30min | 2026-08-24 09:00 A | 2026-08-24 09:30 A |  | 100% |  |  |  | start no earlier than 2026-08-24 09:00 | Шуранов Ю | 0.5h | 0.5h |
| 954 | 2.73.2 | контроль доставка |  | 15d | 2026-09-02 09:30 A | 2026-09-24 09:30 A | 953FS+7d | 100% |  |  |  | start no earlier than 2026-08-20 09:00 | Зорькин В | 120h | 120h |
| 955 | 2.73.3 | Разорвать контур от насоса и сделать слив в раковину | manual | 1h | 2026-09-01 09:00 A | 2026-09-01 10:00 A | 954FS+1d | 100% |  |  |  | start no earlier than 2026-09-01 09:00 | Некрасов А; Тимофеев В | 2h | 2h |
| 956 | 2.74 | **бетонирование крыльцо вход в 2ц** |  | 0.02d | 2026-08-31 09:00 | 2026-08-31 09:10 |  |  |  | 146.57d |  |  |  | 0.17h |  |
| 957 | 2.74.1 | заявка Олегу |  | 10min | 2026-08-31 09:00 | 2026-08-31 09:10 |  |  |  | 146.57d |  | start no earlier than 2026-08-31 09:00 | Шуранов Ю | 0.17h |  |
| 958 | 2.75 | течь кондиционер жиры - контроль работы слива |  | 30min | 2026-08-31 09:00 A | 2026-08-31 09:30 A |  | 100% |  |  |  | start no earlier than 2026-08-31 09:00 | Тимофеев В | 0.5h | 0.5h |
| 959 | 2.76 | контроль замена фитинги или трубки жир, устранить возможность произвольного срыва |  | 30min | 2026-09-01 09:00 A | 2026-09-01 09:30 A |  | 100% |  |  |  | start no earlier than 2026-09-03 09:00 | Некрасов А; Шуранов Ю | 1h | 1h |
| 960 | 2.77 | **разгрузка синего накопителя, в реверс шнек + окно** |  | 5.12d | 2026-08-20 09:00 A | 2026-08-27 10:00 A |  | 100% |  |  |  |  |  | 4h | 4h |
| 961 | 2.77.1 | выполнить люк в шнеке: вырезать окно, крепеж на шарнир + притвор с уплотнением + застежка | milestone | 0h | 2026-08-20 09:00 A | 2026-08-20 09:00 A |  | 100% |  |  |  | start no earlier than 2026-08-20 09:00 | Некрасов А; Тимофеев В |  |  |
| 962 | 2.77.2 | быстросъемное крепление |  | 1h | 2026-08-27 09:00 A | 2026-08-27 10:00 A |  | 100% |  |  |  | start no earlier than 2026-08-27 09:00 | Тимофеев В | 1h | 1h |
| 963 | 2.77.3 | изготовление фланца + труба для крепления гофротрубы ф250 |  | 3h | 2026-08-24 09:00 A | 2026-08-24 12:00 A |  | 100% |  |  |  | start no earlier than 2026-08-24 09:00 | Некрасов А | 3h | 3h |
| 964 | 2.78 | перенос розетка на стену инсекютер корридор у ОТК |  | 1h | 2026-08-15 09:00 A | 2026-08-17 10:00 A |  | 100% |  |  |  | start no earlier than 2026-08-15 09:00 | Бундин В | 1h | 1h |
| 965 | 2.79 | перенос инсекютер ниже на фасовке, для возможности доступа операторами |  | 1h | 2026-09-24 09:00 A | 2026-09-24 10:00 A |  | 100% |  |  |  | start no earlier than 2026-09-24 09:00 | Бундин В | 1h | 1h |
| 966 | 2.80 | изготовить лопатку для датчика сырья, что бы было 2-4 лопасти и ниже на 5-10см |  | 2h | 2026-08-13 09:00 A | 2026-08-13 11:00 A |  | 100% |  |  |  | start no earlier than 2026-08-13 09:00 | Макаревич А | 2h | 2h |
| 967 | 2.81 | прикрепить план увакуации на место (зона отстоя навесок, стенка мойки) |  | 30min | 2026-08-12 09:00 A | 2026-08-12 09:30 A |  | 100% |  |  |  | start no earlier than 2026-08-12 09:00 | Макаревич А | 0.5h | 0.5h |
| 968 | 2.82 | ремонт ручка в экструдер 2ц |  | 1h | 2026-08-14 09:00 A | 2026-08-14 10:00 A |  | 100% |  |  |  | start no earlier than 2026-08-14 09:00 | Труфанов А | 1h | 1h |
| 969 | 2.83 | **установить сифон ф110 в линию слива жиров** |  | 60.31d | 2026-08-12 09:00 A | 2026-10-22 11:30 |  | 29% | 43.08d | 99.28d |  |  |  | 3.5h | 1h |
| 970 | 2.83.1 | заявка на сифон, планирование монтаж |  | 1h | 2026-08-12 09:00 A | 2026-08-12 10:00 A |  | 100% |  |  |  | start no earlier than 2026-08-12 09:00 | Зорькин В | 1h | 1h |
| 971 | 2.83.2 | возможно ли убрать сифоны ф50, достаточно ли заслонки без гидрозатвора? Как сделать гидрозатвор ф100 |  | 15min | 2026-10-21 09:00 | 2026-10-21 09:15 |  |  |  | 99.28d | 0d | start no earlier than 2026-10-21 09:00 | Труфанов А | 0.25h |  |
| 972 | 2.83.3 | решение | milestone | 0d | 2026-10-22 09:15 | 2026-10-22 09:15 | 971FS+1d |  |  | 99.28d | 0d | start no earlier than 2026-09-08 08:00 | Зорькин В |  |  |
| 973 | 2.83.4 | контроль доставка |  | 15min | 2026-10-22 09:15 | 2026-10-22 09:30 | 970FS+7d, 972 |  |  | 99.28d | 0d | start no earlier than 2026-08-31 09:00 | Зорькин В | 0.25h |  |
| 974 | 2.83.5 | монтаж |  | 2h | 2026-10-22 09:30 | 2026-10-22 11:30 | 973 |  |  | 99.28d |  | start no earlier than 2026-09-07 09:00 | Бобренок В | 2h |  |
| 975 | 2.84 | **установить инсекютер дополнительный на экструдер** |  | 22.25d | 2026-08-21 09:00 A | 2026-09-17 11:00 A |  | 100% |  |  |  |  |  | 2.5h | 2.5h |
| 976 | 2.84.1 | заявка инстекютер |  | 15min | 2026-08-21 09:00 A | 2026-08-21 09:15 A |  | 100% |  |  |  | start no earlier than 2026-08-21 09:00 | Зорькин В | 0.25h | 0.25h |
| 977 | 2.84.2 | контроль доставки |  | 15min | 2026-09-09 09:00 A | 2026-09-09 09:15 A | 976FS+7d | 100% |  |  |  | start no earlier than 2026-09-09 09:00 | Зорькин В | 0.25h | 0.25h |
| 978 | 2.84.3 | монтаж розетка / кабель |  | 2h | 2026-09-17 09:00 A | 2026-09-17 11:00 A | 977FS+1d | 100% |  |  |  | start no earlier than 2026-09-17 09:00 | Труфанов А | 2h | 2h |
| 979 | 2.85 | маркировка канистры гидролизата - передать на время гровер нач цеха 2 |  | 20min | 2026-08-11 09:00 A | 2026-08-11 09:20 A |  | 100% |  |  |  | start no earlier than 2026-08-11 09:00 | Бобренок В | 0.33h | 0.33h |

| ID | WBS | Task | Type | Duration | Start | Finish | Predecessors | Complete | Remaining | Total slack | Free slack | Constraint | Resources | Work | Actual work |
| --- | --- | --- | --- | --- | --- | --- | --- | --- | --- | --- | --- | --- | --- | --- | --- |
| 980 | 2.86 | **ограждение мусорного контейнера у 2ц** |  | 15d | 2026-08-31 09:00 A | 2026-09-15 18:00 A |  | 100% |  |  |  |  |  | 34.75h | 34.75h |
| 981 | 2.86.1 | схема размещения |  | 1h | 2026-08-31 09:00 A | 2026-08-31 10:00 A |  | 100% |  |  |  | start no earlier than 2026-08-31 09:00 | Зорькин В | 1h | 1h |
| 982 | 2.86.2 | контроль остатков материала - каркас + обшивка стен |  | 30min | 2026-08-31 10:00 A | 2026-08-31 10:30 A | 981 | 100% |  |  |  | start no earlier than 2026-08-14 09:00 | Зорькин В | 0.5h | 0.5h |
| 983 | 2.86.3 | заявка материал / лист |  | 1h | 2026-09-01 10:30 A | 2026-09-01 11:30 A | 982FS+1d | 100% |  |  |  | start no earlier than 2026-08-10 08:00 | Зорькин В | 1h | 1h |
| 984 | 2.86.4 | контроль поставка |  | 15min | 2026-09-14 11:30 A | 2026-09-14 11:45 A | 983FS+10d | 100% |  |  |  | start no earlier than 2026-08-10 08:00 | Зорькин В | 0.25h | 0.25h |
| 985 | 2.86.5 | монтаж каркас + обшивка |  | 2d | 2026-09-14 09:00 A | 2026-09-15 18:00 A | 984FS+1d | 100% |  |  |  | start no earlier than 2026-08-10 08:00 | Некрасов А; Тимофеев В | 32h | 32h |
| 986 | 2.87 | **установить кондиционер контролерам ОТК в 2ц** |  | 7.38d | 2026-08-19 09:00 A | 2026-08-28 12:00 A |  | 100% |  |  |  |  |  | 7.5h | 7.5h |
| 987 | 2.87.1 | оапата счет контроль |  | 15min | 2026-08-19 09:00 A | 2026-08-19 09:15 A |  | 100% |  |  |  | start no earlier than 2026-08-19 09:00 | Домоводов К | 0.25h | 0.25h |
| 988 | 2.87.2 | длоставка контроль |  | 15min | 2026-08-24 09:15 A | 2026-08-24 09:30 A | 987FS+4d | 100% |  |  |  | start no earlier than 2026-08-17 09:00 | Домоводов К | 0.25h | 0.25h |
| 989 | 2.87.3 | монтаж |  | 4h | 2026-08-24 09:30 A | 2026-08-24 14:30 A | 988 | 100% |  |  |  | start no earlier than 2026-08-10 08:00 | оплот | 4h | 4h |
| 990 | 2.87.4 | монтаж крозетка |  | 3h | 2026-08-28 09:00 A | 2026-08-28 12:00 A | 989FS-1d | 100% |  |  |  | start no earlier than 2026-08-28 09:00 | Бобренок В | 3h | 3h |
| 991 | 2.88 | **усиление подогрев приточной вентиляции** |  | 59d? | 2026-08-17 09:00 A | 2026-10-23 18:00 |  | 33% | 39.6d? | 97.59d |  |  |  | 18.25h | 6h |
| 992 | 2.88.1 | планирование мощности для приточная вент до 200 квт + тепл завесы |  | 4h | 2026-08-17 09:00 A | 2026-08-17 13:00 A |  | 100% |  |  |  | start no earlier than 2026-08-17 09:00 | Домоводов К | 4h | 4h |
| 993 | 2.88.2 | Подключить колорифер в противоток, гибкую подводку получить на складе |  | 2h | 2026-09-24 09:00 A | 2026-09-24 11:00 A |  | 100% |  |  |  | start no earlier than 2026-09-24 08:00 | Дедов В | 2h | 2h |
| 994 | 2.88.3 | заявка доп котлы + автоматика |  | 4h | 2026-09-16 09:00 | 2026-09-16 13:00 | 992FS+1d |  |  | 120.06d | 0d | start no earlier than 2026-09-16 09:00 | Домоводов К | 4h |  |
| 995 | 2.88.4 | контроль поствки |  | 15min | 2026-09-26 14:00 | 2026-09-26 14:15 | 994FS+10d |  |  | 120.06d | 22.47d | start no earlier than 2026-08-10 08:00 | Зорькин В | 0.25h |  |
| 996 | 2.88.5 | монтаж |  | 1d? | 2026-10-23 09:00 | 2026-10-23 18:00 | 995 |  |  | 97.59d |  | start no earlier than 2026-10-23 09:00 | Некрасов А | 8h |  |
| 997 | 2.89 | собрать 4 стула и тумбочку. Находятся у мастера |  | 4h | 2026-08-10 08:00 A | 2026-08-10 13:00 A |  | 100% |  |  |  | start no earlier than 2026-08-10 08:00 | Бобренок В | 4h | 4h |
| 998 | 2.90 | кабель к вентилятору печи примыкание гофры к трубе выполнить без пустот фото Фадеевой |  | 1h | 2026-08-11 09:00 A | 2026-08-11 10:00 A |  | 100% |  |  |  | start no earlier than 2026-08-11 09:00 | Бобренок В | 1h | 1h |
| 999 | 2.91 | закрыить все эл щщитки на ключь |  | 1h | 2026-08-10 08:00 A | 2026-08-10 10:00 A |  | 100% |  |  |  | start no earlier than 2026-08-10 08:00 | Бобренок В | 1h | 1h |
| 1000 | 2.92 | установить отбойник склад навесок, стена мойки |  | 1h | 2026-08-10 08:00 A | 2026-08-10 10:00 A |  | 100% |  |  |  | start no earlier than 2026-08-10 08:00 | Бобренок В | 1h | 1h |
| 1001 | 2.93 | **обеспечить не менее +15 зимой в зоне хранения навесок** |  | 73.75d? | 2026-08-04 09:00 A | 2026-11-02 16:00 |  | 30% | 51.37d? | 91.84d |  |  |  | 42.25h | 11h |
| 1002 | 2.93.1 | **утепление стены** |  | 53.75d | 2026-09-01 09:00 A | 2026-11-02 16:00 |  | 14% | 46.34d | 91.84d |  |  |  | 13.25h | 1h |
| 1003 | 2.93.1.1 | расчет количство утеплителя + профлист/саморезы. Заявка |  | 1h | 2026-09-09 09:00 A | 2026-09-09 10:00 A |  | 100% |  |  |  | start no earlier than 2026-09-09 09:00 | Зорькин В | 1h | 1h |
| 1004 | 2.93.1.2 | получить цену / решение о тепловой завесе | milestone | 0d | 2026-09-01 09:00 A | 2026-09-01 09:00 A |  | 100% |  |  |  | start no earlier than 2026-09-01 09:00 | Домоводов К |  |  |
| 1005 | 2.93.1.3 | контроль даты доставки |  | 15min | 2026-09-14 10:00 | 2026-09-14 10:15 | 1003FS+5d |  |  | 131.69d | 39.84d | start no earlier than 2026-08-27 08:00 | Зорькин В | 0.25h |  |
| 1006 | 2.93.1.4 | монтаж пеноплекса на стену |  | 6h | 2026-11-02 09:00 | 2026-11-02 16:00 | 1005FS+1d |  |  | 91.84d |  | start no earlier than 2026-11-02 09:00 | Бобренок В; Труфанов А | 12h |  |
| 1007 | 2.93.1.5 | решение об утеплении стены сравнить с затратами на тепловые завесы | milestone | 0h | 2026-09-01 09:00 | 2026-09-01 09:00 | 1004, 1023 |  |  | 145.59d |  | start no earlier than 2026-08-24 09:00 | Домоводов К |  |  |

| ID | WBS | Task | Type | Duration | Start | Finish | Predecessors | Complete | Remaining | Total slack | Free slack | Constraint | Resources | Work | Actual work |
| --- | --- | --- | --- | --- | --- | --- | --- | --- | --- | --- | --- | --- | --- | --- | --- |
| 1008 | 2.93.2 | **кап ремонт стен зона хранения навесок. Промерзают** |  | 5.12d | 2026-08-04 09:00 A | 2026-08-11 10:00 A |  | 100% |  |  |  |  |  | 5h | 5h |
| 1009 | 2.93.2.1 | установить листы на место склад навесо стена с эл щитком |  | 1h | 2026-08-11 09:00 A | 2026-08-11 10:00 A |  | 100% |  |  |  | start no earlier than 2026-08-11 09:00 | Тимофеев В | 1h | 1h |
| 1010 | 2.93.2.2 | вскрытие стен дя составления плана работ. Демонтировать несколько листов в зоне промерзания (гдещиток) |  | 4h | 2026-08-04 09:00 A | 2026-08-04 13:00 A |  | 100% |  |  |  | start no earlier than 2026-08-04 09:00 | Тимофеев В | 4h | 4h |
| 1011 | 2.93.3 | **тепловые завесы в 2ц зона подачи навесок** |  | 62.38d? | 2026-08-17 09:00 A | 2026-10-29 12:00 |  | 20% | 49.9d? | 94.22d |  |  |  | 23.75h | 4.75h |
| 1012 | 2.93.3.1 | **монтаж теплокалориферов** |  | 24d? | 2026-09-28 09:00 A | 2026-10-27 18:00 |  | 26% | 17.86d? | 95.59d |  |  |  | 10.75h | 2.75h |
| 1013 | 2.93.3.1.1 | заявка |  | 2h | 2026-09-28 09:00 A | 2026-09-28 11:00 A | 1007FS+1d | 100% |  |  |  | start no earlier than 2026-09-28 09:00 | Домоводов К | 2h | 2h |
| 1014 | 2.93.3.1.2 | контроль оплаты\ |  | 15min | 2026-09-30 11:00 A | 2026-09-30 11:15 A | 1013FS+2d | 100% |  |  |  | start no earlier than 2026-09-07 09:00 | Зорькин В | 0.25h | 0.25h |
| 1015 | 2.93.3.1.3 | контроль доставки |  | 15min | 2026-10-19 11:15 A | 2026-10-19 11:30 A | 1014FS+15d | 100% |  |  |  | start no earlier than 2026-08-10 08:00 | Зорькин В | 0.25h | 0.25h |
| 1016 | 2.93.3.1.4 | приемка |  | 15min | 2026-10-20 11:30 A | 2026-10-20 11:45 A | 1015FS+1d | 100% |  |  |  | start no earlier than 2026-08-10 08:00 | Зорькин В | 0.25h | 0.25h |
| 1017 | 2.93.3.1.5 | монтаж калориферов |  | 1d? | 2026-10-27 09:00 | 2026-10-27 18:00 | 1016FS+1d |  |  | 95.59d |  | start no earlier than 2026-10-27 09:00 | Некрасов А | 8h |  |
| 1018 | 2.93.3.2 | **монтаж кабель** |  | 62.38d? | 2026-08-17 09:00 A | 2026-10-29 12:00 |  | 15% | 52.78d? | 94.22d |  |  |  | 13h | 2h |
| 1019 | 2.93.3.2.1 | планирование мощности |  | 2h | 2026-08-17 09:00 A | 2026-08-17 11:00 A |  | 100% |  |  |  | start no earlier than 2026-08-17 09:00 | Домоводов К | 2h | 2h |
| 1020 | 2.93.3.2.2 | заявка кабель /щиток |  | 2h | 2026-10-20 09:00 | 2026-10-20 11:00 | 1019 |  |  | 94.22d | 0d | start no earlier than 2026-10-20 09:00 | Зорькин В | 2h |  |
| 1021 | 2.93.3.2.3 | контроль доставка |  | 1h | 2026-10-27 11:00 | 2026-10-27 12:00 | 1020FS+5d |  |  | 94.22d | 0d | start no earlier than 2026-08-10 08:00 | Зорькин В | 1h |  |
| 1022 | 2.93.3.2.4 | монтаж |  | 1d? | 2026-10-28 12:00 | 2026-10-29 12:00 | 1021FS+1d |  |  | 94.22d |  | start no earlier than 2026-10-19 09:00 | Некрасов А | 8h |  |
| 1023 | 2.93.4 | контроль достаточности если не крепить верхние саморезы |  | 15min | 2026-08-13 09:00 A | 2026-08-13 09:15 A |  | 100% |  |  |  | start no earlier than 2026-08-13 09:00 | Домоводов К | 0.25h | 0.25h |
| 1024 | 2.94 | **дверь в мойку сделать герметичный притвор** |  | 1.25d | 2026-08-14 09:00 A | 2026-08-17 11:00 A |  | 100% |  |  |  |  |  | 2.33h | 2.33h |
| 1025 | 2.94.1 | подбор уплотнителя / заказать |  | 20min | 2026-08-14 09:00 A | 2026-08-14 09:20 A |  | 100% |  |  |  | start no earlier than 2026-08-14 09:00 | Домоводов К | 0.33h | 0.33h |
| 1026 | 2.94.2 | монтаж резинки на клей |  | 2h | 2026-08-16 09:00 A | 2026-08-17 11:00 A |  | 100% |  |  |  | start no earlier than 2026-08-16 09:00 | Бобренок В | 2h | 2h |
| 1027 | 2.95 | **пролистыватель с апликтором заказ** |  | 49d? | 2026-08-10 09:00 A | 2026-10-05 18:00 |  | 12% | 42.93d? | 112.59d |  |  |  | 9.42h | 1.17h |
| 1028 | 2.95.1 | получить договор + счет |  | 1h | 2026-08-10 09:00 A | 2026-08-10 10:00 A |  | 100% |  |  |  | start no earlier than 2026-08-10 08:00 | Зорькин В | 1h | 1h |
| 1029 | 2.95.2 | **согласвоание договор** |  | 3.02d | 2026-08-12 09:00 A | 2026-08-17 09:10 A |  | 100% |  |  |  |  |  | 0.17h | 0.17h |
| 1030 | 2.95.2.1 | подать договор |  | 5min | 2026-08-12 09:00 A | 2026-08-12 09:05 A |  | 100% |  |  |  | start no earlier than 2026-08-12 09:00 | Домоводов К | 0.08h | 0.08h |
| 1031 | 2.95.2.2 | контроль |  | 5min | 2026-08-17 09:05 A | 2026-08-17 09:10 A | 1030FS+5d | 100% |  |  |  | start no earlier than 2026-08-12 09:00 | Домоводов К | 0.08h | 0.08h |
| 1032 | 2.95.3 | оплата подать счет | milestone | 0d | 2026-08-12 09:00 A | 2026-08-12 09:00 A |  | 100% |  |  |  | start no earlier than 2026-08-12 09:00 | Домоводов К |  |  |
| 1033 | 2.95.4 | доставка конетроль |  | 15min | 2026-09-18 09:00 | 2026-09-18 09:15 | 1032FS+30d |  |  | 127.56d | 14.97d | start no earlier than 2026-08-10 08:00 | Зорькин В | 0.25h |  |
| 1034 | 2.95.5 | монтаж |  | 1d? | 2026-10-05 09:00 | 2026-10-05 18:00 | 1033FS+1d |  |  | 112.59d |  | start no earlier than 2026-10-05 09:00 | Тимофеев В | 8h |  |

| ID | WBS | Task | Type | Duration | Start | Finish | Predecessors | Complete | Remaining | Total slack | Free slack | Constraint | Resources | Work | Actual work |
| --- | --- | --- | --- | --- | --- | --- | --- | --- | --- | --- | --- | --- | --- | --- | --- |
| 1035 | 2.96 | **вентиляция мойка приточно-вытяжная 1ц 2 линия** |  | 9.19d | 2026-08-13 09:00 A | 2026-08-26 10:30 A |  | 100% |  |  |  |  |  | 20h | 20h |
| 1036 | 2.96.1 | монтаж вытяжной трубы в колектор. После переноса вентиляторов отключен |  | 4h | 2026-08-17 09:00 A | 2026-08-17 13:00 A |  | 100% |  |  |  | start no earlier than 2026-08-16 09:00 | Бобренок В | 4h | 4h |
| 1037 | 2.96.2 | составить проект |  | 4h | 2026-08-13 09:00 A | 2026-08-13 13:00 A |  | 100% |  |  |  | start no earlier than 2026-08-13 09:00 | Домоводов К | 4h | 4h |
| 1038 | 2.96.3 | заявка материалы |  | 1h | 2026-08-24 09:00 A | 2026-08-24 10:00 A | 1037FS+7d | 100% |  |  |  | start no earlier than 2026-08-24 09:00 | Зорькин В | 1h | 1h |
| 1039 | 2.96.4 | контроль поставки |  | 30min | 2026-08-25 10:00 A | 2026-08-25 10:30 A | 1038FS+1d | 100% |  |  |  | start no earlier than 2026-08-10 08:00 | Зорькин В | 0.5h | 0.5h |
| 1040 | 2.96.5 | монтаж |  | 1d | 2026-08-25 10:30 A | 2026-08-26 10:30 A | 1039 | 100% |  |  |  | start no earlier than 2026-08-10 08:00 | Некрасов А; Тимофеев В | 10.5h | 10.5h |
| 1041 | 2.97 | **выполнить обрамление двери в охладитель, что бы скрыть поверхность** |  | 27.25d | 2026-08-14 09:00 A | 2026-09-17 11:00 A |  | 100% |  |  |  |  |  | 4.5h | 4.5h |
| 1042 | 2.97.1 | заказ декоративный уголок |  | 15min | 2026-08-14 09:00 A | 2026-08-14 09:15 A |  | 100% |  |  |  | start no earlier than 2026-08-14 09:00 | Домоводов К | 0.25h | 0.25h |
| 1043 | 2.97.2 | контроль доставки |  | 15min | 2026-09-09 09:00 A | 2026-09-09 09:15 A | 1042FS+5d | 100% |  |  |  | start no earlier than 2026-09-09 09:00 | Зорькин В | 0.25h | 0.25h |
| 1044 | 2.97.3 | обить дверь в охладитель профлистом оцнк |  | 2h | 2026-09-17 09:00 A | 2026-09-17 11:00 A |  | 100% |  |  |  | start no earlier than 2026-09-17 09:00 | Некрасов А | 2h | 2h |
| 1045 | 2.97.4 | монтаж |  | 2h | 2026-09-03 09:00 A | 2026-09-03 11:00 A | 1043FS+1d | 100% |  |  |  | start no earlier than 2026-09-03 09:00 | Труфанов А | 2h | 2h |
| 1046 | 2.98 | **ремонт осушителя компрессора 2ц** |  | 47.31d | 2026-08-09 09:00 A | 2026-10-04 11:30 |  | 82% | 8.63d | 114.28d |  |  |  | 13.58h | 11.33h |
| 1047 | 2.98.1 | проверка давления фреона |  | 1h | 2026-09-17 09:00 A | 2026-09-17 10:00 A |  | 100% |  |  |  | start no earlier than 2026-09-17 09:00 | Труфанов А; Некрасов А | 2h | 2h |
| 1048 | 2.98.2 | заявка фреон 134а |  | 15min | 2026-09-25 09:00 A | 2026-09-25 09:15 A | 1047 | 100% |  |  |  | start no earlier than 2026-09-25 09:00 | Зорькин В | 0.25h | 0.25h |
| 1049 | 2.98.3 | доставка контроль |  | 15min | 2026-10-02 09:15 | 2026-10-02 09:30 | 1048FS+7d |  |  | 114.28d | 0d | start no earlier than 2026-09-18 08:00 | Зорькин В | 0.25h |  |
| 1050 | 2.98.4 | заправить хладогент |  | 2h | 2026-10-04 09:30 | 2026-10-04 11:30 | 1049FS+1d |  |  | 114.28d |  | start no earlier than 2026-10-01 09:00 | Некрасов А | 2h |  |
| 1051 | 2.98.5 | фото шильдик для поиск в продаже |  | 10min | 2026-08-11 09:00 A | 2026-08-11 09:10 A |  | 100% |  |  |  | start no earlier than 2026-08-11 09:00 | Некрасов А | 0.17h | 0.17h |
| 1052 | 2.98.6 | связь с сервисным отделом получить дату |  | 1h | 2026-08-12 09:00 A | 2026-08-12 10:00 A |  | 100% |  |  |  | start no earlier than 2026-08-12 09:00 | Зорькин В | 1h | 1h |
| 1053 | 2.98.7 | фото шильдик для поиск в продаже |  | 1h | 2026-08-12 09:00 A | 2026-08-12 10:00 A |  | 100% |  |  |  | start no earlier than 2026-08-12 09:00 | Зорькин В | 1h | 1h |
| 1054 | 2.98.8 | слить конденсат с компрессора, чистка фильтров | manual | 3h | 2026-08-09 09:00 A | 2026-08-09 12:00 A |  | 100% |  |  |  | start no earlier than 2026-08-09 09:00 | Бобренок В | 3h | 3h |
| 1055 | 2.98.9 | попробовать смазать подшипники вентилятора осушителя |  | 15min | 2026-08-18 09:00 A | 2026-08-18 09:15 A |  | 100% |  |  |  | start no earlier than 2026-08-18 09:00 | Некрасов А | 0.25h | 0.25h |
| 1056 | 2.98.10 | замер размеров вентилятора |  | 15min | 2026-08-18 09:00 A | 2026-08-18 09:15 A |  | 100% |  |  |  | start no earlier than 2026-08-18 09:00 | Зорькин В; Некрасов А | 0.5h | 0.5h |
| 1057 | 2.98.11 | подбор аналога вентилятора погабариту |  | 1h | 2026-08-18 09:15 A | 2026-08-18 10:15 A | 1056 | 100% |  |  |  | start no earlier than 2026-08-14 09:00 | Зорькин В | 1h | 1h |
| 1058 | 2.98.12 | заменить вентилятор на осушителе (от охладителя, лежит на компрессоре). В 6 утра остановка |  | 2h | 2026-08-19 09:00 A | 2026-08-19 11:00 A |  | 100% |  |  |  | start no earlier than 2026-08-19 09:00 | Бобренок В | 2h | 2h |
| 1059 | 2.98.13 | Заявка в сервис не работает осушитель |  | 10min | 2026-08-31 09:00 A | 2026-08-31 09:10 A |  | 100% |  |  |  | start no earlier than 2026-08-31 09:00 | Зорькин В | 0.17h | 0.17h |
| 1060 | 2.99 | установить защитные крышки на клемник вентиляторов охладителя. От 3д печать | manual | 4h | 2026-09-16 09:00 A | 2026-09-16 13:00 A |  | 100% |  |  |  | start no earlier than 2026-09-16 09:00 | Труфанов А | 4h | 4h |
| 1061 | 2.100 | заменить резинки на красном баке (выдать, если будет остановка, поменять) | manual | 1h | 2026-08-31 09:00 A | 2026-08-31 10:00 A |  | 100% |  |  |  | start no earlier than 2026-08-31 09:00 | Бобренок В | 1h | 1h |
| 1062 | 2.101 | на приемной горловине красного смесителя закрутить второй ленточный хомут, чтобы не выпадала мука |  | 1h | 2026-08-06 09:00 A | 2026-08-06 10:00 A |  | 100% |  |  |  | start no earlier than 2026-08-06 08:00 | Труфанов А | 1h | 1h |

| ID | WBS | Task | Type | Duration | Start | Finish | Predecessors | Complete | Actual start | Actual finish | Constraint | Resources | Work | Actual work |
| --- | --- | --- | --- | --- | --- | --- | --- | --- | --- | --- | --- | --- | --- | --- |
| 1063 | 2.102 | **закрутить болты на петлях двери печи** |  | 0.12d | 2026-09-02 09:00 A | 2026-09-02 10:00 A |  | 100% |  |  |  |  | 1h | 1h |
| 1064 | 2.102.1 | попробовать закрутить на винтовые заклепки |  | 1h | 2026-09-02 09:00 A | 2026-09-02 10:00 A |  | 100% |  |  | start no earlier than 2026-09-04 09:00 | Некрасов А | 1h | 1h |
| 1065 | 2.103 | установка фильтров на подачу жира (осн. + резерв) |  | 2h | 2026-08-06 08:00 A | 2026-08-06 11:00 A |  | 100% |  |  | start no earlier than 2026-08-06 08:00 | Тимофеев В | 2h | 2h |
| 1066 | 2.104 | эксперимент с лейкой подача жиров |  | 1h | 2026-08-06 08:00 A | 2026-08-06 10:00 A |  | 100% |  |  | start no earlier than 2026-08-06 08:00 | Тимофеев В | 1h | 1h |
| 1067 | 2.105 | **по аналогии второй линии насверлить сверлом 1 мм отверстия в трубке для жиров** |  | 0.12d | 2026-08-06 09:00 A | 2026-08-06 10:00 A |  | 100% |  |  |  | Макаревич А | 2h | 2h |
| 1068 | 2.105.1 | установка трубки на жиры |  | 1h | 2026-08-06 09:00 A | 2026-08-06 10:00 A |  | 100% |  |  | start no earlier than 2026-08-06 09:00 | Тимофеев В | 1h | 1h |
| 1069 | 2.106 | поломоечная машинка вырезать из силикона шторку захвата воды |  | 2h | 2026-08-03 08:00 A | 2026-08-03 11:00 A |  | 100% |  |  | start no earlier than 2026-08-03 08:00 | Бобренок В | 2h | 2h |
| 1070 | 2.107 | **втулка фторопласт заказать 26х44х5** |  | 1d? | 2026-08-04 09:00 A | 2026-08-04 18:00 A |  | 100% |  |  |  | Шуранов Ю | 8h | 8h |
| 1071 | 2.107.1 | счет доставка |  | 1d? | 2026-08-04 09:00 A | 2026-08-04 18:00 A |  | 100% |  |  | start no earlier than 2026-08-04 08:00 |  |  |  |
| 1072 | 2.108 | **посмотреть вентилятор Сапелина у нас в кабинете (не работает)** |  | 1d? | 2026-08-04 09:00 A | 2026-08-04 18:00 A |  | 100% |  |  |  | Бобренок В | 8h | 8h |
| 1073 | 2.108.1 | сгорел двигатель |  | 1d? | 2026-08-04 09:00 A | 2026-08-04 18:00 A |  | 100% |  |  | start no earlier than 2026-08-04 08:00 |  |  |  |
| 1074 | 2.109 | слить конденсат с компрессора |  | 0.5h | 2026-08-02 09:00 A | 2026-08-03 09:30 A |  | 100% |  |  | start no earlier than 2026-08-02 09:00 | Бобренок В | 0.5h | 0.5h |
| 1075 | 2.110 | **продолжить изготовление приемной горловины по аналогии 3 ц.** |  | 4h? | 2026-08-10 09:00 | 2026-08-10 13:00 |  | 100% | 2026-07-29 09:00 | 2026-09-04 11:00 |  |  | 14.08h | 14.08h |
| 1076 | 2.110.1 | заказать прут нерж. |  | 1d? | 2026-07-29 09:00 A | 2026-07-29 18:00 A |  | 100% |  |  | start no earlier than 2026-07-29 09:00 | Зорькин В | 8h | 8h |
| 1077 | 2.110.2 | контроль доставка |  | 5min | 2026-08-18 09:00 A | 2026-08-18 09:05 A |  | 100% |  |  | start no earlier than 2026-08-18 09:00 | Зорькин В | 0.08h | 0.08h |
| 1078 | 2.110.3 | изготовление / установка |  | 4h | 2026-08-20 09:00 A | 2026-08-20 13:00 A | 1077 | 100% |  |  | start no earlier than 2026-08-20 09:00 | Макаревич А | 4h | 4h |
| 1079 | 2.110.4 | Корректировка горловины, сделать более плотные зазоры, посмотреть по месту |  | 2h | 2026-09-04 09:00 A | 2026-09-04 11:00 A |  | 100% |  |  | start no earlier than 2026-09-04 09:00 | Макаревич А | 2h | 2h |
| 1080 | 2.111 | прикрутить лотки охладителя, чтобы не задевали сетку (лишние отверстия заварить) | manual | 2h | 2026-08-03 09:00 A | 2026-08-03 11:00 A |  | 100% |  |  | start no earlier than 2026-08-03 09:00 | Бобренок В | 2h | 2h |
| 1081 | 2.112 | чистка фильтров кондиционеров | manual | 1h | 2026-08-01 09:00 A | 2026-08-01 10:00 A |  | 100% |  |  | start no earlier than 2026-08-01 09:00 | Бундин В | 1h | 1h |
| 1082 | 2.113 | слить конденсат с компрессора |  | 1h | 2026-07-30 08:00 A | 2026-07-30 10:00 A |  | 100% |  |  | start no earlier than 2026-07-30 08:00 | Дедов В | 1h | 1h |
| 1083 | 2.114 | слив конденсата с кондиционеров прочистить трубу | manual | 2h | 2026-08-01 09:00 A | 2026-08-01 11:00 A |  | 100% |  |  | start no earlier than 2026-08-01 09:00 | Бундин В | 2h | 2h |
| 1084 | 2.115 | Настройка частотника питателя (созвон с Валентином) |  | 1h | 2026-07-31 09:00 A | 2026-07-31 10:00 A |  | 100% |  |  | start no earlier than 2026-07-31 09:00 | Бундин В | 1h | 1h |
| 1085 | 2.116 | дверь металлическая зона выдачи ГП ревизия, плоход закрывается |  | 1h | 2026-07-15 09:00 A | 2026-07-15 10:00 A |  | 100% |  |  | start no earlier than 2026-07-15 09:00 | Бундин В | 1h | 1h |
| 1086 | 2.117 | крепление доводчик дверь входная |  | 1h | 2026-07-15 09:00 A | 2026-07-15 10:00 A |  | 100% |  |  | start no earlier than 2026-07-15 09:00 | Бундин В | 1h | 1h |
| 1087 | 2.118 | снять меющийся, установить новый прайсчекер (лежит у мастеров) |  | 1h | 2026-07-15 09:00 A | 2026-07-15 10:00 A |  | 100% |  |  | start no earlier than 2026-07-15 09:00 | Бундин В | 1h | 1h |
| 1088 | 2.119 | ремонт кронштейна датчик давления |  | 30min | 2026-07-10 09:00 A | 2026-07-10 09:30 A |  | 100% |  |  | start no earlier than 2026-07-10 09:00 | Бобренок В | 0.5h | 0.5h |
| 1089 | 2.120 | замерить демонтированные шнеки, заполнить ьабличку Зорькина |  | 1h | 2026-07-11 09:00 A | 2026-07-13 10:00 A |  | 100% |  |  | start no earlier than 2026-07-11 09:00 | Макаревич А | 1h | 1h |
| 1090 | 2.121 | обшить входной проем п-образным профилем (на складе лежит) | manual | 3h | 2026-07-08 09:00 A | 2026-07-08 12:00 A |  | 100% |  |  | start no earlier than 2026-07-08 09:00 | Некрасов А; Тимофеев В | 6h | 6h |
| 1091 | 2.122 | чистка воздушных клапанов на септике |  | 1d? | 2026-07-02 09:00 A | 2026-07-02 18:00 A |  | 100% |  |  | start no earlier than 2026-07-02 09:00 | Олег | 8h | 8h |
| 1092 | 2.123 | закрепить щиток транспортера у стены на фасовке, малый дозатор) | manual | 1h | 2026-07-04 09:00 A | 2026-07-04 10:00 A |  | 100% |  |  | start no earlier than 2026-07-04 09:00 | Дедов В | 1h | 1h |

| ID | WBS | Task | Type | Duration | Start | Finish | Complete | Constraint | Resources | Work | Actual work |
| --- | --- | --- | --- | --- | --- | --- | --- | --- | --- | --- | --- |
| 1093 | 2.124 | **под экструдером масло- ревизия откуда** |  | 0.12d | 2026-07-03 09:00 A | 2026-07-03 10:00 A | 100% |  |  | 1h | 1h |
| 1094 | 2.124.1 | заменить шланг 20мм (лежит черный на стеллаже справа, где кабель) при остановке- согласовать с мастером |  | 1h | 2026-07-03 09:00 A | 2026-07-03 10:00 A | 100% | start no earlier than 2026-07-03 09:00 | Макаревич А | 1h | 1h |
| 1095 | 2.125 | чистка труб сброса конденсата с кондиционеров |  | 2h | 2026-06-30 09:00 A | 2026-06-30 11:00 A | 100% | start no earlier than 2026-06-30 09:00 | Некрасов А; Тимофеев В | 2h | 2h |
| 1096 | 2.126 | чистка всех фильтров на кондиционеры, разобраться с питанием внутреннего блока |  | 1d? | 2026-06-29 09:00 A | 2026-06-29 18:00 A | 100% | start no earlier than 2026-06-29 09:00 |  |  |  |
| 1097 | 2.127 | ТО бестром |  | 2h | 2026-06-30 09:00 A | 2026-06-30 11:00 A | 100% | start no earlier than 2026-06-30 09:00 | Бундин В | 2h | 2h |
| 1098 | 2.128 | промыть внешние блоки кондиционеров |  | 3h | 2026-06-26 09:00 A | 2026-06-26 12:00 A | 100% | start no earlier than 2026-06-26 09:00 | Тимофеев В; Дедов В | 6h | 6h |
| 1099 | 2.129 | вернуть кожух защиты на прекондиционер (подогнать в размер) на остановке линии |  | 2h | 2026-06-24 09:00 A | 2026-06-24 11:00 A | 100% | start no earlier than 2026-06-24 09:00 | Труфанов А | 2h | 2h |
| 1100 | 2.130 | подключение тепловой защиты на приточке и вытяжке |  | 2h | 2026-06-23 08:00 A | 2026-06-23 11:00 A | 100% | start no earlier than 2026-06-23 08:00 | Тимофеев В; Макаревич А | 4h | 4h |
| 1101 | 2.131 | заменить фильтр приточка 2 этаж и указать кол-во остатка на складе |  | 1h | 2026-06-20 09:00 A | 2026-06-22 10:00 A | 100% | start no earlier than 2026-06-20 09:00 | Дедов В | 1h | 1h |
| 1102 | 2.132 | сделать защиту жировика от холода (изготовить из сенгвич панели на навесках 2ц.) жировик расскажет | manual | 2h | 2026-06-21 09:00 A | 2026-06-21 11:00 A | 100% | start no earlier than 2026-06-21 09:00 | Бундин В | 2h | 2h |
| 1103 | 2.133 | проверка теко 0,4 -пакет запаенный |  | 1h | 2026-06-18 08:00 A | 2026-06-18 10:00 A | 100% | start no earlier than 2026-06-18 08:00 | Дедов В | 1h | 1h |
| 1104 | 2.134 | подключение датчика давления через гидрошланг |  | 1h | 2026-07-09 09:00 A | 2026-07-09 10:00 A | 100% | start no earlier than 2026-07-09 09:00 | Бундин В | 1h | 1h |
| 1105 | 2.135 | чистка парогенератора |  | 2h | 2026-06-18 08:00 A | 2026-06-18 11:00 A | 100% | start no earlier than 2026-06-18 08:00 | Тимофеев В | 2h | 2h |
| 1106 | 2.136 | слив конденсата с компрессора и продуть радиаторы и фильтры |  | 1h | 2026-06-20 09:00 A | 2026-06-22 10:00 A | 100% | start no earlier than 2026-06-20 09:00 | Бобренок В | 1h | 1h |
| 1107 | 2.137 | проверить, есть ли давление во всех гидроаккумуляторах на отоплении по цеху, зафиксировать с порванными мембранами |  | 2h | 2026-06-11 09:00 A | 2026-06-11 11:00 A | 100% | start no earlier than 2026-06-11 09:00 | Дедов В | 2h | 2h |
| 1108 | 2.138 | дверь охладителя и угол - прикрутить наружний уголок 20х50 и 50х50, чтобы не резали руки (уголок на входе напротив ворот в синем складе) |  | 3h | 2026-06-12 09:00 A | 2026-06-12 12:00 A | 100% | start no earlier than 2026-06-12 09:00 | Дедов В | 3h | 3h |
| 1109 | 2.139 | взять на складе специальный п-образный профиль и обшить дверной проем вход в охладитель | manual | 2h | 2026-07-05 09:00 A | 2026-07-05 11:00 A | 100% | start no earlier than 2026-07-05 09:00 |  |  |  |
| 1110 | 2.140 | проверка гидроаккумулятора на водоподготовке |  | 0.5h | 2026-06-11 09:00 A | 2026-06-11 09:30 A | 100% | start no earlier than 2026-06-11 09:00 | Дедов В | 0.5h | 0.5h |
| 1111 | 2.141 | чистка парогенератора |  | 2h | 2026-06-11 09:00 A | 2026-06-11 11:00 A | 100% | start no earlier than 2026-06-11 09:00 | Тимофеев В | 2h | 2h |
| 1112 | 2.142 | **посмотреть на желтом складе шибер, если найдем устанавливаем на аквариум зона экструдера** |  | 0.12d | 2026-06-12 09:00 A | 2026-06-12 10:00 A | 100% |  |  | 1h | 1h |
| 1113 | 2.142.1 | монтаж воздуховод под углом на шибер- настройка с операторами направление обдува |  | 1h | 2026-06-12 09:00 A | 2026-06-12 10:00 A | 100% | start no earlier than 2026-06-12 09:00 | Бундин В | 1h | 1h |
| 1114 | 2.143 | **ворота выход готовой продукции (прикрутить ролик, ролик у нас в кабинете)** |  | 1d? | 2026-06-11 09:00 A | 2026-06-11 18:00 A | 100% |  |  | 8h | 8h |
| 1115 | 2.143.1 | выкл. Ручной режим |  | 1d? | 2026-06-11 09:00 A | 2026-06-11 18:00 A | 100% | start no earlier than 2026-06-11 09:00 | Дедов В | 8h | 8h |
| 1116 | 2.144 | промерить шнеки / гильзы износ. Маркировать |  | 1h | 2026-07-08 09:00 A | 2026-07-08 10:00 A | 100% | start no earlier than 2026-07-08 09:00 | Зорькин В | 1h | 1h |
| 1117 | 2.145 | сверлить сетку от фильеры, сверлом на станке, все отверстия. |  | 4h | 2026-06-06 09:00 A | 2026-06-08 13:00 A | 100% | start no earlier than 2026-06-06 09:00 | Бобренок В | 4h | 4h |

| ID | WBS | Task | Type | Duration | Start | Finish | Predecessors | Complete | Actual start | Actual finish | Constraint | Resources | Work | Actual work |
| --- | --- | --- | --- | --- | --- | --- | --- | --- | --- | --- | --- | --- | --- | --- |
| 1118 | 2.146 | **заменаить сальник редуктора транспортер №3** |  | 0.12d | 2026-06-18 09:00 A | 2026-06-18 10:00 A |  | 100% |  |  |  |  | 2h | 2h |
| 1119 | 2.146.1 | заменаить редутор из зип |  | 1h | 2026-06-18 09:00 A | 2026-06-18 10:00 A |  | 100% |  |  | start no earlier than 2026-06-18 09:00 | Тимофеев В | 1h | 1h |
| 1120 | 2.146.2 | замена сальник на снятом |  | 1h | 2026-06-18 09:00 A | 2026-06-18 10:00 A |  | 100% |  |  | start no earlier than 2026-06-19 09:00 | Тимофеев В | 1h | 1h |
| 1121 | 2.147 | законтрогаить шпильки-ножки запайщиков |  | 1h | 2026-06-06 09:00 A | 2026-06-08 10:00 A |  | 100% |  |  | start no earlier than 2026-06-06 09:00 | Бобренок В | 1h | 1h |
| 1122 | 2.148 | **нория квадропак -устранить просыпание** |  | 1d? | 2026-06-04 09:00 A | 2026-06-04 18:00 A |  | 100% |  |  |  | Тимофеев В | 16h | 16h |
| 1123 | 2.148.1 | добавить частоту частотника до 70 на норию |  | 1d? | 2026-06-04 09:00 A | 2026-06-04 18:00 A |  | 100% |  |  | start no earlier than 2026-06-04 09:00 | Дедов В | 8h | 8h |
| 1124 | 2.149 | Замена шнеков (усиленные) - по уровню |  | 4h | 2026-06-04 09:00 A | 2026-06-04 13:00 A |  | 100% |  |  | start no earlier than 2026-06-04 09:00 | Тимофеев В | 4h | 4h |
| 1125 | 2.150 | монтаж воздуховод приточный в площадку загрузки смесителя |  | 3h | 2026-06-05 09:00 A | 2026-06-05 12:00 A |  | 100% |  |  | start no earlier than 2026-06-05 09:00 | Некрасов А | 3h | 3h |
| 1126 | 2.151 | очистка вентилятора окно экструдер |  | 40min | 2026-06-04 09:00 A | 2026-06-04 09:40 A |  | 100% |  |  | start no earlier than 2026-06-04 09:00 | Некрасов А; Бундин В | 1.33h | 1.33h |
| 1127 | 2.152 | **доп освещение зона охладитель** |  | 4.75d? | 2026-06-09 09:00 | 2026-06-15 16:00 |  | 100% | 2026-06-10 09:00 | 2026-08-06 11:00 |  |  | 12.67h | 12.67h |
| 1128 | 2.152.1 | спланировать монтаж / проверить наличие матералов |  | 20min | 2026-06-25 09:00 A | 2026-06-25 09:20 A |  | 100% |  |  | start no earlier than 2026-06-25 09:00 | Шуранов Ю; Дедов В | 0.67h | 0.67h |
| 1129 | 2.152.2 | заказать |  | 1d? | 2026-06-10 09:00 A | 2026-06-10 18:00 A |  | 100% |  |  | start no earlier than 2026-06-10 09:00 | Шуранов Ю | 8h | 8h |
| 1130 | 2.152.3 | монтаж |  | 2h | 2026-08-06 09:00 A | 2026-08-06 11:00 A | 1128 | 100% |  |  | start no earlier than 2026-08-06 09:00 | Тимофеев В; Бундин В | 4h | 4h |
| 1131 | 2.153 | отключить двигатель зиплока бестром |  | 1h | 2026-06-12 09:00 A | 2026-06-12 10:00 A |  | 100% |  |  | start no earlier than 2026-06-12 09:00 | Бундин В | 1h | 1h |
| 1132 | 2.154 | ж гардероб душ кабина осмотр гидрозатвор - сильный запах |  | 2h | 2026-05-30 09:00 A | 2026-06-01 11:00 A |  | 100% |  |  | start no earlier than 2026-05-30 09:00 | Бобренок В | 2h | 2h |
| 1133 | 2.155 | ремонт кресло , паук находится на складе у Веры |  | 1h | 2026-06-13 09:00 A | 2026-06-15 10:00 A |  | 100% |  |  | start no earlier than 2026-06-13 09:00 | Бобренок В | 1h | 1h |
| 1134 | 2.156 | ревизия нихром запайщик |  | 1h | 2026-05-29 09:00 A | 2026-05-29 10:00 A |  | 100% |  |  | start no earlier than 2026-05-29 08:00 | Бундин В | 1h | 1h |
| 1135 | 2.157 | штабелер 2ц ревизия колес |  | 1h | 2026-06-01 09:00 A | 2026-06-01 10:00 A |  | 100% |  |  | start no earlier than 2026-06-01 09:00 | Макаревич А | 1h | 1h |
| 1136 | 2.158 | **ремонт эл котел №3 охладитель** |  | 79.25d? | 2026-06-05 09:00 A | 2026-09-19 11:00 A |  | 100% |  |  |  |  | 24.25h | 24.25h |
| 1137 | 2.158.1 | заказать плату |  | 1d? | 2026-07-15 09:00 A | 2026-07-15 18:00 A |  | 100% |  |  | start no earlier than 2026-07-15 09:00 | Зорькин В | 8h | 8h |
| 1138 | 2.158.2 | замена силовой платы зота в районе мойки экструдера (плата на складе) -проверка | manual | 2h | 2026-08-09 09:00 A | 2026-08-09 11:00 A |  | 100% |  |  | start no earlier than 2026-08-09 09:00 | Бобренок В | 2h | 2h |
| 1139 | 2.158.3 | котел №3 проверка платы силовой управления тенами (после откл управления перегрелся пошел дым) на складе есть платы 2 шт. для ЗОТА. Слава плату заменил грешит на д температуры |  | 2h | 2026-09-01 09:00 A | 2026-09-01 11:00 A |  | 100% |  |  | start no earlier than 2026-09-01 09:00 | Дедов В | 2h | 2h |
| 1140 | 2.158.4 | Замена силовой платы, где сгорела 1 ТТР |  | 2h | 2026-08-31 08:00 A | 2026-08-31 11:00 A |  | 100% |  |  | start no earlier than 2026-08-31 08:00 | Дедов В | 2h | 2h |
| 1141 | 2.158.5 | Не работает блок тенов, заказать |  | 10min | 2026-09-01 09:00 A | 2026-09-01 09:10 A |  | 100% |  |  | start no earlier than 2026-09-01 08:00 | Зорькин В | 0.17h | 0.17h |
| 1142 | 2.158.6 | Контроль доставки |  | 5min | 2026-09-09 09:00 A | 2026-09-09 09:05 A |  | 100% |  |  | start no earlier than 2026-09-09 09:00 | Зорькин В | 0.08h | 0.08h |
| 1143 | 2.158.7 | замена блок тенов |  | 2h | 2026-09-19 09:00 A | 2026-09-19 11:00 A |  | 100% |  |  | start no earlier than 2026-09-19 09:00 | Дедов В | 2h | 2h |
| 1144 | 2.158.8 | заказать плату управления |  | 1d? | 2026-06-05 09:00 A | 2026-06-05 18:00 A |  | 100% |  |  | start no earlier than 2026-06-05 09:00 | Зорькин В | 8h | 8h |
| 1145 | 2.159 | замена задних подшипников на прекондиционере (посмотреть итальянские на складе) |  | 6h | 2026-05-26 09:00 A | 2026-05-26 16:00 A |  | 100% |  |  | start no earlier than 2026-05-26 09:00 | Тимофеев В; Некрасов А | 12h | 12h |
| 1146 | 2.160 | перемотать трубы скотчем серым и по низу стык улиток "загерметизировать" |  | 2h | 2026-05-25 08:00 A | 2026-05-25 11:00 A |  | 100% |  |  | start no earlier than 2026-05-25 08:00 | Макаревич А | 2h | 2h |

| ID | WBS | Task | Type | Duration | Start | Finish | Complete | Actual finish | Constraint | Resources | Work | Actual work |
| --- | --- | --- | --- | --- | --- | --- | --- | --- | --- | --- | --- | --- |
| 1147 | 2.161 | **изготовить мойка малая из нерж** |  | 0.5d | 2026-06-01 08:00 A | 2026-06-01 13:00 A | 100% |  |  | Макаревич А | 8h | 8h |
| 1148 | 2.161.1 | подключить мойку на месте (по телефону обсудим) |  | 4h | 2026-06-01 08:00 A | 2026-06-01 13:00 A | 100% |  | start no earlier than 2026-06-01 08:00 | Макаревич А | 4h | 4h |
| 1149 | 2.162 | **дополнительное освещение в зоне жиров** |  | 6.5d | 2026-05-26 09:00 A | 2026-06-01 13:00 | 100% | 2026-06-04 09:30 |  |  | 5h | 5h |
| 1150 | 2.162.1 | заказ светильников |  | 1h | 2026-05-26 09:00 A | 2026-05-26 10:00 A | 100% |  | start no earlier than 2026-05-26 09:00 | Шуранов Ю | 1h | 1h |
| 1151 | 2.162.2 | монтаж |  | 4h | 2026-06-01 09:00 A | 2026-06-01 13:00 A | 100% |  | start no earlier than 2026-06-01 09:00 | Макаревич А | 4h | 4h |
| 1152 | 2.162.3 | подключить к автомату на мойке |  | 0.5h | 2026-06-04 09:00 A | 2026-06-04 09:30 A | 100% |  | start no earlier than 2026-06-04 09:00 |  |  |  |
| 1153 | 2.163 | подключить пк мастеров через ИБП (согласовать с мастером 1 цеха) |  | 1h | 2026-05-25 09:00 A | 2026-05-25 10:00 A | 100% |  | start no earlier than 2026-05-25 08:00 | Шуранов Ю | 1h | 1h |
| 1154 | 2.164 | заменить помпу на термопоте в кухне |  | 1h | 2026-05-27 09:00 A | 2026-05-27 10:00 A | 100% |  | start no earlier than 2026-05-27 09:00 | Дедов В | 1h | 1h |
| 1155 | 2.165 | лопнул шланг от насосной станции до редуктора- заменить |  | 1h | 2026-05-25 08:00 A | 2026-05-25 10:00 A | 100% |  | start no earlier than 2026-05-25 08:00 | Макаревич А | 1h | 1h |
| 1156 | 2.166 | установить влагоотделитель на квадропак |  | 1h | 2026-05-25 08:00 A | 2026-05-25 10:00 A | 100% |  | start no earlier than 2026-05-25 08:00 | Дедов В | 1h | 1h |
| 1157 | 2.167 | закрепить монтажную коробку в коридоре до жировика слева, от кондиционера |  | 1h | 2026-05-22 09:00 A | 2026-05-22 10:00 A | 100% |  | start no earlier than 2026-05-22 09:00 | Бобренок В | 1h | 1h |
| 1158 | 2.168 | закрепить на доп. Клипсы трубу-воздух к стене за бестромом |  | 1h | 2026-05-23 09:00 A | 2026-05-25 10:00 A | 100% |  | start no earlier than 2026-05-23 09:00 | Бобренок В | 1h | 1h |
| 1159 | 2.169 | заменить сетку печки (находиться в слесарке) | manual | 3h | 2026-05-24 09:00 A | 2026-05-24 12:00 A | 100% |  | start no earlier than 2026-05-24 09:00 | Макаревич А | 3h | 3h |
| 1160 | 2.170 | уложить красиво и закрепить гофру от нории до красного смесителя | manual | 2h | 2026-05-24 09:00 A | 2026-05-24 11:00 A | 100% |  | start no earlier than 2026-05-24 09:00 | Макаревич А | 2h | 2h |
| 1161 | 2.171 | взять ножевой узел с желтого склада и фильеры, подготовить и передать во второй цех на экструдер |  | 1h | 2026-05-21 09:00 A | 2026-05-21 10:00 A | 100% |  | start no earlier than 2026-05-21 08:00 | Бундин В | 1h | 1h |
| 1162 | 2.172 | проверить все лотки на охладителе, чтобы не задевали сетку- если нужно поднять. |  | 1h | 2026-05-21 09:00 A | 2026-05-21 10:00 A | 100% |  | start no earlier than 2026-05-21 08:00 | Бундин В | 1h | 1h |
| 1163 | 2.173 | чистка парогенератора, если нужно замена электродов |  | 2h | 2026-05-21 08:00 A | 2026-05-21 11:00 A | 100% |  | start no earlier than 2026-05-21 08:00 | Тимофеев В | 2h | 2h |
| 1164 | 2.174 | чистка фильтра редуктора экструдера, проверка уровня масла |  | 1h | 2026-05-21 08:00 A | 2026-05-21 10:00 A | 100% |  | start no earlier than 2026-05-21 08:00 | Тимофеев В | 1h | 1h |
| 1165 | 2.175 | проверить пневмоцилиндры на встряхивателях квадропака |  | 1h | 2026-05-21 08:00 A | 2026-05-21 10:00 A | 100% |  | start no earlier than 2026-05-21 08:00 | Бобренок В | 1h | 1h |
| 1166 | 2.176 | проверка токов на печи, если просадка проверяем перемычки, тены |  | 1h | 2026-05-21 09:00 A | 2026-05-21 10:00 A | 100% |  | start no earlier than 2026-05-21 08:00 | Некрасов А | 1h | 1h |
| 1167 | 2.177 | коротит на баке жиров все проверить |  | 1h | 2026-05-21 09:00 A | 2026-05-21 10:00 A | 100% |  | start no earlier than 2026-05-21 08:00 |  |  |  |
| 1168 | 2.178 | в зоне фасовки сделать конструкцию, чтобы не выпадала макулатура |  | 6h | 2026-08-31 09:00 A | 2026-08-31 16:00 A | 100% |  | start no earlier than 2026-08-31 09:00 | Макаревич А | 6h | 6h |
| 1169 | 2.179 | закрепить доводчик на входной двери |  | 1h | 2026-05-23 09:00 A | 2026-05-25 10:00 A | 100% |  | start no earlier than 2026-05-23 09:00 | Бундин В | 1h | 1h |
| 1170 | 2.180 | установить розетку для палетооботчика на его колону |  | 2h | 2026-05-18 09:00 A | 2026-05-18 11:00 A | 100% |  | start no earlier than 2026-05-18 09:00 | Дедов В | 2h | 2h |

| ID | WBS | Task | Type | Duration | Start | Finish | Predecessors | Complete | Constraint | Resources | Work | Actual work |
| --- | --- | --- | --- | --- | --- | --- | --- | --- | --- | --- | --- | --- |
| 1171 | 2.181 | **ИБП установить на принтер SAVEMA** |  | 5.25d | 2026-05-19 09:00 A | 2026-05-26 11:00 A |  | 100% |  |  | 3.25h | 3.25h |
| 1172 | 2.181.1 | подбор и заявка ИБП |  | 1h | 2026-05-19 09:00 A | 2026-05-19 10:00 A |  | 100% | start no earlier than 2026-05-19 09:00 | Шуранов Ю | 1h | 1h |
| 1173 | 2.181.2 | контроль поставки |  | 15min | 2026-05-26 09:00 A | 2026-05-26 09:15 A |  | 100% | start no earlier than 2026-05-26 09:00 | Шуранов Ю | 0.25h | 0.25h |
| 1174 | 2.181.3 | монтаж и подключение в шкафу | manual | 2h | 2026-05-26 09:00 A | 2026-05-26 11:00 A | 1173 | 100% | start no earlier than 2026-05-26 09:00 | Дедов В | 2h | 2h |
| 1175 | 2.182 | **переместить на склад ЗИП палет сетка, зарядка АКБ штабелера** |  | 0.12d | 2026-06-01 09:00 A | 2026-06-01 10:00 A |  | 100% |  |  | 1h | 1h |
| 1176 | 2.182.1 | зарядку АКБ переместить в контейнер, она находится в мойке зона экструдера | manual | 1h | 2026-06-01 09:00 A | 2026-06-01 10:00 A |  | 100% | start no earlier than 2026-06-01 09:00 | Макаревич А | 1h | 1h |
| 1177 | 2.183 | **бестром замена линейный подшипник прижима красных ремней** |  | 24.5d | 2026-05-15 09:00 A | 2026-06-18 13:00 A |  | 100% |  |  | 5.25h | 5.25h |
| 1178 | 2.183.1 | заявка |  | 1h | 2026-05-15 09:00 A | 2026-05-15 10:00 A |  | 100% | start no earlier than 2026-05-15 09:00 | Зорькин В | 1h | 1h |
| 1179 | 2.183.2 | доставка контроль |  | 15min | 2026-05-27 10:00 A | 2026-05-27 10:15 A | 1178FS+10d | 100% | start no earlier than 2026-05-14 08:00 | Зорькин В | 0.25h | 0.25h |
| 1180 | 2.183.3 | замена |  | 4h | 2026-06-18 09:00 A | 2026-06-18 13:00 A | 1179 | 100% | start no earlier than 2026-06-18 09:00 | Тимофеев В | 4h | 4h |
| 1181 | 2.184 | осмотр цепи муфты редуктора экструдера |  | 1h | 2026-05-14 09:00 A | 2026-05-14 10:00 A |  | 100% | start no earlier than 2026-05-14 09:00 | Тимофеев В | 1h | 1h |
| 1182 | 2.185 | Линия 3 на жирах нужно поменять колеса на транспортёре, который идет на охладитель |  | 1h | 2026-05-14 09:00 A | 2026-05-14 10:00 A |  | 100% | start no earlier than 2026-05-14 09:00 | Макаревич А | 1h | 1h |
| 1183 | 2.186 | осмотр прекондиционер "звон" |  | 30min | 2026-05-14 09:00 A | 2026-05-14 09:30 A |  | 100% | start no earlier than 2026-05-14 09:00 | Тимофеев В | 0.5h | 0.5h |
| 1184 | 2.187 | **заменить гофра унитаз правый отсек** |  | 16.12d | 2026-05-13 09:00 A | 2026-06-04 10:00 A |  | 100% |  |  | 41.25h | 41.25h |
| 1185 | 2.187.1 | заявка гофра |  | 15min | 2026-05-13 09:00 A | 2026-05-13 09:15 A |  | 100% | start no earlier than 2026-05-13 09:00 | Зорькин В | 0.25h | 0.25h |
| 1186 | 2.187.2 | доставка |  | 5d | 2026-05-13 09:15 A | 2026-05-20 09:15 A | 1185 | 100% | start no earlier than 2026-05-12 08:00 | Карабанов | 40h | 40h |
| 1187 | 2.187.3 | замена |  | 1h | 2026-06-04 09:00 A | 2026-06-04 10:00 A | 1186 | 100% | start no earlier than 2026-06-04 09:00 | Бобренок В | 1h | 1h |
| 1188 | 2.188 | замена смазка шприц на экструдере |  | 30min | 2026-05-13 09:00 A | 2026-05-13 09:30 A |  | 100% | start no earlier than 2026-05-13 09:00 | Некрасов А | 0.5h | 0.5h |
| 1189 | 2.189 | замена передний подшипник + набивка прекондиционер |  | 1h | 2026-05-14 09:00 A | 2026-05-14 10:00 A |  | 100% | start no earlier than 2026-05-14 09:00 | Тимофеев В | 1h | 1h |
| 1190 | 2.190 | прикрутить лоток выше на 1 ярусе, задевает сетку со сторону редуктора |  | 1h | 2026-05-08 08:00 A | 2026-05-08 10:00 A |  | 100% | start no earlier than 2026-05-08 08:00 | Макаревич А | 1h | 1h |
| 1191 | 2.191 | взять шайбу у нас в кабинете и шлифануть одну сторону |  | 1h | 2026-05-08 09:00 A | 2026-05-08 10:00 A |  | 100% | start no earlier than 2026-05-08 09:00 | Макаревич А | 1h | 1h |
| 1192 | 2.192 | смотровое окно на загрузке прекондиционера установить |  | 4h | 2026-08-25 09:00 A | 2026-08-25 13:00 A |  | 100% | start no earlier than 2026-08-31 09:00 | Тимофеев В | 4h | 4h |
| 1193 | 2.193 | добавить воду в систему отопления зота охладитель |  | 1h | 2026-05-09 09:00 A | 2026-05-11 10:00 A |  | 100% | start no earlier than 2026-05-09 09:00 | Макаревич А | 1h | 1h |
| 1194 | 2.194 | монтаж сетки на палетообмотчике | manual | 4h | 2026-05-14 09:00 A | 2026-05-14 13:00 A |  | 100% | start no earlier than 2026-05-14 09:00 | Некрасов А; Труфанов А | 8h | 8h |
| 1195 | 2.195 | Собрать стул, находится в кабинете мастеров 2 цех |  | 1h | 2026-05-13 09:00 A | 2026-05-13 10:00 A |  | 100% | start no earlier than 2026-05-13 09:00 | Бундин В | 1h | 1h |

| ID | WBS | Task | Type | Duration | Start | Finish | Complete | Actual start | Actual finish | Constraint | Resources | Work | Actual work |
| --- | --- | --- | --- | --- | --- | --- | --- | --- | --- | --- | --- | --- | --- |
| 1196 | 2.196 | **взять у нас на складе инсектицидные светильники и повесить их во 2 цехе, где нет** |  | 1.12d | 2026-05-12 09:00 A | 2026-05-13 10:00 A | 100% |  |  |  |  | 3h | 3h |
| 1197 | 2.196.1 | ремонт |  | 2h | 2026-05-12 09:00 A | 2026-05-12 11:00 A | 100% |  |  | start no earlier than 2026-05-12 09:00 | Бундин В | 2h | 2h |
| 1198 | 2.196.2 | монтаж ламп / заполнить в журнал мастера |  | 1h | 2026-05-13 09:00 A | 2026-05-13 10:00 A | 100% |  |  | start no earlier than 2026-05-13 09:00 | Бундин В | 1h | 1h |
| 1199 | 2.197 | герметиком замазать гофру на унитазах (запах) | manual | 1h | 2026-05-07 08:00 A | 2026-05-07 09:00 A | 100% |  |  | start no earlier than 2026-05-07 08:00 | Бобренок В | 1h | 1h |
| 1200 | 2.198 | заменить фильтр на приточку 2 этаж |  | 1h | 2026-05-07 08:00 A | 2026-05-07 10:00 A | 100% |  |  | start no earlier than 2026-05-07 08:00 | Тимофеев В | 1h | 1h |
| 1201 | 2.199 | ревизия перемычек, тен на печи - замена |  | 4h | 2026-05-07 09:00 A | 2026-05-07 13:00 A | 100% |  |  | start no earlier than 2026-05-07 08:00 | Труфанов А | 4h | 4h |
| 1202 | 2.200 | **повесить на места светильники инсектицидные (замена ламп)** |  | 1d? | 2026-05-11 09:00 | 2026-05-11 18:00 | 100% | 2026-05-12 09:00 | 2026-05-12 11:00 |  |  | 2h | 2h |
| 1203 | 2.200.1 | **заказать досели** |  | 0.25d | 2026-05-12 09:00 A | 2026-05-12 11:00 A | 100% |  |  |  |  | 2h | 2h |
| 1204 | 2.200.1.1 | ремонт не рабочих светильников |  | 2h | 2026-05-12 09:00 A | 2026-05-12 11:00 A | 100% |  |  | start no earlier than 2026-05-12 09:00 | Бундин В | 2h | 2h |
| 1205 | 2.201 | уложить кабель в гофре вдоль экструдера в лоток |  | 2h | 2026-05-04 09:00 A | 2026-05-04 11:00 A | 100% |  |  | start no earlier than 2026-05-04 08:00 | Бундин В | 2h | 2h |
| 1206 | 2.202 | **подготовить ТРМ для парогенератора цех 2** |  | 0d | 2026-05-16 09:00 A | 2026-05-16 10:00 A | 100% |  |  |  | Дедов В | 1h | 1h |
| 1207 | 2.202.1 | установить на остановке ТРМ (который сняли отдать Дедову для восстановления) восстановить кнопку | manual | 1h | 2026-05-16 09:00 A | 2026-05-16 10:00 A | 100% |  |  | start no earlier than 2026-05-16 09:00 | Дедов В | 1h | 1h |
| 1208 | 2.203 | повесить светильники 3шт. |  | 1h | 2026-05-04 09:00 A | 2026-05-04 10:00 A | 100% |  |  | start no earlier than 2026-05-04 08:00 | Труфанов А | 1h | 1h |
| 1209 | 2.204 | монтаж свет на фасовке |  | 8h | 2026-05-05 09:00 A | 2026-05-05 18:00 A | 100% |  |  | start no earlier than 2026-05-05 09:00 | Тимофеев В; Труфанов А | 15h | 15h |
| 1210 | 2.205 | заменить кулер в ШУ на жирах |  | 1h | 2026-04-29 08:00 A | 2026-04-29 10:00 A | 100% |  |  | start no earlier than 2026-04-29 08:00 | Дедов В | 1h | 1h |
| 1211 | 2.206 | заменить 3х ходовой кран и фитинги с гайкой на жирах |  | 1h | 2026-04-29 09:00 A | 2026-04-29 10:00 A | 100% |  |  | start no earlier than 2026-04-30 09:00 | Дедов В | 1h | 1h |
| 1212 | 2.207 | закрепить на подножке резинку на штабелере зона экструдера (можно на саморез/клепки) |  | 1h | 2026-04-29 08:00 A | 2026-04-29 10:00 A | 100% |  |  | start no earlier than 2026-04-29 08:00 | Дедов В | 1h | 1h |
| 1213 | 2.208 | **заменить сетку для печи из зип** |  | 0.38d | 2026-05-05 09:00 A | 2026-05-05 12:00 A | 100% |  |  |  |  | 5h | 5h |
| 1214 | 2.208.1 | **заменить сетку , которую сняли с печи** |  | 3h | 2026-05-05 09:00 A | 2026-05-05 12:00 A | 100% |  |  |  | Бундин В | 5h | 5h |
| 1215 | 2.208.1.1 | ремонт сетки |  | 2h | 2026-05-05 09:00 A | 2026-05-05 11:00 A | 100% |  |  | start no earlier than 2026-05-05 09:00 | Бобренок В | 2h | 2h |
| 1216 | 2.209 | под норией сыпит сырье устранить |  | 4h | 2026-04-30 09:00 A | 2026-04-30 13:00 A | 100% |  |  | start no earlier than 2026-04-30 09:00 | Труфанов А; Некрасов А | 8h | 8h |
| 1217 | 2.210 | устранить течь, сброс пара под прекондиционером |  | 1h | 2026-05-01 09:00 A | 2026-05-01 10:00 A | 100% |  |  | start no earlier than 2026-05-01 09:00 | Дедов В | 1h | 1h |
| 1218 | 2.211 | устранить течь редуктор прекондиционера |  | 5h | 2026-04-29 09:00 A | 2026-04-29 15:00 A | 100% |  |  | start no earlier than 2026-04-29 08:00 | Некрасов А; Труфанов А | 10h | 10h |
| 1219 | 2.212 | почистить фильтр на поломоечной машинке |  | 1h | 2026-04-29 09:00 A | 2026-04-29 10:00 A | 100% |  |  | start no earlier than 2026-04-29 09:00 | Тимофеев В | 1h | 1h |
| 1220 | 2.213 | Полное ТО квадропак (чистка тен, смазка штоков пневмоцилиндров, шприцевание подшипников) |  | 3h | 2026-04-28 09:00 A | 2026-04-28 12:00 A | 100% |  |  | start no earlier than 2026-04-28 09:00 | Тимофеев В | 3h | 3h |
| 1221 | 2.214 | Полное ТО бестром (чистка тен, смазка штоков пневмоцилиндров, шприцевание подшипников) |  | 2h | 2026-04-28 09:00 A | 2026-04-28 11:00 A | 100% |  |  | start no earlier than 2026-04-28 09:00 | Тимофеев В | 2h | 2h |
| 1222 | 2.215 | демонтаж инсектютерной ламп на очистку / продуть |  | 1h | 2026-04-27 08:00 A | 2026-04-27 10:00 A | 100% |  |  | start no earlier than 2026-04-27 08:00 | Тимофеев В | 1h | 1h |
| 1223 | 2.216 | ремонт инсектецидных ламп взять у Мастера в каб. (проверить контакты соединения самих лам, дросели). 3 исправно/1 сломан дросель |  | 1h | 2026-04-29 09:00 A | 2026-04-29 10:00 A | 100% |  |  | start no earlier than 2026-04-29 09:00 | Дедов В | 1h | 1h |

| ID | WBS | Task | Type | Duration | Start | Finish | Predecessors | Complete | Actual start | Actual finish | Constraint | Resources | Work | Actual work |
| --- | --- | --- | --- | --- | --- | --- | --- | --- | --- | --- | --- | --- | --- | --- |
| 1224 | 2.217 | **замена дроселя инсекцидной лампы** |  | 17.38d | 2026-04-30 09:00 A | 2026-05-25 12:00 A |  | 100% |  |  |  |  | 84.25h | 84.25h |
| 1225 | 2.217.1 | заявка |  | 15min | 2026-04-30 09:00 A | 2026-04-30 09:15 A |  | 100% |  |  | start no earlier than 2026-04-30 08:00 | Шуранов Ю | 0.25h | 0.25h |
| 1226 | 2.217.2 | замена |  | 3h | 2026-05-25 08:00 A | 2026-05-25 12:00 A |  | 100% |  |  | start no earlier than 2026-05-25 08:00 | Дедов В | 3h | 3h |
| 1227 | 2.217.3 | доставка |  | 10d | 2026-05-04 09:00 A | 2026-05-18 18:00 A | 1225 | 100% |  |  | start no earlier than 2026-05-04 09:00 | Карабанов | 80h | 80h |
| 1228 | 2.217.4 | замена |  | 1h | 2026-05-12 09:00 A | 2026-05-12 10:00 A |  | 100% |  |  | start no earlier than 2026-05-12 09:00 | Бундин В | 1h | 1h |
| 1229 | 2.218 | поликарбанат в зоне седла жировика оторвался, ремонт |  | 1h | 2026-04-30 09:00 A | 2026-04-30 10:00 A |  | 100% |  |  | start no earlier than 2026-04-30 09:00 | Бундин В | 1h | 1h |
| 1230 | 2.219 | зачистить и покрасить решетку на входе в 2 ц. |  | 4h | 2026-04-28 09:00 A | 2026-04-28 13:00 A |  | 100% |  |  | start no earlier than 2026-04-28 09:00 | Дворник | 4h | 4h |
| 1231 | 2.220 | поднять лотки на 10 мм на охладителе со стороны фасовки (видео вышлю) |  | 1h | 2026-04-24 09:00 A | 2026-04-24 10:00 A |  | 100% |  |  | start no earlier than 2026-04-24 08:00 | Бундин В | 1h | 1h |
| 1232 | 2.221 | добавить в систему отопления котла в мойке и в охладителе воды | manual | 2h | 2026-04-24 09:00 A | 2026-04-24 11:00 A |  | 100% |  |  | start no earlier than 2026-04-24 09:00 | Бундин В | 2h | 2h |
| 1233 | 2.222 | на углы установить отбойники выход с зоны экструдера |  | 2h | 2026-04-23 09:00 A | 2026-04-23 11:00 A |  | 100% |  |  | start no earlier than 2026-04-23 08:00 | Бундин В | 2h | 2h |
| 1234 | 2.223 | сделать ТО Бестром (чистка тен и т.д.) |  | 2h | 2026-04-22 08:00 A | 2026-04-22 11:00 A |  | 100% |  |  | start no earlier than 2026-04-22 08:00 | Дедов В | 2h | 2h |
| 1235 | 2.224 | собрать кабинку в мужской раздевалке, она там стоит в коробке |  | 1h | 2026-04-23 09:00 A | 2026-04-23 10:00 A |  | 100% |  |  | start no earlier than 2026-04-23 09:00 | Дедов В | 1h | 1h |
| 1236 | 2.225 | заменить датчик переполнения на загрузке с синего бункера, на складе взять |  | 1h | 2026-04-29 09:00 A | 2026-04-29 10:00 A |  | 100% |  |  | start no earlier than 2026-04-29 09:00 | Дедов В | 1h | 1h |
| 1237 | 2.226 | **включить все исектицидные светильники по цеху, проверить есть ли напряжение в розетках** |  | 0.12d | 2026-04-23 09:00 A | 2026-04-23 10:00 A |  | 100% |  |  |  | Дедов В | 2h | 2h |
| 1238 | 2.226.1 | проверить напряжение в розетке светильника на фасовке |  | 1h | 2026-04-23 09:00 A | 2026-04-23 10:00 A |  | 100% |  |  | start no earlier than 2026-04-23 08:00 | Бундин В | 1h | 1h |
| 1239 | 2.227 | **установить кольцо "вентури" в фильеру** |  | 2.38d? | 2026-05-04 09:00 | 2026-05-06 12:00 |  | 100% | 2026-04-27 09:00 | 2026-09-10 10:00 |  |  | 4.5h | 4.5h |
| 1240 | 2.227.1 | определить диаметр отверстия кольца |  | 1h | 2026-04-27 09:00 A | 2026-04-27 10:00 A |  | 100% |  |  | start no earlier than 2026-04-27 09:00 | Зорькин В | 1h | 1h |
| 1241 | 2.227.2 | заявка на изготовление |  | 1h | 2026-04-28 10:00 A | 2026-04-28 11:00 A | 1240FS+1d | 100% |  |  | start no earlier than 2026-04-20 08:00 | Зорькин В | 1h | 1h |
| 1242 | 2.227.3 | контроль |  | 1h | 2026-05-04 09:00 A | 2026-05-04 10:00 A | 1241FS+1d | 100% |  |  | start no earlier than 2026-05-04 09:00 | Зорькин В | 1h | 1h |
| 1243 | 2.227.4 | заявка на выжечь проставку лдя кольца |  | 30min | 2026-07-15 09:00 A | 2026-07-15 09:30 A |  | 100% |  |  | start no earlier than 2026-07-15 09:00 | Зорькин В | 0.5h | 0.5h |
| 1244 | 2.227.5 | контроль доставки | milestone | 0d | 2026-07-22 09:30 A | 2026-07-22 09:30 A | 1243FS+5d | 100% |  |  | start no earlier than 2026-07-15 09:00 | Зорькин В |  |  |
| 1245 | 2.227.6 | провести тест |  | 1h | 2026-09-10 09:00 A | 2026-09-10 10:00 A |  | 100% |  |  | start no earlier than 2026-09-10 09:00 | Зорькин В | 1h | 1h |
| 1246 | 2.228 | замена фильтр вода подача в накопитель |  | 1h | 2026-04-21 09:00 A | 2026-04-21 10:00 A |  | 100% |  |  | start no earlier than 2026-04-21 09:00 | Тимофеев В | 1h | 1h |
| 1247 | 2.229 | замена потускневших ламп в инсекютере. Мастеру сообщить кол-во. б/у складывать в коробку |  | 2h | 2026-05-04 09:00 A | 2026-05-04 11:00 A |  | 100% |  |  | start no earlier than 2026-05-04 09:00 | Макаревич А | 2h | 2h |

| ID | WBS | Task | Type | Duration | Start | Finish | Predecessors | Complete | Actual start | Actual finish | Constraint | Resources | Work | Actual work |
| --- | --- | --- | --- | --- | --- | --- | --- | --- | --- | --- | --- | --- | --- | --- |
| 1248 | 2.230 | **ограждение палетообмотчика** |  | 19.25d | 2026-04-17 08:00 A | 2026-05-14 11:00 A |  | 100% |  |  |  |  | 190.5h | 190.5h |
| 1249 | 2.230.1 | **подготовка и монтаж рамы** |  | 6.75d | 2026-04-17 08:00 A | 2026-04-27 16:00 A |  | 100% |  |  |  |  | 24h | 24h |
| 1250 | 2.230.1.1 | изготовить ограждения для палетообмотчика (размеры обговорим) |  | 10h | 2026-04-17 08:00 A | 2026-04-20 11:00 A |  | 100% |  |  | start no earlier than 2026-04-17 08:00 | Макаревич А | 10h | 10h |
| 1251 | 2.230.1.2 | очистка, покраска рам ограждения. Быстросохн грунт-эмаль по ржавчине 3в1. |  | 4h | 2026-04-20 08:00 A | 2026-04-20 13:00 A |  | 100% |  |  | start no earlier than 2026-04-20 08:00 | Макаревич А | 4h | 4h |
| 1252 | 2.230.1.3 | монтаж рамы ограждения |  | 4h | 2026-04-27 09:00 A | 2026-04-27 13:00 A | 1251 | 100% |  |  | start no earlier than 2026-04-27 09:00 | Тимофеев В | 4h | 4h |
| 1253 | 2.230.1.4 | приварить пластины под стойки ограждения и закрепить к полу, чтобы оператор был вне зоны опасности) |  | 6h | 2026-04-25 09:00 A | 2026-04-27 16:00 A |  | 100% |  |  | start no earlier than 2026-04-25 09:00 | Макаревич А | 6h | 6h |
| 1254 | 2.230.2 | **обклеить рамы лентой** |  | 17.25d | 2026-04-21 09:00 A | 2026-05-14 11:00 A |  | 100% |  |  |  |  | 82.25h | 82.25h |
| 1255 | 2.230.2.1 | заявка клейка лента сигнальная черно-желтая / негабарит |  | 15min | 2026-04-21 09:00 A | 2026-04-21 09:15 A |  | 100% |  |  | start no earlier than 2026-04-21 09:00 | Зорькин В | 0.25h | 0.25h |
| 1256 | 2.230.2.2 | доставка |  | 10d | 2026-04-21 09:15 A | 2026-05-05 09:15 A | 1255 | 100% |  |  | start no earlier than 2026-04-20 08:00 | Карабанов | 80h | 80h |
| 1257 | 2.230.2.3 | монтаж ленты черно-желтой |  | 2h | 2026-05-14 09:00 A | 2026-05-14 11:00 A | 1256 | 100% |  |  | start no earlier than 2026-05-14 09:00 | Бобренок В | 2h | 2h |
| 1258 | 2.230.3 | **монтаж сетки на раму** |  | 10.03d | 2026-04-21 09:00 A | 2026-05-05 09:15 A |  | 100% |  |  |  |  | 84.25h | 84.25h |
| 1259 | 2.230.3.1 | заявка сетка для ограждения |  | 15min | 2026-04-21 09:00 A | 2026-04-21 09:15 A |  | 100% |  |  | start no earlier than 2026-04-21 09:00 | Зорькин В | 0.25h | 0.25h |
| 1260 | 2.230.3.2 | доставка сетка |  | 10d | 2026-04-21 09:15 A | 2026-05-05 09:15 A | 1259 | 100% |  |  | start no earlier than 2026-04-20 08:00 | Карабанов | 80h | 80h |
| 1261 | 2.230.3.3 | монтаж сетка |  | 4h | 2026-05-04 09:15 A | 2026-05-04 14:15 A | 1260 | 100% |  |  | start no earlier than 2026-04-20 08:00 | Некрасов А | 4h | 4h |
| 1262 | 2.231 | воздухозабоник циклона отпилить и вернуть как было раньше |  | 1h | 2026-04-28 09:00 A | 2026-04-28 10:00 A |  | 100% |  |  | start no earlier than 2026-04-28 09:00 | Тимофеев В | 1h | 1h |
| 1263 | 2.232 | проверка всех гидроаккумуляторов парогенератор, в вент комнате и отопительные |  | 2h | 2026-04-17 09:00 A | 2026-04-17 11:00 A |  | 100% |  |  | start no earlier than 2026-04-17 08:00 |  |  |  |
| 1264 | 2.233 | сборка полетообмотчика на фасовке |  | 1h | 2026-04-16 09:00 A | 2026-04-16 10:00 A |  | 100% |  |  | start no earlier than 2026-04-16 09:00 | Бобренок В | 1h | 1h |
| 1265 | 2.234 | заменить ремень на охладителе |  | 1h | 2026-04-15 09:00 A | 2026-04-15 10:00 A |  | 100% |  |  | start no earlier than 2026-04-15 08:00 | Некрасов А | 1h | 1h |
| 1266 | 2.235 | оторвался контроллер мониторинга на ШУ экструдера |  | 1h | 2026-04-15 09:00 A | 2026-04-15 10:00 A |  | 100% |  |  | start no earlier than 2026-04-15 08:00 | Некрасов А | 1h | 1h |
| 1267 | 2.236 | **сделать горловину на быстросъемах прекондиционер** |  | 3.88d? | 2026-04-16 09:00 | 2026-04-21 17:00 |  | 100% | 2026-08-20 09:00 | 2026-09-14 12:00 |  |  | 23h | 23h |
| 1268 | 2.236.1 | заказать защелки |  | 1d? | 2026-08-31 09:00 A | 2026-08-31 18:00 A |  | 100% |  |  | start no earlier than 2026-08-31 09:00 | Шуранов Ю | 8h | 8h |
| 1269 | 2.236.2 | Удлинить носик, чтоб можно было вешать мешок, куда будет ссыпаться мука |  | 3h | 2026-09-14 09:00 A | 2026-09-14 12:00 A |  | 100% |  |  | start no earlier than 2026-09-14 08:00 | Макаревич А | 3h | 3h |
| 1270 | 2.236.3 | изготовить установить люк для чистки с обр стороны как в 3ц (шапочка) |  | 4h | 2026-09-12 09:00 A | 2026-09-12 13:00 A |  | 100% |  |  | start no earlier than 2026-09-12 09:00 | Макаревич А | 4h | 4h |
| 1271 | 2.236.4 | установка |  | 1d? | 2026-08-20 09:00 A | 2026-08-20 18:00 A |  | 100% |  |  | start no earlier than 2026-09-02 09:00 | Тимофеев В | 8h | 8h |
| 1272 | 2.237 | перенести светильник квадропака (на край мезонина) |  | 2h | 2026-04-13 09:00 A | 2026-04-13 11:00 A |  | 100% |  |  | start no earlier than 2026-04-13 09:00 | Труфанов А | 2h | 2h |
| 1273 | 2.238 | сделать или мусоросборник на лотке выхода экструдера, или обратный лоток в сторону охдадителя (обсудим по телефону) |  | 4h | 2026-08-31 09:00 A | 2026-08-31 13:00 A |  | 100% |  |  | start no earlier than 2026-08-31 09:00 | Макаревич А | 4h | 4h |
| 1274 | 2.239 | слить конденсат с компрессора, продуть радиаторы, чистка фильтров | manual | 2h | 2026-04-12 09:00 A | 2026-04-12 11:00 A |  | 100% |  |  | start no earlier than 2026-04-12 09:00 | Труфанов А | 2h | 2h |
| 1275 | 2.240 | добавить в систему отопления воды (зона экструдера, вход в мойку) | manual | 2h | 2026-04-12 09:00 A | 2026-04-12 11:00 A |  | 100% |  |  | start no earlier than 2026-04-12 09:00 | Труфанов А | 2h | 2h |
| 1276 | 2.241 | починить стул Шелепову (выстучать середину и посадить на хомут) |  | 1h | 2026-04-11 09:00 A | 2026-04-13 10:00 A |  | 100% |  |  | start no earlier than 2026-04-11 09:00 | Труфанов А | 1h | 1h |
| 1277 | 2.242 | не работает вентилятор третий справа, плохой контакт- прикрутить |  | 1h | 2026-04-10 08:00 A | 2026-04-10 10:00 A |  | 100% |  |  | start no earlier than 2026-04-10 08:00 | Бобренок В | 1h | 1h |
| 1278 | 2.243 | взять канистру со склада и сделать подачу снизу, взять сгон с канистры 2 линии (канистру я видел в гидрализатной 1 ц.) |  | 1h | 2026-04-26 09:00 A | 2026-04-27 10:00 A |  | 100% |  |  | start no earlier than 2026-04-26 09:00 | Макаревич А | 1h | 1h |
| 1279 | 2.244 | сделать лоток под канистру рыбий жир - подача в прекондиционер |  | 3h | 2026-04-11 09:00 A | 2026-04-13 12:00 A |  | 100% |  |  | start no earlier than 2026-04-11 09:00 | Макаревич А | 3h | 3h |
| 1280 | 2.245 | перескочила цепь на 2ом ярусе охладителя -поправить |  | 1h | 2026-04-10 08:00 A | 2026-04-10 10:00 A |  | 100% |  |  | start no earlier than 2026-04-10 08:00 | Макаревич А | 1h | 1h |

| ID | WBS | Task | Type | Duration | Start | Finish | Predecessors | Complete | Remaining | Total slack | Constraint | Resources | Work | Actual work |
| --- | --- | --- | --- | --- | --- | --- | --- | --- | --- | --- | --- | --- | --- | --- |
| 1281 | 2.246 | **установка фосунок - подача жира 2 линия** |  | 5d | 2026-04-24 09:00 A | 2026-04-30 18:00 A |  | 100% |  |  |  |  | 8.42h | 8.42h |
| 1282 | 2.246.1 | заявка краны 1/2 |  | 15min | 2026-04-24 09:00 A | 2026-04-24 09:15 A |  | 100% |  |  | start no earlier than 2026-04-24 08:00 | Зорькин В | 0.25h | 0.25h |
| 1283 | 2.246.2 | доставка контроль |  | 10min | 2026-04-30 09:15 A | 2026-04-30 09:25 A | 1282FS+5d | 100% |  |  | start no earlier than 2026-04-24 08:00 | Зорькин В | 0.17h | 0.17h |
| 1284 | 2.246.3 | сборка кронштейн для фильтров + счетчик |  | 4h | 2026-04-30 09:25 A | 2026-04-30 14:25 A | 1283 | 100% |  |  | start no earlier than 2026-04-24 08:00 | Тимофеев В | 4h | 4h |
| 1285 | 2.246.4 | монтаж на линию фильтры + кронштейн + форсунка |  | 4h | 2026-04-30 13:25 A | 2026-04-30 18:00 A | 1284 | 100% |  |  | start no earlier than 2026-04-24 08:00 | Тимофеев В | 4h | 4h |
| 1286 | 2.247 | вывести на синий склад старые цепи от печи зона навесок |  | 2h | 2026-05-22 09:00 A | 2026-05-22 11:00 A |  | 100% |  |  | start no earlier than 2026-04-09 08:00 | Тимофеев В | 2h | 2h |
| 1287 | 2.248 | прикрутить уголок снизу выхода охладителя, забивается кормом (фото скину) |  | 1h | 2026-04-08 09:00 A | 2026-04-08 10:00 A |  | 100% |  |  | start no earlier than 2026-04-08 08:00 | Бундин В | 1h | 1h |
| 1288 | 2.249 | закрыть шибер кондиционера над жировиком |  | 1h | 2026-04-09 09:00 A | 2026-04-09 10:00 A |  | 100% |  |  | start no earlier than 2026-04-09 09:00 | Бобренок В | 1h | 1h |
| 1289 | 2.250 | прикрутить оргстекло в аквариуме где забрасывают навески в смеситель |  | 1h | 2026-04-08 09:00 A | 2026-04-08 10:00 A |  | 100% |  |  | start no earlier than 2026-04-08 09:00 | Бундин В | 1h | 1h |
| 1290 | 2.251 | ревизия двигатель, контакты ножевого узла |  | 1h | 2026-04-09 09:00 A | 2026-04-09 10:00 A |  | 100% |  |  | start no earlier than 2026-04-09 09:00 | Тимофеев В | 1h | 1h |
| 1291 | 2.252 | земена сеток печи |  | 2h | 2026-05-04 09:00 A | 2026-05-04 11:00 A |  | 100% |  |  | start no earlier than 2026-05-04 09:00 | Макаревич А; Некрасов А; Тимофеев В | 4h | 4h |
| 1292 | 2.253 | получить метал-лоток 100х50, закрепить слева от двери выхода с зоны экструдера и уложить все провода | manual | 2h | 2026-04-11 09:00 A | 2026-04-11 11:00 A |  | 100% |  |  |  | Труфанов А | 2h | 2h |
| 1293 | 2.254 | получить аллюминевый скотч- замотать стыки циклона, улитки печек, место рычага шибера улитки | manual | 2h | 2026-04-05 09:00 A | 2026-04-05 11:00 A |  | 100% |  |  | start no earlier than 2026-04-05 09:00 | Труфанов А | 2h | 2h |
| 1294 | 2.255 | **установить водоподготовку на парогенератор** |  | 141d? | 2026-04-08 09:00 A | 2026-10-09 18:00 |  | 3% | 137.19d? | 108.59d |  |  | 17.25h | 0.25h |
| 1295 | 2.255.1 | планирование монтажа |  | 1h | 2026-10-05 09:00 | 2026-10-05 10:00 |  |  |  | 113.47d | start no earlier than 2026-10-05 09:00 | Домоводов К | 1h |  |
| 1296 | 2.255.2 | запрос КП | milestone | 0min | 2026-04-08 09:00 A | 2026-04-08 09:00 A |  | 100% |  |  | start no earlier than 2026-04-08 09:00 | Зорькин В |  |  |
| 1297 | 2.255.3 | решение о покупке | milestone | 0d | 2026-04-08 18:00 A | 2026-04-08 18:00 A | 1296FS+1d | 100% |  |  | start no earlier than 2026-04-03 08:00 | Домоводов К |  |  |
| 1298 | 2.255.4 | контроль поставки |  | 15min | 2026-04-27 09:00 A | 2026-04-27 09:15 A |  | 100% |  |  | start no earlier than 2026-04-27 09:00 | Зорькин В | 0.25h | 0.25h |
| 1299 | 2.255.5 | монтаж (установка) |  | 1d? | 2026-10-09 09:00 | 2026-10-09 18:00 |  |  |  | 108.59d | start no earlier than 2026-10-09 09:00 | Тимофеев В; Некрасов А | 16h |  |
| 1300 | 2.256 | **изготовить сетку перед фильерой экструдера от костей** |  | 11d | 2026-04-17 09:00 A | 2026-05-01 18:00 A |  | 100% |  |  |  |  | 83.25h | 83.25h |
| 1301 | 2.256.1 | составить чертеж |  | 2h | 2026-04-17 09:00 A | 2026-04-17 11:00 A |  | 100% |  |  | start no earlier than 2026-04-17 09:00 | Зорькин В | 2h | 2h |
| 1302 | 2.256.2 | разместить заказ |  | 1h | 2026-04-18 11:00 A | 2026-04-20 10:00 A | 1301FS+1d | 100% |  |  | start no earlier than 2026-04-03 08:00 | Зорькин В | 1h | 1h |
| 1303 | 2.256.3 | изготовление |  | 10d | 2026-04-18 12:00 A | 2026-05-01 18:00 A | 1302 | 100% |  |  | start no earlier than 2026-04-03 08:00 | Подрядчик | 80h | 80h |
| 1304 | 2.256.4 | контроль | milestone | 0d | 2026-04-30 12:00 A | 2026-04-30 12:00 A | 1303 | 100% |  |  | start no earlier than 2026-04-03 08:00 | Зорькин В |  |  |
| 1305 | 2.256.5 | орг забрать |  | 15min | 2026-05-01 12:00 A | 2026-05-01 12:15 A | 1304FS+1d | 100% |  |  | start no earlier than 2026-04-03 08:00 | Зорькин В | 0.25h | 0.25h |

| ID | WBS | Task | Type | Duration | Start | Finish | Predecessors | Complete | Actual start | Actual finish | Constraint | Resources | Work | Actual work |
| --- | --- | --- | --- | --- | --- | --- | --- | --- | --- | --- | --- | --- | --- | --- |
| 1306 | 2.257 | **вешалка для дамских сумочек в тамбур при надевании бахил** |  | 13.25d | 2026-05-04 09:00 | 2026-05-18 11:00 |  | 100% | 2026-04-17 09:00 | 2026-06-15 10:00 |  |  | 82h | 82h |
| 1307 | 2.257.1 | заявка |  | 1h | 2026-04-17 09:00 A | 2026-04-17 10:00 A |  | 100% |  |  | start no earlier than 2026-04-17 09:00 | Зорькин В | 1h | 1h |
| 1308 | 2.257.2 | доставка |  | 10d | 2026-04-17 10:00 A | 2026-05-01 10:00 A | 1307 | 100% |  |  | start no earlier than 2026-04-02 08:00 | Карабанов | 80h | 80h |
| 1309 | 2.257.3 | монтаж |  | 1h | 2026-06-13 09:00 A | 2026-06-15 10:00 A | 1308 | 100% |  |  | start no earlier than 2026-06-13 09:00 | Бобренок В | 1h | 1h |
| 1310 | 2.258 | Врезка фитинга 1/2х12мм в дверку прекондиционера 2 цех (созвон с Зорькиным) |  | 30min | 2026-04-09 09:00 A | 2026-04-09 09:30 A |  | 100% |  |  | start no earlier than 2026-04-09 09:00 | Тимофеев В | 0.5h | 0.5h |
| 1311 | 2.259 | проверить контур управления насосом ПГ |  | 1h | 2026-04-02 09:00 A | 2026-04-02 10:00 A |  | 100% |  |  | start no earlier than 2026-04-02 09:00 | Тимофеев В | 1h | 1h |
| 1312 | 2.260 | замена электродной группы или чистка до металла электродов |  | 1h | 2026-04-16 09:00 A | 2026-04-16 10:00 A |  | 100% |  |  | start no earlier than 2026-04-16 09:00 | Макаревич А | 1h | 1h |
| 1313 | 2.261 | закрепить шкаф управления приточной вентиляцией |  | 30min | 2026-04-01 08:00 A | 2026-04-01 09:30 A |  | 100% |  |  | start no earlier than 2026-04-01 08:00 | Бобренок В | 0.5h | 0.5h |
| 1314 | 2.262 | установить пневмо пистолеты на охладители с длинным носиком (у мастеров) |  | 1h | 2026-04-01 08:00 A | 2026-04-01 10:00 A |  | 100% |  |  | start no earlier than 2026-04-01 08:00 | Бобренок В | 1h | 1h |
| 1315 | 2.263 | утечка группа безопасности котел склад навесок устранить |  | 30min | 2026-03-31 08:00 A | 2026-03-31 09:30 A |  | 100% |  |  | start no earlier than 2026-03-31 08:00 | Бобренок В | 0.5h | 0.5h |
| 1316 | 2.264 | закрепить две трубы подачи воздуха в охладителе, пневмо шланг подачи в улитку крепим к стене |  | 2h | 2026-03-27 09:00 A | 2026-03-27 11:00 A |  | 100% |  |  | start no earlier than 2026-03-27 08:00 | Труфанов А | 2h | 2h |
| 1317 | 2.265 | изготовить 2 лотка 700х400х50 мм из нерж под транспортерную ленту транспортер №1 и №2 |  | 6h | 2026-04-04 09:00 A | 2026-04-06 16:00 A |  | 100% |  |  | start no earlier than 2026-04-04 09:00 | Макаревич А | 6h | 6h |
| 1318 | 2.266 | открутить вилку-розетку возле насоса подачи жиров в экструдер |  | 1h | 2026-04-01 09:00 A | 2026-04-01 10:00 A |  | 100% |  |  | start no earlier than 2026-04-01 09:00 | Бобренок В | 1h | 1h |
| 1319 | 2.267 | прикруть кусок металлопрофиля ,чтобы заделать отверстие куда проходит труба отопления (зона где привозят навески) фото скину | manual | 1h | 2026-03-29 09:00 A | 2026-03-29 10:00 A |  | 100% |  |  | start no earlier than 2026-03-29 09:00 | Бундин В | 1h | 1h |
| 1320 | 2.268 | **замена ленты нория** |  | 4.5d | 2026-03-27 08:00 A | 2026-04-02 13:00 A |  | 100% |  |  |  |  | 39.5h | 39.5h |
| 1321 | 2.268.1 | получить материал весь | manual | 30min | 2026-03-29 09:00 A | 2026-03-29 09:30 A |  | 100% |  |  | start no earlier than 2026-03-29 09:00 | Тимофеев В | 0.5h | 0.5h |
| 1322 | 2.268.2 | подготовка кондуктора |  | 2h | 2026-03-27 08:00 A | 2026-03-27 11:00 A |  | 100% |  |  | start no earlier than 2026-03-27 08:00 | Некрасов А; Тимофеев В | 4h | 4h |
| 1323 | 2.268.3 | подготовить к установке норийную ленту, ковши, болты |  | 15h | 2026-03-28 09:00 A | 2026-03-31 17:00 A |  | 100% |  |  | start no earlier than 2026-03-28 09:00 | Дедов В | 15h | 15h |
| 1324 | 2.268.4 | подготовка крепления лебедки для затягивания ленты |  | 4h | 2026-03-31 09:00 A | 2026-03-31 13:00 A |  | 100% |  |  | start no earlier than 2026-03-31 09:00 | Труфанов А; Некрасов А | 8h | 8h |
| 1325 | 2.268.5 | замена ленты |  | 4h | 2026-04-02 09:00 A | 2026-04-02 13:00 A |  | 100% |  |  | start no earlier than 2026-04-02 09:00 | Некрасов А; Макаревич А; Тимофеев В | 12h | 12h |
| 1326 | 2.269 | закрепить гофру на трос -рефрежераторы на территории |  | 1h | 2026-03-27 09:00 A | 2026-03-27 10:00 A |  | 100% |  |  | start no earlier than 2026-03-27 09:00 | Некрасов А | 1h | 1h |
| 1327 | 2.270 | монтаж розетки до канистры с жиром для подачи в экструдер (подключение весов) |  | 2h | 2026-03-26 09:00 A | 2026-03-26 11:00 A |  | 100% |  |  | start no earlier than 2026-03-26 09:00 | Дедов В | 2h | 2h |
| 1328 | 2.271 | заделать щели / маршпуты крыс . Зона хранения навесок (закрутить профлист и запенить отверстие под трубу) |  | 1h | 2026-03-26 09:00 A | 2026-03-26 10:00 A |  | 100% |  |  | start no earlier than 2026-03-26 09:00 | Некрасов А | 1h | 1h |
| 1329 | 2.272 | оперативная замена шнеков |  | 6h | 2026-03-23 09:00 A | 2026-03-23 16:00 A |  | 100% |  |  | start no earlier than 2026-03-23 09:00 | Бобренок В; Бундин В | 12h | 12h |
| 1330 | 2.273 | выдать шланг для продувки бестрома |  | 1h | 2026-03-23 09:00 A | 2026-03-23 10:00 A |  | 100% |  |  | start no earlier than 2026-03-23 09:00 | Бундин В | 1h | 1h |
| 1331 | 2.274 | приварить уголок на лотке в охладитель (фото скину) |  | 2h | 2026-03-24 09:00 A | 2026-03-24 11:00 A |  | 100% |  |  | start no earlier than 2026-03-24 09:00 | Бобренок В | 2h | 2h |
| 1332 | 2.275 | на транспортере с охладителя отрезать концы саморезов на оргстекле (зарапают руки) |  | 1h | 2026-03-23 09:00 A | 2026-03-23 10:00 A |  | 100% |  |  | start no earlier than 2026-03-23 08:00 | Бундин В | 1h | 1h |
| 1333 | 2.276 | насосная станция включить и проверить на кз (выбивало автомат) |  | 2h | 2026-03-31 09:00 A | 2026-03-31 11:00 A |  | 100% |  |  | start no earlier than 2026-03-31 09:00 | Тимофеев В | 2h | 2h |
| 1334 | 2.277 | закрепить трубу РР к стене в районе хранения кубов гидролизат |  | 1h | 2026-03-26 09:00 A | 2026-03-26 10:00 A |  | 100% |  |  | start no earlier than 2026-03-26 09:00 | Тимофеев В | 1h | 1h |
| 1335 | 2.278 | настройка продувка ПГ ч/з 30 мин |  | 30min | 2026-04-02 09:00 A | 2026-04-02 09:30 A |  | 100% |  |  | start no earlier than 2026-04-02 09:00 | Шуранов Ю | 0.5h | 0.5h |
| 1336 | 2.279 | на красном смесителе закусывает ручку шибера - разобраться |  | 2h | 2026-03-26 09:00 A | 2026-03-26 11:00 A |  | 100% |  |  | start no earlier than 2026-03-26 09:00 | Тимофеев В | 2h | 2h |
| 1337 | 2.280 | посмотреть эл. магнит на двери вход ц.2 |  | 1h | 2026-03-27 09:00 A | 2026-03-27 10:00 A |  | 100% |  |  | start no earlier than 2026-03-27 09:00 | Тимофеев В | 1h | 1h |
| 1338 | 2.281 | ящик возле нашего кабинета- прибить или прикрутить дно |  | 1h | 2026-03-22 09:00 A | 2026-03-23 10:00 A |  | 100% |  |  | start no earlier than 2026-03-22 09:00 | Бобренок В | 1h | 1h |
| 1339 | 2.282 | слить конденсат, почистить фильтры и продуть радиаторы |  | 1h | 2026-03-21 09:00 A | 2026-03-23 10:00 A |  | 100% |  |  | start no earlier than 2026-03-21 09:00 | Дедов В | 1h | 1h |
| 1340 | 2.283 | забрать кресло Сапелина на ремонт в слесарку с каб. Шелепова |  | 2h | 2026-03-23 09:00 A | 2026-03-23 11:00 A |  | 100% |  |  | start no earlier than 2026-03-23 09:00 | Тимофеев В | 2h | 2h |
| 1341 | 2.284 | закрепить кабель в гофре на клипсы от розетки слева от ворот жировика |  | 1h | 2026-03-26 09:00 A | 2026-03-26 10:00 A |  | 100% |  |  | start no earlier than 2026-03-26 09:00 | Труфанов А | 1h | 1h |
| 1342 | 2.285 | уложить выше подиума и красиво закрепить на клипсы кабель в гофре от ворот справа (фото вышлю) |  | 1h | 2026-04-16 09:00 A | 2026-04-16 10:00 A |  | 100% |  |  | start no earlier than 2026-04-10 09:00 | Тимофеев В | 1h | 1h |
| 1343 | 2.286 | монтаж отбойников по периметру |  | 4h | 2026-03-25 09:00 A | 2026-03-25 13:00 A |  | 100% |  |  | start no earlier than 2026-03-25 09:00 | Бундин В | 4h | 4h |
| 1344 | 2.287 | перенос отбойник ГП с стороны эл щита, что бы не входл палет |  | 2h | 2026-03-19 08:00 A | 2026-03-19 11:00 A |  | 100% |  |  | start no earlier than 2026-03-19 08:00 | Бобренок В | 2h | 2h |
| 1345 | 2.288 | установить лист сендвич панель на стену жир/экструдер с стороны мойки |  | 3h | 2026-04-07 09:00 A | 2026-04-07 12:00 A |  | 100% |  |  | start no earlier than 2026-04-07 09:00 | Некрасов А; Труфанов А | 6h | 6h |
| 1346 | 2.289 | подлючить пневмоулитку к воздуху в охладителе |  | 1h | 2026-03-31 09:00 A | 2026-03-31 10:00 A |  | 100% |  |  | start no earlier than 2026-03-31 09:00 | Бобренок В | 1h | 1h |
| 1347 | 2.290 | выдать уплотнение на крышки прекондиционера |  | 30min | 2026-03-19 08:00 A | 2026-03-19 09:30 A |  | 100% |  |  | start no earlier than 2026-03-19 08:00 | Бобренок В | 0.5h | 0.5h |

| ID | WBS | Task | Type | Duration | Start | Finish | Predecessors | Complete | Actual start | Actual finish | Constraint | Resources | Work | Actual work |
| --- | --- | --- | --- | --- | --- | --- | --- | --- | --- | --- | --- | --- | --- | --- |
| 1348 | 2.291 | **ворота фасовка** |  | 0.12d | 2026-03-26 09:00 A | 2026-03-26 10:00 A |  | 100% |  |  |  |  | 1h | 1h |
| 1349 | 2.291.1 | закрепить гофру до розетки слева от ворот и закрыть монтажную коробку |  | 1h | 2026-03-26 09:00 A | 2026-03-26 10:00 A |  | 100% |  |  | start no earlier than 2026-03-26 09:00 | Некрасов А | 1h | 1h |
| 1350 | 2.292 | **забивает лоток прекондиционер/экструдер, передалать** |  | 1.62d | 2026-08-31 09:00 A | 2026-09-01 15:00 A |  | 100% |  |  |  |  | 5h | 5h |
| 1351 | 2.292.1 | изготовить чертежи лекалы для воронки |  | 1h | 2026-08-31 09:00 A | 2026-08-31 10:00 A |  | 100% |  |  | start no earlier than 2026-08-31 09:00 | Шуранов Ю | 1h | 1h |
| 1352 | 2.292.2 | изготовление воронки |  | 4h | 2026-09-01 10:00 A | 2026-09-01 15:00 A | 1351FS+1d | 100% |  |  | start no earlier than 2026-09-01 09:00 | Макаревич А | 4h | 4h |
| 1353 | 2.293 | уложить в лоток пучек управления заслонками, отвязать от батареи |  | 1h | 2026-03-17 08:00 A | 2026-03-17 10:00 A |  | 100% |  |  | start no earlier than 2026-03-17 08:00 | Бобренок В | 1h | 1h |
| 1354 | 2.294 | распред коробка подкл вентилятора которого уже нет (кондиционер №3 жиры) - облогородить |  | 30min | 2026-03-17 08:00 A | 2026-03-17 09:30 A |  | 100% |  |  | start no earlier than 2026-03-17 08:00 | Бобренок В | 0.5h | 0.5h |
| 1355 | 2.295 | удалить лотаки с барана |  | 2h | 2026-03-19 09:00 A | 2026-03-19 11:00 A |  | 100% |  |  | start no earlier than 2026-03-19 08:00 | Труфанов А; Некрасов А | 4h | 4h |
| 1356 | 2.296 | упорядочить проводку регистратора данных - стянуть в пучек |  | 1h | 2026-03-20 09:00 A | 2026-03-20 10:00 A |  | 100% |  |  | start no earlier than 2026-03-20 09:00 | Дедов В | 1h | 1h |
| 1357 | 2.297 | **открыть люк у бестрома / ревизяия / закрыть на герметик** |  | 0.12d | 2026-03-19 09:00 A | 2026-03-19 10:00 A |  | 100% |  |  |  | Труфанов А | 2h | 2h |
| 1358 | 2.297.1 | хим. Лаборатория устранить течь с оборудования |  | 1h | 2026-03-19 09:00 A | 2026-03-19 10:00 A |  | 100% |  |  | start no earlier than 2026-03-19 08:00 | Труфанов А | 1h | 1h |
| 1359 | 2.298 | **изготовить 2 лотка из нерж. в зоне жиров по аналогии с первым цехом под транспортером тип 1 и тип 2** |  | 0.25d | 2026-03-16 09:00 A | 2026-03-16 11:00 A |  | 100% |  |  |  | Макаревич А | 4h | 4h |
| 1360 | 2.298.1 | установить отбойник в зону ХХХ, брать в 5А |  | 2h | 2026-03-16 09:00 A | 2026-03-16 11:00 A |  | 100% |  |  | start no earlier than 2026-03-16 09:00 | Бобренок В | 2h | 2h |
| 1361 | 2.299 | **сточить острый край лотка загрузки в охладитель** |  | 0.12d | 2026-03-15 09:00 A | 2026-03-16 10:00 A |  | 100% |  |  |  | Некрасов А | 3h | 3h |
| 1362 | 2.299.1 | вывезти люльку, вывезти бойлер, провода на жирах спрятать в коробку |  | 1h | 2026-03-15 09:00 A | 2026-03-16 10:00 A |  | 100% |  |  | start no earlier than 2026-03-15 09:00 | Бобренок В | 1h | 1h |
| 1363 | 2.299.2 | бойлер в душе - установить трубку на клапан сброса и смонтировать её по стене до канализ трубы |  | 1h | 2026-03-16 09:00 A | 2026-03-16 10:00 A |  | 100% |  |  | start no earlier than 2026-03-16 09:00 | Макаревич А | 1h | 1h |
| 1364 | 2.300 | облогородить кабельный пучек, сделать аккуратно/закрыить крышкой. Слева от двери экструдер/тамбур под лестницей |  | 6h | 2026-04-09 09:00 A | 2026-04-09 16:00 A |  | 100% |  |  | start no earlier than 2026-04-11 09:00 | Труфанов А | 6h | 6h |
| 1365 | 2.301 | **изготовить сетку после барабана по аналогии с сущ 10мм** |  | 2.5d | 2026-03-12 09:00 A | 2026-03-16 13:00 A |  | 100% |  |  |  | Макаревич А | 25.5h | 25.5h |
| 1366 | 2.301.1 | на лоток загрузки в охладитель - установить доп борт с левой стороны, такой же как с правой (съемный) |  | 4h | 2026-03-15 09:00 A | 2026-03-16 13:00 A |  | 100% |  |  | start no earlier than 2026-03-15 09:00 | Бобренок В | 4h | 4h |
| 1367 | 2.301.2 | квадропак стол подачи пакетов устновить кайки с барашком/приварить. + зафиксировать от бокового смещения |  | 1h | 2026-03-16 09:00 A | 2026-03-16 10:00 A |  | 100% |  |  | start no earlier than 2026-03-16 09:00 | Тимофеев В | 1h | 1h |
| 1368 | 2.301.3 | изменить время разгон/торожение привод барабана |  | 30min | 2026-03-12 09:00 A | 2026-03-12 09:30 A |  | 100% |  |  | start no earlier than 2026-03-13 09:00 | Дедов В | 0.5h | 0.5h |
| 1369 | 2.302 | изготовить кожух на шестерни прекондиционера |  | 6h | 2026-04-03 09:00 A | 2026-04-03 16:00 A |  | 100% |  |  | start no earlier than 2026-04-03 09:00 | Макаревич А | 6h | 6h |
| 1370 | 2.303 | **ремонт датчик давления линия 3** |  | 30.25d | 2026-03-26 09:00 | 2026-04-30 11:00 |  | 100% | 2026-05-14 09:00 | 2026-06-11 12:00 |  |  | 124.75h | 124.75h |
| 1371 | 2.303.1 | заявка переходник G1/4 /M20*1.5 токарю |  | 15min | 2026-05-14 09:00 A | 2026-05-14 09:15 A |  | 100% |  |  | start no earlier than 2026-05-14 09:00 | Зорькин В | 0.25h | 0.25h |
| 1372 | 2.303.2 | контроль изг/орг доставка | milestone | 0d | 2026-05-14 09:15 A | 2026-05-14 09:15 A | 1371 | 100% |  |  | start no earlier than 2026-03-20 08:00 |  |  |  |
| 1373 | 2.303.3 | заказ замена + в ЗИП |  | 15min | 2026-05-14 09:15 A | 2026-05-14 09:30 A | 1372 | 100% |  |  | start no earlier than 2026-03-13 09:00 | Зорькин В | 0.25h | 0.25h |
| 1374 | 2.303.4 | заявка на РВД удлинитель |  | 15min | 2026-05-14 09:30 A | 2026-05-14 09:45 A | 1373 | 100% |  |  | start no earlier than 2026-03-12 08:00 | Зорькин В | 0.25h | 0.25h |
| 1375 | 2.303.5 | доставка |  | 15d | 2026-05-14 09:45 A | 2026-06-04 09:45 A | 1374 | 100% |  |  | start no earlier than 2026-03-12 08:00 | Карабанов | 120h | 120h |
| 1376 | 2.303.6 | монтаж |  | 1h | 2026-06-04 09:00 A | 2026-06-04 10:00 A |  | 100% |  |  | start no earlier than 2026-06-04 09:00 | Тимофеев В | 1h | 1h |
| 1377 | 2.303.7 | датчик давления экструдера проверка подключения |  | 3h | 2026-06-11 09:00 A | 2026-06-11 12:00 A |  | 100% |  |  | start no earlier than 2026-06-11 09:00 | Дедов В | 3h | 3h |

| ID | WBS | Task | Duration | Start | Finish | Predecessors | Complete | Constraint | Resources | Work | Actual work |
| --- | --- | --- | --- | --- | --- | --- | --- | --- | --- | --- | --- |
| 1378 | 2.304 | **установить сирену при отключении автомата ПГ** | 28.12d | 2026-03-13 09:00 A | 2026-04-22 10:00 A |  | 100% |  |  | 81.5h | 81.5h |
| 1379 | 2.304.1 | заявка на реле / сирена | 30min | 2026-03-13 09:00 A | 2026-03-13 09:30 A |  | 100% | start no earlier than 2026-03-13 09:00 | Шуранов Ю | 0.5h | 0.5h |
| 1380 | 2.304.2 | доставка | 10d | 2026-03-13 09:30 A | 2026-03-27 09:30 A | 1379 | 100% | start no earlier than 2026-03-12 08:00 | Карабанов | 80h | 80h |
| 1381 | 2.304.3 | монтаж в схему (проверить почему не срабатывает) | 1h | 2026-04-22 09:00 A | 2026-04-22 10:00 A | 1380 | 100% | start no earlier than 2026-04-22 09:00 | Дедов В | 1h | 1h |
| 1382 | 2.305 | **установить сирену на отключение автоматов в печи** | 16d | 2026-03-11 09:00 A | 2026-04-01 18:00 A |  | 100% |  |  | 44.25h | 44.25h |
| 1383 | 2.305.1 | заявка сирена | 15min | 2026-03-13 09:30 A | 2026-03-13 09:45 A | 1379 | 100% | start no earlier than 2026-03-12 08:00 | Шуранов Ю | 0.25h | 0.25h |
| 1384 | 2.305.2 | доставка | 5d | 2026-03-13 09:45 A | 2026-03-20 09:45 A | 1383 | 100% | start no earlier than 2026-03-12 08:00 | Карабанов | 40h | 40h |
| 1385 | 2.305.3 | монтаж | 2h | 2026-03-19 09:00 A | 2026-03-19 11:00 A | 1384 | 100% | start no earlier than 2026-03-19 09:00 | Дедов В | 2h | 2h |
| 1386 | 2.305.4 | доставка сирены | 10d | 2026-03-19 09:00 A | 2026-04-01 18:00 A |  | 100% | start no earlier than 2026-03-19 08:00 |  |  |  |
| 1387 | 2.305.5 | монтаж сирены | 1h | 2026-03-31 09:00 A | 2026-03-31 10:00 A | 1386 | 100% | start no earlier than 2026-03-31 09:00 | Дедов В | 1h | 1h |
| 1388 | 2.305.6 | настройка доводчика дверь вход в зону экструдера | 1h | 2026-03-11 09:00 A | 2026-03-11 10:00 A |  | 100% | start no earlier than 2026-03-11 09:00 | Макаревич А | 1h | 1h |
| 1389 | 2.306 | **выпадает фильера с матрицы - делать стпор** | 0.5d | 2026-04-27 09:00 A | 2026-04-27 13:00 A |  | 100% |  |  | 4.5h | 4.5h |
| 1390 | 2.306.1 | подготовка сверла / метчика | 30min | 2026-04-27 09:00 A | 2026-04-27 09:30 A |  | 100% | start no earlier than 2026-04-27 09:00 | Шуранов Ю | 0.5h | 0.5h |
| 1391 | 2.306.2 | сверлить и резать резьбу для фикс болта | 4h | 2026-04-27 09:00 A | 2026-04-27 13:00 A |  | 100% | start no earlier than 2026-04-27 09:00 | Подрядчик | 4h | 4h |
| 1392 | 2.307 | **замена поликарбанат на перегородках металопрофилем** | 68.75d | 2026-03-11 09:00 A | 2026-06-15 16:00 A |  | 100% |  |  | 114h | 114h |
| 1393 | 2.307.1 | расчет материал стена охладитель | 1h | 2026-03-19 09:00 A | 2026-03-19 10:00 A |  | 100% | start no earlier than 2026-03-19 09:00 | Шуранов Ю | 1h | 1h |
| 1394 | 2.307.2 | заявка | 1h | 2026-03-19 10:00 A | 2026-03-19 11:00 A | 1393 | 100% | start no earlier than 2026-03-12 08:00 | Шуранов Ю | 1h | 1h |
| 1395 | 2.307.3 | доставка | 10d | 2026-03-19 11:00 A | 2026-04-02 11:00 A | 1394 | 100% | start no earlier than 2026-03-12 08:00 | Карабанов | 80h | 80h |
| 1396 | 2.307.4 | из металлопрофиля 3м. Обшиваем охладитель внутри и снаружи + утеплитель | 5h | 2026-05-29 09:00 A | 2026-05-29 15:00 A |  | 100% | start no earlier than 2026-05-29 09:00 | Некрасов А; Бобренок В | 10h | 10h |
| 1397 | 2.307.5 | продолжить монтаж (со стороны охладителя и со стороны жиров) | 6h | 2026-06-15 09:00 A | 2026-06-15 16:00 A | 1395 | 100% | start no earlier than 2026-06-15 09:00 | Некрасов А; Бундин В | 12h | 12h |
| 1398 | 2.307.6 | замена шланг реле давление и настройка. фильтр приточная офис | 1h | 2026-03-12 09:00 A | 2026-03-12 10:00 A |  | 100% | start no earlier than 2026-03-13 09:00 | Дедов В | 1h | 1h |
| 1399 | 2.307.7 | замена насос гидролизата | 1h | 2026-03-12 08:00 A | 2026-03-12 10:00 A |  | 100% | start no earlier than 2026-03-12 08:00 | Бундин В; Тимофеев В | 2h | 2h |
| 1400 | 2.307.8 | замена подшипник прекондиционер | 1h | 2026-03-12 09:00 A | 2026-03-12 10:00 A |  | 100% | start no earlier than 2026-03-12 08:00 | Бундин В | 1h | 1h |
| 1401 | 2.307.9 | ремонт вал охладитель | 4h | 2026-03-12 09:00 A | 2026-03-12 13:00 A |  | 100% | start no earlier than 2026-03-19 09:00 | Тимофеев В | 4h | 4h |
| 1402 | 2.307.10 | плохо закр дверь на фасовку. заменить личинку двери / выравнить напильником в коробке. | 1h | 2026-03-11 09:00 A | 2026-03-11 10:00 A |  | 100% | start no earlier than 2026-03-11 09:00 | Макаревич А | 1h | 1h |
| 1403 | 2.307.11 | крепить поликарбанат стена печь/жир длинная часть | 1h | 2026-03-11 09:00 A | 2026-03-11 10:00 A |  | 100% | start no earlier than 2026-03-11 09:00 | Макаревич А | 1h | 1h |
| 1404 | 2.308 | сетку на выходе барабана жир закрепить. Устр вспомогактельные крепжи операторам | 1h | 2026-03-19 09:00 A | 2026-03-19 10:00 A |  | 100% | start no earlier than 2026-03-19 09:00 | Тимофеев В | 1h | 1h |

| ID | WBS | Task | Duration | Start | Finish | Predecessors | Complete | Constraint | Resources | Work | Actual work |
| --- | --- | --- | --- | --- | --- | --- | --- | --- | --- | --- | --- |
| 1405 | 2.309 | **установить / снять трубу от ПГ для чистки сетки** | 0.25d | 2026-03-12 09:00 A | 2026-03-12 11:00 A |  | 100% |  | Тимофеев В | 7h | 7h |
| 1406 | 2.309.1 | чистка циклон снаружи от копоти. Средство для чистки выдаст Шелепов К | 2h | 2026-03-12 09:00 A | 2026-03-12 11:00 A |  | 100% | start no earlier than 2026-03-12 09:00 | Тимофеев В; Бундин В | 4h | 4h |
| 1407 | 2.309.2 | замена датчик расхода пара | 1h | 2026-03-12 09:00 A | 2026-03-12 10:00 A |  | 100% | start no earlier than 2026-03-12 09:00 | Некрасов А | 1h | 1h |
| 1408 | 2.310 | **замениь фитинги на жир** | 0.25d | 2026-03-10 09:00 A | 2026-03-10 11:00 A | 701 | 100% |  | Некрасов А | 4h | 4h |
| 1409 | 2.310.1 | замена бойлер в мойке экструдера на бойлер который весит за экструдером | 2h | 2026-03-10 09:00 A | 2026-03-10 11:00 A |  | 100% | start no earlier than 2026-03-10 09:00 | Дедов В | 2h | 2h |
| 1410 | 2.311 | **переключить освещение на автолномный выключатель, запитанный от системы освещения, а не от оборудования.** | 15.38d | 2026-03-05 09:00 A | 2026-03-26 12:00 A |  | 100% |  |  | 13h | 13h |
| 1411 | 2.311.1 | ножевой узел | 1.5h | 2026-03-26 09:00 A | 2026-03-26 10:30 A |  | 100% | start no earlier than 2026-03-26 09:00 | Дедов В; Некрасов А | 3h | 3h |
| 1412 | 2.311.2 | бестром | 1.5h | 2026-03-26 09:00 A | 2026-03-26 10:30 A |  | 100% | start no earlier than 2026-03-26 09:00 | Некрасов А; Дедов В | 3h | 3h |
| 1413 | 2.311.3 | выход с охладителя | 1.5h | 2026-03-26 10:30 A | 2026-03-26 12:00 A | 1411 | 100% | start no earlier than 2026-03-26 09:00 | Дедов В; Некрасов А | 3h | 3h |
| 1414 | 2.311.4 | переключить норию квадропака стационрно, без розетки | 2h | 2026-03-05 09:00 A | 2026-03-05 11:00 A |  | 100% | start no earlier than 2026-03-05 09:00 | Дедов В | 2h | 2h |
| 1415 | 2.311.5 | перемонтаж провода заземления нории квадропак эстетично и удобно для прохода и уборщицы | 2h | 2026-03-05 09:00 A | 2026-03-05 11:00 A |  | 100% | start no earlier than 2026-03-05 09:00 | Дедов В | 2h | 2h |
| 1416 | 2.312 | **сетки на дно печи в зип изготовить** | 10.5d | 2026-03-10 09:00 A | 2026-03-24 13:00 A |  | 100% |  |  | 85h | 85h |
| 1417 | 2.312.1 | заявка сетка уголки | 1h | 2026-03-10 09:00 A | 2026-03-10 10:00 A |  | 100% | start no earlier than 2026-03-10 09:00 | Шуранов Ю | 1h | 1h |
| 1418 | 2.312.2 | доставка | 10d | 2026-03-10 10:00 A | 2026-03-24 10:00 A | 1417 | 100% | start no earlier than 2026-03-06 08:00 | Карабанов | 80h | 80h |
| 1419 | 2.312.3 | изготовление | 4h | 2026-03-24 09:00 A | 2026-03-24 13:00 A | 1418 | 100% | start no earlier than 2026-03-24 09:00 | Тимофеев В | 4h | 4h |
| 1420 | 2.313 | закрепить лоток для совка с спиртом. Изготовить усилит косынку | 2h | 2026-03-07 09:00 A | 2026-03-09 11:00 A |  | 100% | start no earlier than 2026-03-07 09:00 | Бундин В | 2h | 2h |
| 1421 | 2.314 | **установить монтажную коробку квадропак. Инструктаж Шуранов по тлф** | 0.12d | 2026-03-06 08:00 A | 2026-03-06 10:00 A |  | 100% |  | Бундин В | 2h | 2h |
| 1422 | 2.314.1 | Не уходит вода в душевой кабине, посмотреть, устранить. | 1h | 2026-03-06 08:00 A | 2026-03-06 10:00 A |  | 100% | start no earlier than 2026-03-06 08:00 | Бобренок В | 1h | 1h |
| 1423 | 2.315 | ревизия вентиляторов охладителя, не закрываются крышки | 30min | 2026-03-05 09:00 A | 2026-03-05 09:30 A |  | 100% | start no earlier than 2026-03-05 09:00 | Тимофеев В | 0.5h | 0.5h |
| 1424 | 2.316 | **Квадропак** | 0.38d | 2026-03-05 09:00 A | 2026-03-05 12:00 A |  | 100% |  |  | 3h | 3h |
| 1425 | 2.316.1 | Уложить красиво провода на лестнице квадропака цех 2 (созвон с Шурановым) | 3h | 2026-03-05 09:00 A | 2026-03-05 12:00 A |  | 100% | start no earlier than 2026-03-05 09:00 | Дедов В | 3h | 3h |
| 1426 | 2.317 | **Сброс ошибо Н4 и Е9 на кондиционерах** | 0.08d | 2026-03-04 09:00 A | 2026-03-04 09:40 A |  | 100% |  |  | 0.67h | 0.67h |
| 1427 | 2.317.1 | Договориться с оплотом по решению | 30min | 2026-03-04 09:00 A | 2026-03-04 09:30 A |  | 100% | start no earlier than 2026-03-04 09:00 | Зорькин В | 0.5h | 0.5h |
| 1428 | 2.317.2 | устранить ошибки | 10min | 2026-03-04 09:30 A | 2026-03-04 09:40 A | 1427 | 100% | start no earlier than 2026-03-03 08:00 | Зорькин В | 0.17h | 0.17h |
| 1429 | 2.318 | закреить поликарбанат по периметру | 4h | 2026-03-08 09:00 A | 2026-03-09 13:00 A |  | 100% | start no earlier than 2026-03-08 09:00 | Макаревич А | 4h | 4h |
| 1430 | 2.319 | смазать ручки и шарниры дверей | 1h | 2026-03-08 09:00 A | 2026-03-09 10:00 A |  | 100% | start no earlier than 2026-03-08 09:00 | Макаревич А | 1h | 1h |

| ID | WBS | Task | Duration | Start | Finish | Predecessors | Complete | Constraint | Resources | Work | Actual work |
| --- | --- | --- | --- | --- | --- | --- | --- | --- | --- | --- | --- |
| 1431 | 2.320 | **сделать ровным порог вход в мойку экструдера** | 23.5d | 2026-03-03 09:00 A | 2026-04-03 13:00 A |  | 100% |  |  | 86.25h | 86.25h |
| 1432 | 2.320.1 | Показать Олегу порог | 30min | 2026-03-03 09:00 A | 2026-03-03 09:30 A |  | 100% | start no earlier than 2026-03-03 08:00 | Зорькин В; Олег лукас | 1h | 1h |
| 1433 | 2.320.2 | составить план ремонта | 15min | 2026-03-03 09:00 A | 2026-03-03 09:15 A |  | 100% | start no earlier than 2026-03-03 09:00 | Зорькин В; Некрасов А; Труфанов А | 0.75h | 0.75h |
| 1434 | 2.320.3 | составить заявку на материал | 30min | 2026-03-04 09:00 A | 2026-03-04 09:30 A | 1433 | 100% | start no earlier than 2026-03-04 09:00 | Зорькин В | 0.5h | 0.5h |
| 1435 | 2.320.4 | доставка | 10d | 2026-03-04 09:30 A | 2026-03-18 09:30 A | 1434 | 100% | start no earlier than 2026-03-03 08:00 | Карабанов | 80h | 80h |
| 1436 | 2.320.5 | реализация | 4h | 2026-04-03 09:00 A | 2026-04-03 13:00 A | 1435 | 100% | start no earlier than 2026-04-03 09:00 | Олег | 4h | 4h |
| 1437 | 2.321 | востановить профлист. Проход навески экструдер. Обрезками с 3ц, цвет любой | 5h | 2026-03-08 09:00 A | 2026-03-09 15:00 A |  | 100% | start no earlier than 2026-03-08 09:00 | Макаревич А | 5h | 5h |
| 1438 | 2.322 | установить отбойники в проход и углы проезд навесок. Барть с 5а | 4h | 2026-03-09 09:00 A | 2026-03-09 13:00 A |  | 100% | start no earlier than 2026-03-09 09:00 | Макаревич А | 4h | 4h |
| 1439 | 2.323 | **установить отбойники в углы проезд навесок** | 24.25d | 2026-03-13 09:00 A | 2026-04-16 11:00 A |  | 100% |  |  | 82.17h | 82.17h |
| 1440 | 2.323.1 | заявка 2 отбойника | 10min | 2026-03-13 09:00 A | 2026-03-13 09:10 A |  | 100% | start no earlier than 2026-03-13 09:00 | Зорькин В | 0.17h | 0.17h |
| 1441 | 2.323.2 | доставка | 10d | 2026-03-13 09:10 A | 2026-03-27 09:10 A | 1440 | 100% | start no earlier than 2026-03-12 08:00 | Карабанов | 80h | 80h |
| 1442 | 2.323.3 | монтаж | 2h | 2026-04-16 09:00 A | 2026-04-16 11:00 A | 1441 | 100% | start no earlier than 2026-04-16 09:00 | Бундин В | 2h | 2h |
| 1443 | 2.324 | **наростить ножки на бестроме бункер, вместо деревянной** | 3.38d | 2026-03-05 09:00 A | 2026-03-10 12:00 A |  | 100% |  | Макаревич А | 39h | 39h |
| 1444 | 2.324.1 | **мойка** | 0.38d | 2026-03-05 09:00 A | 2026-03-05 12:00 A |  | 100% |  |  | 6h | 6h |
| 1445 | 2.324.1.1 | ревизия вытяжка принудительная из печи (нерж вентилятор), очистка | 3h | 2026-03-05 09:00 A | 2026-03-05 12:00 A |  | 100% | start no earlier than 2026-03-05 09:00 | Некрасов А; Труфанов А | 6h | 6h |
| 1446 | 2.324.2 | ремонт колесо штабелер/замена подшипник | 3h | 2026-03-10 09:00 A | 2026-03-10 12:00 A |  | 100% | start no earlier than 2026-03-10 09:00 | Тимофеев В; Дедов В | 6h | 6h |
| 1447 | 2.325 | **увеличить освещение в зоне квадропака** | 41.88d | 2026-03-02 09:00 A | 2026-04-28 17:00 A |  | 100% |  |  | 101h | 101h |
| 1448 | 2.325.1 | составить список мматериал для монтажа | 30min | 2026-03-02 09:00 A | 2026-03-02 09:30 A |  | 100% | start no earlier than 2026-03-02 09:00 | Труфанов А; Некрасов А; Зорькин В | 1.5h | 1.5h |
| 1449 | 2.325.2 | заявка светильники | 30min | 2026-03-02 09:30 A | 2026-03-02 10:00 A | 1448 | 100% | start no earlier than 2026-02-27 08:00 | Зорькин В | 0.5h | 0.5h |
| 1450 | 2.325.3 | доставка | 10d | 2026-03-02 10:00 A | 2026-03-16 10:00 A | 1449 | 100% | start no earlier than 2026-02-27 08:00 | Карабанов | 80h | 80h |
| 1451 | 2.325.4 | монтаж светильников зона фасовки 8 светильников, операторы помогут | 15h | 2026-04-25 09:00 A | 2026-04-28 17:00 A |  | 100% | start no earlier than 2026-04-25 09:00 | Бобренок В | 15h | 15h |
| 1452 | 2.325.5 | монтаж светильников зона квадропак 1шт - перевесить светильник | 1h | 2026-04-16 09:00 A | 2026-04-16 10:00 A |  | 100% | start no earlier than 2026-04-16 09:00 | Тимофеев В | 1h | 1h |
| 1453 | 2.325.6 | монтаж | 2h | 2026-03-06 09:00 A | 2026-03-06 11:00 A |  | 100% | start no earlier than 2026-03-06 09:00 | Бобренок В | 2h | 2h |
| 1454 | 2.325.7 | **замена сетка печи на мелкую** | 0.12d | 2026-03-02 09:00 A | 2026-03-02 10:00 A |  | 100% |  |  | 1h | 1h |
| 1455 | 2.325.7.1 | согласовать спецификацию / оплата счет | 1h | 2026-03-02 09:00 A | 2026-03-02 10:00 A |  | 100% | start no earlier than 2026-03-02 09:00 | Домоводов К | 1h | 1h |

| ID | WBS | Task | Duration | Start | Finish | Predecessors | Complete | Remaining | Total slack | Free slack | Constraint | Resources | Work | Actual work |
| --- | --- | --- | --- | --- | --- | --- | --- | --- | --- | --- | --- | --- | --- | --- |
| 1456 | 2.326 | **монтаж дозации жира в экструдер** | 34.25d? | 2026-02-27 09:00 A | 2026-04-16 11:00 |  | 38% | 21.26d? | 243.34d |  |  |  | 25h | 15h |
| 1457 | 2.326.1 | монтаж частотного привода | 2h | 2026-02-27 09:00 A | 2026-02-27 11:00 A |  | 100% |  |  |  | start no earlier than 2026-02-27 09:00 | Тимофеев В | 2h | 2h |
| 1458 | 2.326.2 | монтаж трассы гидравлической | 2h | 2026-03-02 09:00 A | 2026-03-02 11:00 A | 1457 | 100% |  |  |  | start no earlier than 2026-03-02 09:00 | Тимофеев В | 2h | 2h |
| 1459 | 2.326.3 | сборка канистры с фитингом | 1h | 2026-03-02 11:00 A | 2026-03-02 12:00 A | 1458 | 100% |  |  |  | start no earlier than 2026-02-26 08:00 | Тимофеев В | 1h | 1h |
| 1460 | 2.326.4 | калибровка на нужный расход | 1h | 2026-03-03 09:00 A | 2026-03-03 10:00 A |  | 100% |  |  |  | start no earlier than 2026-03-03 09:00 | Зорькин В; Тимофеев В | 2h | 2h |
| 1461 | 2.326.5 | испытание | 1h | 2026-03-04 09:00 A | 2026-03-04 10:00 A |  | 100% |  |  |  | start no earlier than 2026-03-04 09:00 | Зорькин В | 1h | 1h |
| 1462 | 2.326.6 | подключить управление насосом синхронно с запуском ножей экструдера. Проложить кабель, изучить параметары, передать по смене что подключать | 4h | 2026-03-04 09:00 | 2026-03-04 13:00 |  |  |  | 274.09d |  | start no earlier than 2026-03-04 09:00 | Дедов В | 4h |  |
| 1463 | 2.326.7 | подключить кабель/ неастроить параметры, что передаст Дедов | 1h | 2026-03-05 09:00 | 2026-03-05 10:00 |  |  |  | 273.47d |  | start no earlier than 2026-03-05 09:00 | Труфанов А | 1h |  |
| 1464 | 2.326.8 | поставка контрллра | 1d? | 2026-03-11 09:00 | 2026-03-11 18:00 |  |  |  | 268.34d | 25d | start no earlier than 2026-03-11 09:00 |  |  |  |
| 1465 | 2.326.9 | подключить контрллера расходомер | 2h | 2026-04-16 09:00 | 2026-04-16 11:00 | 1464 |  |  | 243.34d |  | start no earlier than 2026-04-16 09:00 | Тимофеев В | 2h |  |
| 1466 | 2.326.10 | Прокинуть интерфейсный кабель от черной коробочки до нового частотника на синем бункере (проложить так чтоб ни где ничего не торчало) | 3h | 2026-03-05 09:00 | 2026-03-05 12:00 |  |  |  | 273.22d |  | start no earlier than 2026-03-05 08:00 | Дедов В | 3h |  |
| 1467 | 2.326.11 | сделать регулировку угла наклона приемная воронка конв в охладитель после жира | 3h | 2026-03-05 09:00 A | 2026-03-05 12:00 A |  | 100% |  |  |  | start no earlier than 2026-03-05 09:00 | Некрасов А; Труфанов А | 6h | 6h |
| 1468 | 2.326.12 | сборка и монтаж полка для дез раствора на охладитель | 1h | 2026-03-02 09:00 A | 2026-03-02 10:00 A |  | 100% |  |  |  | start no earlier than 2026-03-02 09:00 | Тимофеев В | 1h | 1h |
| 1469 | 2.327 | **настройка блокировок отключения котла, если отключена приточка** | 130.25d | 2026-03-03 09:00 A | 2026-09-01 11:00 |  | 7% | 120.93d | 145.34d |  |  |  | 86.17h | 6.17h |
| 1470 | 2.327.1 | внести в схему котла блокировку либо от трм 33 либо от частотника | 4h | 2026-03-03 09:00 A | 2026-03-03 13:00 A |  | 100% |  |  |  | start no earlier than 2026-03-03 09:00 | Дедов В | 4h | 4h |
| 1471 | 2.327.2 | Заявка на реле протока воды | 10min | 2026-03-10 09:00 A | 2026-03-10 09:10 A |  | 100% |  |  |  | start no earlier than 2026-03-10 09:00 | Зорькин В | 0.17h | 0.17h |
| 1472 | 2.327.3 | Доставка | 10d | 2026-03-10 09:10 | 2026-03-24 09:10 | 1471 |  |  | 260.57d |  | start no earlier than 2026-03-02 09:00 | Карабанов | 80h |  |
| 1473 | 2.327.4 | Замена | 2h | 2026-09-01 09:00 A | 2026-09-01 11:00 A | 1472 | 100% |  |  |  | start no earlier than 2026-09-01 09:00 | Дедов В | 2h | 2h |
| 1474 | 2.328 | Запрет работы вентилятора если низкая температура калорифера | 2h | 2026-03-12 09:00 A | 2026-03-12 11:00 A |  | 100% |  |  |  | start no earlier than 2026-03-12 09:00 | Дедов В | 2h | 2h |
| 1475 | 2.329 | **установить на охладитель ролики + скольжение трубы** | 33d? | 2026-09-01 09:00 | 2026-10-05 18:00 |  |  |  | 112.59d |  |  |  | 10h |  |
| 1476 | 2.329.1 | печать кронштейнов | 2h | 2026-09-01 09:00 | 2026-09-01 11:00 |  |  |  | 145.34d |  | start no earlier than 2026-09-01 09:00 | Домоводов К | 2h |  |
| 1477 | 2.329.2 | установить держатели труб | 1d? | 2026-10-05 09:00 | 2026-10-05 18:00 |  |  |  | 112.59d |  | start no earlier than 2026-10-05 09:00 | Тимофеев В | 8h |  |
| 1478 | 2.330 | **установить паровопровод для очистки сетки печи на мойке парогенератором** | 8.75d | 2026-03-02 09:00 A | 2026-03-12 16:00 A |  | 100% |  |  |  |  |  | 18.5h | 18.5h |
| 1479 | 2.330.1 | проверка фитингов | 30min | 2026-03-02 09:00 A | 2026-03-02 09:30 A |  | 100% |  |  |  | start no earlier than 2026-03-02 09:00 | Зорькин В | 0.5h | 0.5h |
| 1480 | 2.330.2 | монтаж | 2h | 2026-03-05 09:00 A | 2026-03-05 11:00 A | 1479 | 100% |  |  |  | start no earlier than 2026-03-05 09:00 | Тимофеев В | 2h | 2h |

| ID | WBS | Task | Type | Duration | Start | Finish | Predecessors | Complete | Total slack | Free slack | Constraint | Resources | Work | Actual work |
| --- | --- | --- | --- | --- | --- | --- | --- | --- | --- | --- | --- | --- | --- | --- |
| 1481 | 2.330.3 | **лоток с транспортера в барабан. Большой** |  | 2.75d | 2026-03-10 09:00 A | 2026-03-12 16:00 A |  | 100% |  |  |  |  | 16h | 16h |
| 1482 | 2.330.3.1 | изготовить из листа лоток. Заготовку 612*965 с пропилами для сгиба по чертежу |  | 4h | 2026-03-10 09:00 A | 2026-03-10 13:00 A |  | 100% |  |  | start no earlier than 2026-03-10 09:00 | Макаревич А | 4h | 4h |
| 1483 | 2.330.3.2 | подготовить раму крепежа |  | 4h | 2026-03-12 09:00 A | 2026-03-12 13:00 A | 1482 | 100% |  |  | start no earlier than 2026-03-12 09:00 | Некрасов А; Труфанов А | 8h | 8h |
| 1484 | 2.330.3.3 | монтаж |  | 2h | 2026-03-12 14:00 A | 2026-03-12 16:00 A | 1483 | 100% |  |  | start no earlier than 2026-02-27 08:00 | Некрасов А; Труфанов А | 4h | 4h |
| 1485 | 2.331 | **установка ворот шлюз в проходе вент камеры** |  | 119d? | 2026-02-24 09:00 A | 2026-08-09 13:00 A |  | 100% |  |  |  |  | 163.5h | 163.5h |
| 1486 | 2.331.1 | изготовить и установить шпингалеты |  | 4h | 2026-02-27 09:00 A | 2026-02-27 13:00 A |  | 100% |  |  | start no earlier than 2026-02-27 09:00 | Некрасов А; Бобренок В | 8h | 8h |
| 1487 | 2.331.2 | установка петель, транспортировка, монтаж |  | 1d? | 2026-02-24 09:00 A | 2026-02-24 18:00 A |  | 100% |  |  | start no earlier than 2026-02-24 09:00 | Труфанов А; Некрасов А | 16h | 16h |
| 1488 | 2.331.3 | установить полосу притвора |  | 3h | 2026-02-27 09:00 A | 2026-02-27 12:00 A |  | 100% |  |  | start no earlier than 2026-02-28 09:00 | Бобренок В | 3h | 3h |
| 1489 | 2.331.4 | установить силиконовые уплотнители на пол |  | 2h | 2026-02-26 09:00 A | 2026-02-26 11:00 A |  | 100% |  |  | start no earlier than 2026-02-26 08:00 | Некрасов А | 2h | 2h |
| 1490 | 2.331.5 | заявка доводчики, шпингалеты |  | 30min | 2026-03-02 09:00 A | 2026-03-02 09:30 A |  | 100% |  |  | start no earlier than 2026-03-02 09:00 | Зорькин В | 0.5h | 0.5h |
| 1491 | 2.331.6 | доставка |  | 10d | 2026-03-02 09:30 A | 2026-03-16 09:30 A | 1490 | 100% |  |  | start no earlier than 2026-02-27 08:00 | Карабанов | 80h | 80h |
| 1492 | 2.331.7 | монтаж шпингалетов |  | 2h | 2026-03-25 09:00 A | 2026-03-25 11:00 A | 1491 | 100% |  |  | start no earlier than 2026-03-25 09:00 | Бобренок В | 2h | 2h |
| 1493 | 2.331.8 | **установить концевики блокировки открывания роль ворот, если не закрыты шлюз** |  | 109d | 2026-03-10 09:00 A | 2026-08-09 13:00 A |  | 100% |  |  |  |  | 52h | 52h |
| 1494 | 2.331.8.1 | **установить доводчики на ворота в зоне навесок** |  | 0.25d | 2026-06-14 09:00 A | 2026-06-15 11:00 A |  | 100% |  |  |  |  | 2h | 2h |
| 1495 | 2.331.8.1.1 | пробурить для задвижек ворот в полу отверстия -фиксация для проезда штабелера |  | 2h | 2026-06-14 09:00 A | 2026-06-15 11:00 A |  | 100% |  |  | start no earlier than 2026-06-14 09:00 | Бобренок В | 2h | 2h |
| 1496 | 2.331.8.2 | составить список материалов |  | 30min | 2026-03-10 09:00 A | 2026-03-10 09:30 A |  | 100% |  |  | start no earlier than 2026-03-10 09:00 | Дедов В | 0.5h | 0.5h |
| 1497 | 2.331.8.3 | заявка |  | 30min | 2026-03-10 09:30 A | 2026-03-10 10:00 A | 1496 | 100% |  |  | start no earlier than 2026-03-03 09:00 | Зорькин В | 0.5h | 0.5h |
| 1498 | 2.331.8.4 | доставка |  | 5d | 2026-03-10 10:00 A | 2026-03-17 10:00 A | 1497 | 100% |  |  | start no earlier than 2026-02-27 08:00 | Карабанов | 40h | 40h |
| 1499 | 2.331.8.5 | монтаж датчиков на двери / доводчиков. | manual | 4h | 2026-08-09 09:00 A | 2026-08-09 13:00 A | 1498 | 100% |  |  | start no earlier than 2026-08-09 09:00 | Бундин В | 4h | 4h |
| 1500 | 2.331.8.6 | монтаж кабеля от датчиков до блока рольворот, не подключать | manual | 4h | 2026-08-09 09:00 A | 2026-08-09 13:00 A | 1499 | 100% |  |  | start no earlier than 2026-08-09 09:00 | Бундин В | 4h | 4h |
| 1501 | 2.331.8.7 | установить концевики на ворота - установить закладные под них | manual | 1h | 2026-08-08 09:00 A | 2026-08-08 10:00 A |  | 100% |  |  | start no earlier than 2026-08-08 09:00 | Бундин В | 1h | 1h |
| 1502 | 2.332 | **схема блокировки роль ворот при открытым шлюзе + авт закрытие + датчик препятствия** |  | 2d | 2026-10-20 09:00 | 2026-10-21 18:00 |  |  | 99.59d |  |  |  | 8h |  |
| 1503 | 2.332.1 | разработка схемы |  | 4h | 2026-10-20 09:00 | 2026-10-20 13:00 |  |  | 99.59d | 0d | start no earlier than 2026-10-20 09:00 | Домоводов К | 4h |  |
| 1504 | 2.332.2 | монтаж |  | 4h | 2026-10-21 14:00 | 2026-10-21 18:00 | 1503FS+1d |  | 99.59d |  | start no earlier than 2026-10-19 09:00 | Труфанов А | 4h |  |
| 1505 | 2.333 | ремонт нижних сеток печи просева гранулы |  | 4h | 2025-01-23 09:00 A | 2025-01-23 13:00 A |  | 100% |  |  | start no earlier than 2025-01-23 09:00 | Черепанов И | 4h | 4h |

| ID | WBS | Task | Type | Duration | Start | Finish | Predecessors | Complete | Remaining | Total slack | Free slack | Constraint | Resources | Work | Actual work |
| --- | --- | --- | --- | --- | --- | --- | --- | --- | --- | --- | --- | --- | --- | --- | --- |
| 1506 | 2.334 | **замена реле безопасности бойлер ж** |  | 91.12d | 2024-10-16 09:00 A | 2025-02-20 10:00 A |  | 100% |  |  |  |  |  | 82h | 82h |
| 1507 | 2.334.1 | заЯВка |  | 1h | 2024-10-16 09:00 A | 2024-10-16 10:00 A |  | 100% |  |  |  | start no earlier than 2024-10-16 09:00 | Зорькин В | 1h | 1h |
| 1508 | 2.334.2 | доставка |  | 10d | 2024-10-16 10:00 A | 2024-10-30 10:00 A | 1507 | 100% |  |  |  | start no earlier than 2024-10-16 09:00 | Мультан | 80h | 80h |
| 1509 | 2.334.3 | замена |  | 1h | 2025-02-20 09:00 A | 2025-02-20 10:00 A | 1508 | 100% |  |  |  | start no earlier than 2025-02-20 09:00 | Некрасов А | 1h | 1h |
| 1510 | 2.335 | **установить пульты на регулировку шибиров вентиляции** |  | 49d? | 2026-08-31 09:00 | 2026-10-23 18:00 |  |  |  | 97.59d |  |  |  | 90h |  |
| 1511 | 2.335.1 | заявка на блок питания, шкаф управления, кабель |  | 2h | 2026-08-31 09:00 | 2026-08-31 11:00 |  |  |  | 135.34d | 0d | start no earlier than 2026-08-31 09:00 | Домоводов К | 2h |  |
| 1512 | 2.335.2 | доставка |  | 10d | 2026-08-31 11:00 | 2026-09-11 11:00 | 1511 |  |  | 135.34d | 37.75d | start no earlier than 2024-05-08 08:00 | Мультан | 80h |  |
| 1513 | 2.335.3 | монтаж |  | 1d? | 2026-10-23 09:00 | 2026-10-23 18:00 | 1512 |  |  | 97.59d |  | start no earlier than 2026-10-23 09:00 | Некрасов А | 8h |  |
| 1514 | 2.336 | заменить местами 2 зеркала маленький и большой бункер |  | 4h | 2024-10-03 09:00 | 2024-10-03 13:00 |  |  |  | 643.09d |  | start no earlier than 2024-10-03 09:00 | Черепанов И | 4h |  |
| 1515 | 2.337 | установить провод заземления на дверь шкафа упр сушки |  | 1h | 2024-01-08 09:00 | 2024-01-08 10:00 |  |  |  | 836.47d |  | start no earlier than 2024-01-06 09:00 | Тимофеев В | 1h |  |
| 1516 | 2.338 | **Палетообмотчик** |  | 50.06d | 2026-05-19 09:00 A | 2026-07-28 09:30 A |  | 100% |  |  |  |  |  | 80.67h | 80.67h |
| 1517 | 2.338.1 | заказать цепь |  | 10min | 2026-05-19 09:00 A | 2026-05-19 09:10 A |  | 100% |  |  |  | start no earlier than 2026-05-19 08:00 | Зорькин В | 0.17h | 0.17h |
| 1518 | 2.338.2 | доставка |  | 10d | 2026-05-29 09:00 A | 2026-06-11 18:00 A |  | 100% |  |  |  | start no earlier than 2026-05-29 09:00 | Карабанов | 80h | 80h |
| 1519 | 2.338.3 | замена цепи на вход в зону палетирования на складе взять 10М оцинкованная 3мм | manual | 30min | 2026-07-28 09:00 A | 2026-07-28 09:30 A |  | 100% |  |  |  | start no earlier than 2026-07-28 09:00 | Макаревич А | 0.5h | 0.5h |
| 1520 | 2.339 | Изготовить полочки из нержавейки по образцу на 18 баночек еще 2 шт |  | 3h | 2026-07-24 09:00 A | 2026-07-24 12:00 A |  | 100% |  |  |  | start no earlier than 2026-07-24 09:00 | Бундин В | 3h | 3h |
| 1521 | 2.340 | **отмена** |  | 86.31d? | 2026-08-11 09:00 A | 2026-11-26 11:30 |  | 2% | 84.35d? | 74.28d |  |  |  | 11h | 0.25h |
| 1522 | 2.340.1 | **найти места утечки тепла под потолком- перемерзает труба подачи воды в 3 цех** |  | 86.31d? | 2026-08-11 09:00 A | 2026-11-26 11:30 |  | 2% | 84.35d? | 74.28d |  |  |  | 11h | 0.25h |
| 1523 | 2.340.1.1 | вспомнить из-за чего холод под потолком? Какие нужны мероприятия?- никто не помнит |  | 15min | 2026-08-11 09:00 A | 2026-08-11 09:15 A |  | 100% |  |  |  | start no earlier than 2026-08-11 09:00 | Некрасов А | 0.25h | 0.25h |
| 1524 | 2.340.1.2 | подать олегу заявку |  | 15min | 2026-08-31 09:00 | 2026-08-31 09:15 |  |  |  | 146.56d |  | start no earlier than 2026-08-31 09:00 | Зорькин В | 0.25h |  |
| 1525 | 2.340.1.3 | проверка пирометром / тепловизором |  | 2h | 2026-11-11 09:00 | 2026-11-11 11:00 |  |  |  | 74.28d | 0d | start no earlier than 2026-11-11 09:00 | Некрасов А | 2h |  |
| 1526 | 2.340.1.4 | заявка (подумать материал) |  | 15min | 2026-11-11 11:00 | 2026-11-11 11:15 | 1525 |  |  | 74.28d | 0d | start no earlier than 2026-08-13 09:00 | Зорькин В | 0.25h |  |
| 1527 | 2.340.1.5 | доставка- контроль |  | 15min | 2026-11-25 11:15 | 2026-11-25 11:30 | 1526FS+10d |  |  | 74.28d | 0d | start no earlier than 2026-08-12 09:00 | Зорькин В | 0.25h |  |
| 1528 | 2.340.1.6 | монтаж |  | 1d? | 2026-11-25 11:30 | 2026-11-26 11:30 | 1527 |  |  | 74.28d |  | start no earlier than 2026-08-11 09:00 | Тимофеев В | 8h |  |
| 1529 | 2.341 | **вентиляция** |  | 11.25d | 2026-08-13 09:00 A | 2026-08-28 11:00 A |  | 100% |  |  |  |  |  | 4h | 4h |
| 1530 | 2.341.1 | Монтаж частотников на ШУ | manual | 2h | 2026-08-13 09:00 A | 2026-08-13 11:00 A |  | 100% |  |  |  | start no earlier than 2026-08-13 09:00 | Труфанов А | 2h | 2h |
| 1531 | 2.341.2 | В ШУ вырезать окна для частотников в двери, закрыть оргстеклом. Желательно на шарниры. |  | 2h | 2026-08-28 09:00 A | 2026-08-28 11:00 A |  | 100% |  |  |  | start no earlier than 2026-08-31 09:00 | Бундин В | 2h | 2h |

| ID | WBS | Task | Type | Duration | Start | Finish | Predecessors | Complete | Remaining | Total slack | Constraint | Resources | Work | Actual work |
| --- | --- | --- | --- | --- | --- | --- | --- | --- | --- | --- | --- | --- | --- | --- |
| 1532 | 2.342 | **Синий бункер** |  | 0.25d | 2026-07-30 09:00 A | 2026-07-30 11:00 A |  | 100% |  |  |  |  | 4h | 4h |
| 1533 | 2.342.1 | Ремонт синего бункера в зоне вибратора |  | 2h | 2026-07-30 09:00 A | 2026-07-30 11:00 A |  | 100% |  |  | start no earlier than 2026-07-30 09:00 | Труфанов А; Бундин В | 4h | 4h |
| 1534 | 2.343 | **Охладитель** |  | 0.38d | 2026-07-30 09:00 A | 2026-07-30 12:00 A |  | 100% |  |  |  |  | 3h | 3h |
| 1535 | 2.343.1 | Установка защиты сетки на полозья/направляющие, спросить Зорькина |  | 3h | 2026-07-30 09:00 A | 2026-07-30 12:00 A |  | 100% |  |  | start no earlier than 2026-07-30 09:00 | Тимофеев В | 3h | 3h |
| 1536 | 2.344 | Осмотреть/устранить течь раковины возле туалета |  | 1h | 2026-07-29 08:00 A | 2026-07-29 10:00 A |  | 100% |  |  | start no earlier than 2026-07-29 08:00 | Дедов В | 1h | 1h |
| 1537 | 3 | **3 цех** |  | 310.5d? | 2025-09-01 09:00 A | 2026-10-27 13:00 |  | 80% | 62.82d? | 96.09d |  |  | 1207.25h | 976.17h |
| 1538 | 3.1 | Поставить на зарядку штабелер, который стоит на жирах |  | 30min | 2026-10-14 09:00 A | 2026-10-14 09:30 A |  | 100% |  |  | start no earlier than 2026-10-14 08:00 | Бобренок В | 0.5h | 0.5h |
| 1539 | 3.2 | Закрыть на ключ все двери, ключи взять в кабинете оги |  | 1h | 2026-10-13 09:00 A | 2026-10-13 10:00 A |  | 100% |  |  | start no earlier than 2026-10-13 08:00 | Бобренок В | 1h | 1h |
| 1540 | 3.3 | Подписать на шкафу управления нории обозначения кнопок (на малярный скотч) |  | 1h | 2026-10-09 09:00 A | 2026-10-09 10:00 A |  | 100% |  |  | start no earlier than 2026-10-09 08:00 | Дедов В | 1h | 1h |
| 1541 | 3.4 | Закрыть все входа в производственную зону. Со стороны склада, гидролизата, со стороны фасовки, со стороны пандуса. Ключи взять у нас в кабинете в ящике. Ключи подписать | manual | 2h | 2026-10-03 09:00 A | 2026-10-03 11:00 A |  | 100% |  |  | start no earlier than 2026-10-03 09:00 | Бобренок В | 2h | 2h |
| 1542 | 3.5 | Сделать перила на лестницу между фасовкой и жирами, высота по образцу лестницы, которая на загрузке смесителей в 3 цеху. Делать минимальный габарит, чтоб рука пролазила между стеной и при этом сильно не сужало пространство. Делаем из 40 уголка | manual | 5h | 2026-10-09 09:00 A | 2026-10-09 15:00 A |  | 100% |  |  | start no earlier than 2026-10-09 09:00 | Бундин В | 5h | 5h |
| 1543 | 3.6 | Сделать окно из орг стекла монолитного, на жирах сверху, чтоб было видно печку. Размер примерно 300х200 | manual | 2h | 2026-10-07 09:00 A | 2026-10-07 11:00 A |  | 100% |  |  | start no earlier than 2026-10-07 09:00 | Бундин В | 2h | 2h |
| 1544 | 3.7 | Доделать закрепление окна из орг стекла, на жирах на заклепки вытяжные м6 | manual | 1h | 2026-10-10 09:00 A | 2026-10-10 10:00 A |  | 100% |  |  | start no earlier than 2026-10-10 09:00 | Бундин В | 1h | 1h |
| 1545 | 3.8 | **Установить насос с ножами в 3 цех под раковину мойки на жирах** |  | 9.5d? | 2026-10-13 09:00 A | 2026-10-23 13:00 |  | 19% | 7.66d? | 98.09d |  |  | 9.17h | 1h |
| 1547 | 3.8.1 | Заказать необходимые комплектующие, переходники |  | 1h | 2026-10-13 09:00 A | 2026-10-13 10:00 A |  | 100% |  |  | start no earlier than 2026-10-13 09:00 | Зорькин В | 1h | 1h |
| 1548 | 3.8.2 | контроль |  | 10min | 2026-10-21 09:00 | 2026-10-21 09:10 |  |  |  | 100.57d | start no earlier than 2026-10-21 09:00 | Зорькин В | 0.17h |  |
| 1549 | 3.8.3 | Установить насос с ножами в 3 цех под раковину мойки на жирах | manual | 4h | 2026-10-23 09:00 | 2026-10-23 13:00 |  |  |  |  | start no earlier than 2026-10-23 09:00 | Бобренок В; Труфанов А | 8h |  |
| 1550 | 3.9 | сопряжение круглой входной воронки в экструдер с квадратом выхода прекондиционера как в 2ц |  | 5h | 2026-09-29 09:00 A | 2026-09-29 15:00 A |  | 100% |  |  | start no earlier than 2026-09-29 09:00 | Бундин В | 5h | 5h |
| 1551 | 3.10 | **обеспечить быстрое переключение продукта из барабана годен/брак - охладитель/тазик** |  | 3.06d | 2026-09-19 09:00 A | 2026-09-22 09:30 A |  | 100% |  |  |  |  | 21h | 21h |
| 1552 | 3.10.1 | Модернизация лотка для удаления брака из барабанов, а именно: | milestone | 0h | 2026-09-19 09:00 A | 2026-09-19 09:00 A |  | 100% |  |  | start no earlier than 2026-09-19 09:00 | Макаревич А |  |  |
| 1553 | 3.10.2 | демонтировать отбойник, направляющий продукт в центр |  | 2h | 2026-09-19 09:00 A | 2026-09-19 11:00 A |  | 100% |  |  | start no earlier than 2026-09-19 09:00 | Макаревич А | 2h | 2h |
| 1554 | 3.10.3 | сделать торцевую стенку на шарнире с наклоном под барабан. Шарнир на высоте кронштейнов сетки. Шарнир дверной / как от печей |  | 4h | 2026-09-19 11:00 A | 2026-09-19 16:00 A | 1553 | 100% |  |  | start no earlier than 2026-09-18 08:00 | Макаревич А | 4h | 4h |
| 1555 | 3.10.4 | сделать фиксатор стенки в положении закрыто в виде щеколды. Безопасный быстрый |  | 2h | 2026-09-20 09:00 A | 2026-09-20 11:00 A | 1554 | 100% |  |  | start no earlier than 2026-09-20 09:00 | Макаревич А | 2h | 2h |
| 1556 | 3.10.5 | сделать "притвор", закрывающий щель после разрезания стенки. Все края защита от пореза либо зачистить либо лента |  | 4h | 2026-09-20 11:00 A | 2026-09-20 16:00 A | 1555 | 100% |  |  | start no earlier than 2026-09-18 08:00 | Макаревич А | 4h | 4h |
| 1557 | 3.10.6 | изготовить новый отбойник, направляющий продукт в центр, ниже опущенной стенки на сброс, не широкий, что бы удобно былоо менять сетку |  | 2h | 2026-09-20 16:00 A | 2026-09-20 18:00 A | 1556 | 100% |  |  | start no earlier than 2026-09-18 08:00 | Макаревич А | 2h | 2h |
| 1558 | 3.10.7 | Доработка короба после барабанов для ссыпки в емкость, установка ограничителей, язычка. Подробности у Труфанова |  | 6h | 2026-09-21 09:00 A | 2026-09-21 16:00 A |  | 100% |  |  | start no earlier than 2026-09-21 08:00 | Макаревич А | 6h | 6h |
| 1559 | 3.10.8 | установить на место, испытание |  | 30min | 2026-09-22 09:00 A | 2026-09-22 09:30 A |  | 100% |  |  | start no earlier than 2026-09-22 09:00 | Некрасов А; Труфанов А | 1h | 1h |

| ID | WBS | Task | Type | Duration | Start | Finish | Predecessors | Complete | Total slack | Constraint | Resources | Work | Actual work |
| --- | --- | --- | --- | --- | --- | --- | --- | --- | --- | --- | --- | --- | --- |
| 1560 | 3.11 | **Дражжировка** |  | 13.25d | 2026-09-17 09:00 A | 2026-09-30 11:00 A |  | 100% |  |  |  | 14h | 14h |
| 1561 | 3.11.1 | Повесить мощную цепь, за которую можно опускать и поднимать защиту |  | 1h | 2026-09-18 09:00 A | 2026-09-18 10:00 A |  | 100% |  | start no earlier than 2026-09-18 09:00 | Бундин В | 1h | 1h |
| 1562 | 3.11.2 | Сделать ограничитель, когда опускаешь защиту на себя, на уровне перил |  | 1h | 2026-09-17 09:00 A | 2026-09-17 10:00 A |  | 100% |  | start no earlier than 2026-09-17 08:00 | Бундин В | 1h | 1h |
| 1563 | 3.11.3 | Сделать из отбойников рессор уаз отбойники на защите паллет, чтоб не било когда падает (позвони, обьясню) |  | 2h | 2026-09-17 09:00 A | 2026-09-17 11:00 A |  | 100% |  | start no earlier than 2026-09-17 08:00 | Бундин В | 2h | 2h |
| 1564 | 3.11.4 | Перенести частотник со стены ближе к барабанам, смонтировать на раму барабанов |  | 2h | 2026-09-30 09:00 A | 2026-09-30 11:00 A |  | 100% |  | start no earlier than 2026-09-30 09:00 | Дедов В | 2h | 2h |
| 1565 | 3.11.5 | на коневейер циклон-барабан установить полосу сбоку ленты не дающую грануле скатываться обратно, примеры посмотреть в 1 цеху |  | 1h | 2026-09-22 09:00 A | 2026-09-22 10:00 A |  | 100% |  | start no earlier than 2026-09-22 09:00 | Тимофеев В | 1h | 1h |
| 1566 | 3.11.6 | Изготовить и установить уши на конце конвейера в барабан (чтоб гранула не попадала внутрь ленты) |  | 2h | 2026-09-21 09:00 A | 2026-09-21 11:00 A |  | 100% |  | start no earlier than 2026-09-21 09:00 | Тимофеев В | 2h | 2h |
| 1567 | 3.11.7 | Доделать и установить язык между барабанами |  | 1h | 2026-09-21 09:00 A | 2026-09-21 10:00 A |  | 100% |  | start no earlier than 2026-09-21 09:00 | Тимофеев В | 1h | 1h |
| 1568 | 3.11.8 | Увеличить «язычек» между барабанами на жирах (просыпается много гранулы |  | 4h | 2026-09-17 09:00 A | 2026-09-17 13:00 A |  | 100% |  | start no earlier than 2026-09-17 09:00 | Тимофеев В | 4h | 4h |
| 1569 | 3.12 | **Разобрать регулировку ножевого узла, достать вал на котором установлен штурвал** |  | 18d | 2026-09-21 09:00 A | 2026-10-11 11:00 A |  | 100% |  |  |  | 3.5h | 3.5h |
| 1570 | 3.12.1 | Снять вал, передать Зорькину |  | 1h | 2026-09-22 09:00 A | 2026-09-22 10:00 A |  | 100% |  | start no earlier than 2026-09-22 09:00 | Тимофеев В | 1h | 1h |
| 1571 | 3.12.2 | Заявка по образцу |  | 20min | 2026-09-21 09:00 A | 2026-09-21 09:20 A |  | 100% |  | start no earlier than 2026-09-21 09:00 | Зорькин В | 0.33h | 0.33h |
| 1572 | 3.12.3 | контроль |  | 10min | 2026-09-28 09:00 A | 2026-09-28 09:10 A | 1571SF+7d | 100% |  | start no earlier than 2026-09-28 09:00 | Зорькин В | 0.17h | 0.17h |
| 1573 | 3.12.4 | установка, получить на складе, лежат 2 вала один новый, другой образец, забрать оба | manual | 2h | 2026-10-11 09:00 A | 2026-10-11 11:00 A | 1572FS+1d | 100% |  | start no earlier than 2026-10-11 09:00 | Бобренок В | 2h | 2h |
| 1574 | 3.13 | Между шлюзовым питателем и конвейером на жирах сделать ограничение, чтоб не разлеталась гранула и не мешало двигать конвейер |  | 3h | 2026-09-15 09:00 A | 2026-09-15 12:00 A |  | 100% |  | start no earlier than 2026-09-15 09:00 | Тимофеев В | 3h | 3h |
| 1575 | 3.14 | **Найти и установить жироуловитель с синего склада на жирах мойка** |  | 15.12d | 2026-09-16 09:00 A | 2026-10-01 10:00 A |  | 100% |  |  |  | 3.33h | 3.33h |
| 1576 | 3.14.1 | Составить список необходимых материлов для подключения (передать зорькину) |  | 1h | 2026-09-16 09:00 A | 2026-09-16 10:00 A |  | 100% |  | start no earlier than 2026-09-16 08:00 | Тимофеев В; Зорькин В | 2h | 2h |
| 1577 | 3.14.2 | Заявка |  | 15min | 2026-09-16 10:00 A | 2026-09-16 10:15 A | 1576 | 100% |  | start no earlier than 2026-09-16 08:00 | Зорькин В | 0.25h | 0.25h |
| 1578 | 3.14.3 | Контроль |  | 5min | 2026-09-24 09:00 A | 2026-09-24 09:05 A | 1577FS+7d | 100% |  | start no earlier than 2026-09-24 09:00 | Зорькин В | 0.08h | 0.08h |
| 1579 | 3.14.4 | Монтаж |  | 1h | 2026-10-01 09:00 A | 2026-10-01 10:00 A | 1578 | 100% |  | start no earlier than 2026-10-01 09:00 | Тимофеев В | 1h | 1h |
| 1580 | 3.15 | монтаж оконечные кожухи на конвейер после охладителя, что бы гранула не разлеталась при перевороте ленты |  | 4h | 2026-09-21 09:00 A | 2026-09-21 13:00 A |  | 100% |  | start no earlier than 2026-09-22 09:00 | Тимофеев В | 4h | 4h |
| 1581 | 3.16 | Перенести регулировку подачи жира, ближе к барабанам. Перенос частотник на раму барабанов |  | 4h | 2026-10-06 09:00 | 2026-10-06 13:00 |  |  | 112.09d | start no earlier than 2026-10-06 09:00 | Тимофеев В | 4h |  |
| 1582 | 3.17 | Проблема с закрыванием дверцы привода ножей (шарнир с мотором ножей при закрывании теряет соосность, сделать упор) |  | 1h | 2026-09-15 09:00 A | 2026-09-15 10:00 A |  | 100% |  | start no earlier than 2026-09-15 09:00 | Тимофеев В | 1h | 1h |
| 1583 | 3.18 | Разобраться почему закусывает резьбу прижима ножей к фильере (испытывать после установки штурвала) |  | 1h | 2026-09-15 09:00 A | 2026-09-15 10:00 A |  | 100% |  | start no earlier than 2026-09-15 09:00 | Тимофеев В | 1h | 1h |
| 1584 | 3.19 | Регулировка ножей на экструдере — сделать «штурвал»; |  | 2h | 2026-09-15 09:00 A | 2026-09-15 11:00 A |  | 100% |  | start no earlier than 2026-09-15 09:00 | Тимофеев В | 2h | 2h |

| ID | WBS | Task | Type | Duration | Start | Finish | Predecessors | Complete | Remaining | Total slack | Free slack | Constraint | Resources | Work | Actual work |
| --- | --- | --- | --- | --- | --- | --- | --- | --- | --- | --- | --- | --- | --- | --- | --- |
| 1585 | 3.20 | **Гранулы выходили из печи со следами смазки** |  | 0.5d | 2026-10-01 09:00 A | 2026-10-01 13:00 A |  | 100% |  |  |  |  |  | 4h | 4h |
| 1586 | 3.20.1 | (сделать направляющие в печи); |  | 4h | 2026-10-01 09:00 A | 2026-10-01 13:00 A |  | 100% |  |  |  | start no earlier than 2026-10-02 09:00 | Тимофеев В | 4h | 4h |
| 1587 | 3.21 | **С двигателя экструдера выдавило много масла;** |  | 33.5d | 2026-09-18 09:00 A | 2026-10-27 13:00 |  | 36% | 21.59d |  |  |  |  | 11.25h | 4h |
| 1588 | 3.21.1 | установить поплавок на верхний уровень для блокировки насоса- осмотр |  | 4h | 2026-09-18 09:00 A | 2026-09-18 13:00 A |  | 100% |  |  |  | start no earlier than 2026-09-18 09:00 | Бобренок В | 4h | 4h |
| 1589 | 3.21.2 | заявка на датчики |  | 1h | 2026-09-18 14:00 | 2026-09-18 15:00 | 1588 |  |  | 119.19d | 0d | start no earlier than 2026-09-18 08:00 | Зорькин В | 1h |  |
| 1590 | 3.21.3 | контроль достачки |  | 15min | 2026-09-25 15:00 | 2026-09-25 15:15 | 1589FS+7d |  |  | 119.19d | 4.34d | start no earlier than 2026-09-18 08:00 | Зорькин В | 0.25h |  |
| 1591 | 3.21.4 | монтаж датчик в редуктор |  | 2h | 2026-10-01 09:00 | 2026-10-01 11:00 | 1590FS+1d |  |  | 114.84d | 18.75d | start no earlier than 2026-10-01 09:00 | Бобренок В | 2h |  |
| 1592 | 3.21.5 | подключение датчика в схему - блокировка по уровню |  | 4h | 2026-10-27 09:00 | 2026-10-27 13:00 | 1591FS+1d |  |  | 96.09d |  | start no earlier than 2026-10-27 09:00 | Дедов В | 4h |  |
| 1593 | 3.22 | Заменить кран подачи воды (второй слева) на втором предкондиционере — |  | 1h | 2026-09-14 09:00 A | 2026-09-14 10:00 A |  | 100% |  |  |  | start no earlier than 2026-09-14 09:00 | Тимофеев В | 1h | 1h |
| 1594 | 3.23 | **По схемам Труфанова разобраться с автоматикой шкафа и подключить 3 датчика уровня и подписать, где и что находится +кнопки и переключатели на шкафу тоже подписать** |  | 1.06d | 2026-09-07 09:00 A | 2026-09-08 09:30 A |  | 100% |  |  |  |  |  | 8.5h | 8.5h |
| 1595 | 3.23.1 | изучение схему |  | 8h | 2026-09-07 09:00 A | 2026-09-07 18:00 A |  | 100% |  |  |  | start no earlier than 2026-09-07 09:00 | Дедов В | 8h | 8h |
| 1596 | 3.23.2 | подкл 2я нория по датчику уровня |  | 30min | 2026-09-08 09:00 A | 2026-09-08 09:30 A |  | 100% |  |  |  | start no earlier than 2026-09-08 08:00 | Дедов В | 0.5h | 0.5h |
| 1597 | 3.24 | **установить ограничитель на дверь что бы попадала под движение рольворот** |  | 24.12d | 2026-09-22 09:00 | 2026-10-20 10:00 |  |  |  | 101.47d |  |  |  | 2.5h |  |
| 1598 | 3.24.1 | заявка |  | 15min | 2026-09-22 09:00 | 2026-09-22 09:15 |  |  |  | 119.41d | 0.97d | start no earlier than 2026-09-22 09:00 | Зорькин В | 0.25h |  |
| 1599 | 3.24.2 | контроль доставки |  | 15min | 2026-09-28 09:00 | 2026-09-28 09:15 | 1598FS+5d |  |  | 118.44d | 16.97d | start no earlier than 2026-09-28 09:00 | Зорькин В | 0.25h |  |
| 1600 | 3.24.3 | монтаж |  | 1h | 2026-10-20 09:00 | 2026-10-20 10:00 | 1599FS+1d |  |  | 101.47d |  | start no earlier than 2026-10-20 09:00 | Тимофеев В; Николаев | 2h |  |
| 1601 | 3.25 | приварить к люку сливной ямы вспомогательную ручку (ручка весит на стеллаже в слесарке) | manual | 2h | 2026-08-30 09:00 | 2026-08-30 11:00 |  |  |  |  |  | start no earlier than 2026-08-30 09:00 | Бундин В | 2h |  |
| 1602 | 3.26 | **монтаж унитаз, получить на складе** |  | 0d | 2026-08-17 09:00 A | 2026-08-17 09:00 A |  | 100% |  |  |  |  |  |  |  |
| 1603 | 3.26.1 | крышка бачка лопнувшая- поменять по гарантии | milestone | 0d | 2026-08-17 09:00 A | 2026-08-17 09:00 A |  | 100% |  |  |  | start no earlier than 2026-08-17 09:00 | Зорькин В |  |  |
| 1604 | 3.27 | закрыить металлом 1.5мм щель стена / площадка загрузки муки. Между рольворотой и стеной с окнами |  | 2h | 2026-08-15 09:00 A | 2026-08-17 11:00 A |  | 100% |  |  |  | start no earlier than 2026-08-15 09:00 | Бундин В | 2h | 2h |
| 1605 | 3.28 | закрыть щель битумной лентой стык площадка-профлист стенка. Полоску клеить из нутри, обезжирить. |  | 2h | 2026-08-16 09:00 A | 2026-08-17 11:00 A |  | 100% |  |  |  | start no earlier than 2026-08-16 09:00 | Бундин В | 2h | 2h |
| 1606 | 3.29 | монтаж светильник в корридор / лестница на площадку жиров |  | 3h | 2026-08-16 09:00 A | 2026-08-17 12:00 A |  | 100% |  |  |  | start no earlier than 2026-08-16 09:00 | Бундин В | 3h | 3h |
| 1607 | 3.30 | **ломает гранулу после печи** |  | 17.12d? | 2026-08-18 09:00 A | 2026-09-09 10:00 A |  | 100% |  |  |  |  |  | 18.5h | 18.5h |
| 1608 | 3.30.1 | тест на ручной загрузке |  | 2h | 2026-08-18 09:00 A | 2026-08-18 11:00 A |  | 100% |  |  |  | start no earlier than 2026-08-18 09:00 | Шуранов Ю | 2h | 2h |
| 1609 | 3.30.2 | полная раборка трассы на ревизию острых граней? |  | 2h | 2026-08-19 09:00 A | 2026-08-19 11:00 A |  | 100% |  |  |  | start no earlier than 2026-08-19 09:00 | Тимофеев В | 2h | 2h |
| 1610 | 3.30.3 | определить параметры нории для запроса цены |  | 2h | 2026-08-18 09:00 A | 2026-08-18 11:00 A |  | 100% |  |  |  | start no earlier than 2026-08-18 09:00 | Шуранов Ю | 2h | 2h |
| 1611 | 3.30.4 | контроль отвта |  | 15min | 2026-09-03 09:00 A | 2026-09-03 09:15 A | 1610FS+5d | 100% |  |  |  | start no earlier than 2026-09-03 09:00 | Зорькин В | 0.25h | 0.25h |
| 1612 | 3.30.5 | изготовить новый отвод 90 с фланцем, учесть степеньку |  | 1h | 2026-09-02 09:00 A | 2026-09-02 10:00 A |  | 100% |  |  |  | start no earlier than 2026-09-09 09:00 | Макаревич А | 1h | 1h |
| 1613 | 3.30.6 | тест |  | 1h | 2026-08-19 09:00 A | 2026-08-19 10:00 A |  | 100% |  |  |  | start no earlier than 2026-08-19 09:00 | Тимофеев В; Шуранов Ю | 2h | 2h |
| 1614 | 3.30.7 | переварить фланец на угловом соединении (объясню по телефону). То же самое | milestone | 0h | 2026-09-04 09:00 A | 2026-09-04 09:00 A |  | 100% |  |  |  | start no earlier than 2026-09-04 09:00 | Макаревич А |  |  |
| 1615 | 3.30.8 | печать переходника на 3д принтере |  | 1d? | 2026-08-31 09:00 A | 2026-08-31 18:00 A |  | 100% |  |  |  | start no earlier than 2026-08-31 09:00 | Домоводов К | 8h | 8h |
| 1616 | 3.30.9 | проверка размещения нории от квадропака |  | 15min | 2026-08-18 09:00 A | 2026-08-18 09:15 A |  | 100% |  |  |  | start no earlier than 2026-08-18 09:00 | Шуранов Ю | 0.25h | 0.25h |
| 1617 | 3.30.10 | установить угловой фланец на пневмотрассу |  | 1h | 2026-09-09 09:00 A | 2026-09-09 10:00 A |  | 100% |  |  |  | start no earlier than 2026-09-09 09:00 | Тимофеев В | 1h | 1h |

| ID | WBS | Task | Type | Duration | Start | Finish | Predecessors | Complete | Remaining | Total slack | Free slack | Constraint | Resources | Work | Actual work |
| --- | --- | --- | --- | --- | --- | --- | --- | --- | --- | --- | --- | --- | --- | --- | --- |
| 1618 | 3.31 | **доп мощности для приточной вентиляции** |  | 34d? | 2026-08-21 09:00 A | 2026-09-28 18:00 |  | 16% | 28.63d? | 118.59d |  |  |  | 152h | 24h |
| 1619 | 3.31.1 | проект автоматика ограничения мощности в автомате |  | 1d? | 2026-08-31 09:00 | 2026-08-31 18:00 |  |  |  | 118.59d | 0d | start no earlier than 2026-08-31 09:00 | Домоводов К | 8h |  |
| 1620 | 3.31.2 | составить ТЗ на монтаж кабеля |  | 3d | 2026-08-21 09:00 A | 2026-08-25 18:00 A |  | 100% |  |  |  | start no earlier than 2026-08-21 09:00 | Домоводов К | 24h | 24h |
| 1621 | 3.31.3 | получить КП / счет договор | milestone | 0d | 2026-09-01 18:00 | 2026-09-01 18:00 | 1619FS+1d, 1620FS+2d |  |  | 118.59d | 0d | start no earlier than 2026-08-27 09:00 | Домоводов К |  |  |
| 1622 | 3.31.4 | предоплата | milestone | 0d | 2026-09-02 18:00 | 2026-09-02 18:00 | 1621FS+1d |  |  | 118.59d | 0d | start no earlier than 2026-08-10 08:00 | Домоводов К |  |  |
| 1623 | 3.31.5 | монтаж |  | 15d | 2026-09-14 09:00 | 2026-09-28 18:00 | 1622FS+10d |  |  | 118.59d |  | start no earlier than 2026-08-10 08:00 | Подрядчик | 120h |  |
| 1624 | 3.32 | сделать перемычку на нижней части системы загрузки палет подачи жиров и гидрализата | manual | 3h | 2026-08-15 09:00 | 2026-08-15 12:00 |  |  |  |  |  | start no earlier than 2026-08-15 09:00 | Бундин В | 3h |  |
| 1625 | 3.33 | **сборка квадропака 3 цех** |  | 57.5d? | 2026-08-14 09:00 A | 2026-10-21 13:00 |  | 61% | 22.7d? | 100.09d |  |  |  | 42h | 29h |
| 1626 | 3.33.1 | скрутку силовых кабелей на полу усилить мех защитой - распред коробку или на подобии - что если случайно наступят изолента не выдержит |  | 1h | 2026-10-19 09:00 | 2026-10-19 10:00 |  |  |  | 102.47d |  | start no earlier than 2026-10-19 08:00 | Бундин В | 1h |  |
| 1627 | 3.33.2 | уложить проводку в шкафу управления в кабельные лотки, крышки закрыть |  | 1d? | 2026-10-19 09:00 | 2026-10-19 18:00 |  |  |  | 101.59d |  | start no earlier than 2026-10-19 08:00 |  |  |  |
| 1628 | 3.33.3 | Монтаж/позиционирование квадропака |  | 5h | 2026-09-02 09:00 A | 2026-09-02 15:00 A |  | 100% |  |  |  | start no earlier than 2026-09-02 09:00 | Труфанов А | 5h | 5h |
| 1629 | 3.33.4 | перестановка норий, задействовать бункер |  | 2h | 2026-08-17 09:00 A | 2026-08-17 11:00 A |  | 100% |  |  |  | start no earlier than 2026-08-17 09:00 | Тимофеев В; Некрасов А | 4h | 4h |
| 1630 | 3.33.5 | сборка накопительный стол |  | 2h | 2026-08-19 09:00 A | 2026-08-19 11:00 A | 1629 | 100% |  |  |  | start no earlier than 2026-08-19 09:00 | Тимофеев В | 2h | 2h |
| 1631 | 3.33.6 | подключение дозатор |  | 1h | 2026-08-14 09:00 A | 2026-08-14 10:00 A |  | 100% |  |  |  | start no earlier than 2026-08-14 09:00 | Труфанов А | 1h | 1h |
| 1632 | 3.33.7 | зарисовка схема ШУ нория - понять управление бункером |  | 4h | 2026-08-14 09:00 A | 2026-08-14 13:00 A |  | 100% |  |  |  | start no earlier than 2026-08-14 09:00 | Труфанов А | 4h | 4h |
| 1633 | 3.33.8 | подключение нория к упаковке |  | 2h | 2026-08-14 14:00 A | 2026-08-14 16:00 A | 1632 | 100% |  |  |  | start no earlier than 2026-08-14 09:00 | Труфанов А | 2h | 2h |
| 1634 | 3.33.9 | подключение вводный кабель (питание) информация у Труфанова |  | 2h | 2026-09-04 09:00 A | 2026-09-04 11:00 A | 1633 | 100% |  |  |  | start no earlier than 2026-09-04 09:00 | Бундин В; Труфанов А | 4h | 4h |
| 1635 | 3.33.10 | тест на пакетах |  | 4h | 2026-10-21 09:00 | 2026-10-21 13:00 |  |  |  | 100.09d |  | start no earlier than 2026-10-21 09:00 | Труфанов А; Зорькин В | 8h |  |
| 1636 | 3.33.11 | тест с операторами определить производительность |  | 2h | 2026-10-21 09:00 | 2026-10-21 11:00 |  |  |  | 100.34d |  | start no earlier than 2026-10-21 09:00 | Труфанов А; Зорькин В | 4h |  |
| 1637 | 3.33.12 | подключениекомпрессор |  | 1h | 2026-09-03 09:00 A | 2026-09-03 10:00 A | 1634 | 100% |  |  |  | start no earlier than 2026-09-03 09:00 | Бобренок В | 1h | 1h |
| 1638 | 3.33.13 | Установка квадропака (позиционирование нижней машины) информация у Труфанова |  | 2h | 2026-09-02 09:00 A | 2026-09-02 11:00 A |  | 100% |  |  |  | start no earlier than 2026-09-02 09:00 | Труфанов А; Бундин В | 4h | 4h |
| 1639 | 3.33.14 | Выставить опоры верхней рамы и лестницы по уровню |  | 1h | 2026-09-02 09:00 A | 2026-09-02 10:00 A |  | 100% |  |  |  | start no earlier than 2026-09-02 08:00 | Бундин В | 1h | 1h |
| 1640 | 3.33.15 | Редуктор стола повернуть кабелем к электрощиту (на столе) |  | 30min | 2026-09-02 09:00 A | 2026-09-02 09:30 A |  | 100% |  |  |  | start no earlier than 2026-09-02 08:00 | Бундин В | 0.5h | 0.5h |
| 1641 | 3.33.16 | Провод от редуктора и кнопки в гофре закрепить по раме стола завести в шкаф |  | 30min | 2026-09-02 09:00 A | 2026-09-02 09:30 A |  | 100% |  |  |  | start no earlier than 2026-09-02 08:00 | Бундин В | 0.5h | 0.5h |
| 1642 | 3.34 | сделать ручку и зацепной крюк для открытия люка сливной ямы | manual | 2h | 2026-08-08 09:00 A | 2026-08-08 11:00 A |  | 100% |  |  |  | start no earlier than 2026-08-08 09:00 | Бобренок В | 2h | 2h |

| ID | WBS | Task | Type | Duration | Start | Finish | Predecessors | Complete | Remaining | Total slack | Constraint | Resources | Work | Actual work |
| --- | --- | --- | --- | --- | --- | --- | --- | --- | --- | --- | --- | --- | --- | --- |
| 1643 | 3.35 | **карусель добавить перемычку снизу, чтобы не выпал мешок** |  | 30.25d | 2026-08-18 09:00 A | 2026-09-22 11:00 |  | 93% | 2.16d | 125.34d |  |  | 2.33h | 2.17h |
| 1644 | 3.35.1 | заказать краску |  | 10min | 2026-08-18 09:00 A | 2026-08-18 09:10 A |  | 100% |  |  | start no earlier than 2026-08-18 09:00 | Шуранов Ю | 0.17h | 0.17h |
| 1645 | 3.35.2 | контроль доставки |  | 10min | 2026-08-31 09:00 | 2026-08-31 09:10 | 1644FS+5d |  |  | 146.57d | start no earlier than 2026-08-31 09:00 | Зорькин В | 0.17h |  |
| 1646 | 3.35.3 | покрасить перемычки система безопасности) |  | 2h | 2026-09-22 09:00 A | 2026-09-22 11:00 A | 1645FS+1d | 100% |  |  | start no earlier than 2026-09-22 09:00 | Тимофеев В | 2h | 2h |
| 1647 | 3.36 | убрать битумную ленту снаружи мезонина |  | 1h | 2026-08-04 08:00 A | 2026-08-04 10:00 A |  | 100% |  |  | start no earlier than 2026-08-04 08:00 | Макаревич А | 1h | 1h |
| 1648 | 3.37 | хорошо закрепить шланг подачи воды в прекондеционер |  | 2h | 2026-08-04 08:00 A | 2026-08-04 11:00 A |  | 100% |  |  | start no earlier than 2026-08-04 08:00 | Макаревич А | 2h | 2h |
| 1649 | 3.38 | на выходе ротаметра поменять шланг большего диаметра |  | 1h | 2026-07-31 08:00 A | 2026-07-31 10:00 A |  | 100% |  |  | start no earlier than 2026-07-31 08:00 | Тимофеев В | 1h | 1h |
| 1650 | 3.39 | покрасить кронштейн крепления ротаметра |  | 1h | 2026-07-31 09:00 A | 2026-07-31 10:00 A |  | 100% |  |  | start no earlier than 2026-07-31 09:00 | Бундин В | 1h | 1h |
| 1651 | 3.40 | не набирает заданную температуру 4 зона экструдера- разобраться |  | 2h | 2026-07-30 08:00 A | 2026-07-30 11:00 A |  | 100% |  |  | start no earlier than 2026-07-30 08:00 | Дедов В | 2h | 2h |
| 1652 | 3.41 | сборка кожухи на печи |  | 2h | 2026-07-15 09:00 A | 2026-07-15 11:00 A |  | 100% |  |  | start no earlier than 2026-07-15 09:00 | Бундин В | 2h | 2h |
| 1653 | 3.42 | **установить зеркало сферическое на бункер** |  | 15.5d | 2026-07-07 09:00 A | 2026-07-28 13:00 A |  | 100% |  |  |  |  | 5h | 5h |
| 1654 | 3.42.1 | заявка |  | 1h | 2026-07-07 09:00 A | 2026-07-07 10:00 A |  | 100% |  |  | start no earlier than 2026-07-07 09:00 | Зорькин В | 1h | 1h |
| 1655 | 3.42.2 | контроль доставки | milestone | 0d | 2026-07-17 10:00 A | 2026-07-17 10:00 A | 1654FS+10d | 100% |  |  | start no earlier than 2026-07-14 08:00 | Зорькин В |  |  |
| 1656 | 3.42.3 | монтаж |  | 4h | 2026-07-28 09:00 A | 2026-07-28 13:00 A | 1655FS+1d | 100% |  |  | start no earlier than 2026-07-28 09:00 | Макаревич А | 4h | 4h |
| 1657 | 3.43 | поиск след от смазки на охладителе |  | 1h | 2026-07-10 09:00 A | 2026-07-10 10:00 A |  | 100% |  |  | start no earlier than 2026-07-10 09:00 | Тимофеев В; Зорькин В | 2h | 2h |
| 1658 | 3.44 | **установить наосос центробежный на бочку слив с парогенератора, врезать штуцер в бочку** |  | 0.25d | 2026-07-15 09:00 A | 2026-07-15 11:00 A |  | 100% |  |  |  |  | 4h | 4h |
| 1659 | 3.44.1 | орг закуп с курьером |  | 2h | 2026-07-15 09:00 A | 2026-07-15 11:00 A |  | 100% |  |  | start no earlier than 2026-07-15 09:00 | Зорькин В | 2h | 2h |
| 1660 | 3.44.2 | монтаж штуцер |  | 2h | 2026-07-15 09:00 A | 2026-07-15 11:00 A |  | 100% |  |  | start no earlier than 2026-07-15 09:00 | Бобренок В | 2h | 2h |
| 1661 | 3.45 | **вода идет не стабильно** |  | 4.38d | 2026-07-09 09:00 A | 2026-07-15 12:00 A |  | 100% |  |  |  |  | 8h | 8h |
| 1662 | 3.45.1 | Поставить гидроаккумулятор на насос между выходом насосной станции и 3-х ходомым краном подачи воды в экструдер и заменить трубки на шланги |  | 3h | 2026-07-09 09:00 A | 2026-07-09 12:00 A |  | 100% |  |  | start no earlier than 2026-07-09 09:00 | Тимофеев В | 3h | 3h |
| 1663 | 3.45.2 | тест работы воды с ПГ на давлении питательного насоса 3+ |  | 1h | 2026-07-10 09:00 A | 2026-07-10 10:00 A |  | 100% |  |  | start no earlier than 2026-07-10 09:00 | Зорькин В; Тимофеев В | 2h | 2h |
| 1664 | 3.45.3 | орг закуп с курьером |  | 2h | 2026-07-15 09:00 A | 2026-07-15 11:00 A | 1659SS | 100% |  |  | start no earlier than 2026-07-13 09:00 | Зорькин В | 2h | 2h |
| 1665 | 3.45.4 | замена шланг напорный с насоса до ротаметра |  | 1h | 2026-07-15 11:00 A | 2026-07-15 12:00 A | 1664 | 100% |  |  | start no earlier than 2026-07-13 09:00 | Бобренок В | 1h | 1h |
| 1666 | 3.46 | Доработать крутилку ссыпа гранулы, прихватить на сварку |  | 1h | 2026-07-09 09:00 A | 2026-07-09 10:00 A |  | 100% |  |  | start no earlier than 2026-07-09 09:00 | Макаревич А | 1h | 1h |
| 1667 | 3.47 | удлинить лоток ножевого узла, до кромки загрузки применик пневмотранспорта |  | 3h | 2026-07-09 09:00 A | 2026-07-09 12:00 A |  | 100% |  |  | start no earlier than 2026-07-09 09:00 | Макаревич А | 3h | 3h |
| 1668 | 3.48 | Снять торцевые дверцы на печи для доступа к сетке |  | 1h | 2026-07-08 09:00 A | 2026-07-08 10:00 A |  | 100% |  |  | start no earlier than 2026-07-08 08:00 | Бундин В | 1h | 1h |
| 1669 | 3.49 | Снять кожухи на редукторах на цепях |  | 1h | 2026-07-08 09:00 A | 2026-07-08 10:00 A |  | 100% |  |  | start no earlier than 2026-07-08 08:00 | Бундин В | 1h | 1h |
| 1670 | 3.50 | Установка раковины,унитаза в 3 цеху 2 этаж |  | 4h | 2026-07-07 09:00 A | 2026-07-07 13:00 A |  | 100% |  |  | start no earlier than 2026-07-07 09:00 | Бундин В | 4h | 4h |
| 1671 | 3.51 | Установить тройник на компрессор маленький, на входе. (тройни пришел сегодня на склад) |  | 1h | 2026-07-08 09:00 A | 2026-07-08 10:00 A |  | 100% |  |  | start no earlier than 2026-07-08 08:00 | Бундин В | 1h | 1h |
| 1672 | 3.52 | Вернуть упакованный унитаз на склад |  | 30min | 2026-07-08 09:00 A | 2026-07-08 09:30 A |  | 100% |  |  | start no earlier than 2026-07-08 08:00 | Бундин В | 0.5h | 0.5h |

| ID | WBS | Task | Type | Duration | Start | Finish | Predecessors | Complete | Actual start | Actual finish | Total slack | Constraint | Resources | Work | Actual work |
| --- | --- | --- | --- | --- | --- | --- | --- | --- | --- | --- | --- | --- | --- | --- | --- |
| 1673 | 3.53 | **на тепловых реле 1 и 2 смесителя добавить порог выключения** |  | 1h? | 2026-07-11 09:00 | 2026-07-11 10:00 |  | 100% | 2026-07-14 09:00 | 2026-09-03 10:00 |  |  |  | 1.5h | 1.5h |
| 1674 | 3.53.1 | заявка на тепловые реле с большим номинолом |  | 15min | 2026-07-14 09:00 A | 2026-07-14 09:15 A |  | 100% |  |  |  | start no earlier than 2026-07-14 08:00 | Зорькин В | 0.25h | 0.25h |
| 1675 | 3.53.2 | доставка контроль |  | 15min | 2026-08-28 09:00 A | 2026-08-28 09:15 A | 1674FS+5d | 100% |  |  |  | start no earlier than 2026-08-28 09:00 | Зорькин В | 0.25h | 0.25h |
| 1676 | 3.53.3 | замена тепловых реле, получить на складе |  | 1h | 2026-09-03 09:00 A | 2026-09-03 10:00 A | 1675FS+1d | 100% |  |  |  | start no earlier than 2026-09-03 09:00 | Бобренок В | 1h | 1h |
| 1677 | 3.54 | сделать ручки с резьбой для снятия матрицы экструдера |  | 2h | 2026-07-04 09:00 A | 2026-07-06 11:00 A |  | 100% |  |  |  | start no earlier than 2026-07-04 09:00 | Макаревич А | 2h | 2h |
| 1678 | 3.55 | сделать противоудары головы на циклоне в зоне жиров | manual | 1h | 2026-07-26 09:00 A | 2026-07-26 10:00 A |  | 100% |  |  |  | start no earlier than 2026-07-26 09:00 | Макаревич А | 1h | 1h |
| 1679 | 3.56 | сделать откидную крышку на ножевом узле (расскажу как) |  | 8h | 2026-07-04 09:00 A | 2026-07-06 18:00 A |  | 100% |  |  |  | start no earlier than 2026-07-04 09:00 | Макаревич А | 8h | 8h |
| 1680 | 3.57 | подклинивает охладитель (все ярусы)- разобраться почему |  | 2h | 2026-07-11 09:00 A | 2026-07-13 11:00 A |  | 100% |  |  |  | start no earlier than 2026-07-11 09:00 | Макаревич А | 2h | 2h |
| 1681 | 3.58 | **откалибровать весы красных смесителей, муку с контрольным весом обеспечит 5ц** |  | 2h? | 2026-07-29 09:00 A | 2026-07-29 11:00 |  | 100% |  | 2026-08-03 18:00 |  |  | Дедов В | 10h | 10h |
| 1682 | 3.58.1 | вызвать специалистов |  | 1d? | 2026-08-03 09:00 A | 2026-08-03 18:00 A |  | 100% |  |  |  | start no earlier than 2026-08-03 09:00 | Шуранов Ю | 8h | 8h |
| 1683 | 3.59 | **установка частотника на шнек подачи со смесителей на ногу опоры шнека в разрыв питания шнека** |  | 0.12d | 2026-07-04 09:00 A | 2026-07-06 10:00 A |  | 100% |  |  |  |  |  | 1h | 1h |
| 1684 | 3.59.1 | демонтировать частотник шнека (в слесарку) |  | 1h | 2026-07-04 09:00 A | 2026-07-06 10:00 A |  | 100% |  |  |  | start no earlier than 2026-07-04 09:00 | Дедов В | 1h | 1h |
| 1685 | 3.60 | щель запенить выход из цеха |  | 1d? | 2026-07-02 09:00 A | 2026-07-02 18:00 A |  | 100% |  |  |  | start no earlier than 2026-07-02 09:00 | Олег | 8h | 8h |
| 1686 | 3.61 | силиконим двери прекондиционера (одну эксперимент) |  | 2h | 2026-07-02 09:00 A | 2026-07-02 11:00 A |  | 100% |  |  |  | start no earlier than 2026-07-03 09:00 | Дедов В | 2h | 2h |
| 1687 | 3.62 | наростить лопатку датчика переполнения на приемном лотке прекондиционера |  | 1h | 2026-06-30 09:00 A | 2026-06-30 10:00 A |  | 100% |  |  |  | start no earlier than 2026-06-30 09:00 | Бундин В | 1h | 1h |
| 1688 | 3.63 | установка бака стабилизации на подачу воды в прекондеционер (подключение) |  | 2h | 2026-07-02 09:00 A | 2026-07-02 11:00 A |  | 100% |  |  |  | start no earlier than 2026-07-02 09:00 | Тимофеев В | 2h | 2h |
| 1689 | 3.64 | изготовить фильтры на установки охлаждения |  | 1d? | 2026-07-06 09:00 | 2026-07-06 18:00 |  |  |  |  | 185.59d | start no earlier than 2026-07-06 09:00 | Тимофеев В | 8h |  |
| 1690 | 3.65 | удлинить горловину для второго красного смесителя |  | 2h | 2026-06-29 09:00 A | 2026-06-29 11:00 A |  | 100% |  |  |  | start no earlier than 2026-06-29 09:00 | Бундин В | 2h | 2h |
| 1691 | 3.66 | закрепить датчик сырья лопаткой в горке, под магнитом. Бункер экструдера |  | 4h | 2026-06-27 09:00 A | 2026-06-29 13:00 A |  | 100% |  |  |  | start no earlier than 2026-06-27 09:00 | Бундин В | 4h | 4h |
| 1692 | 3.67 | над магнитом сделать приемную воронку, борта, чтобы не пересыпалось сырье |  | 4h | 2026-06-27 09:00 A | 2026-06-29 13:00 A |  | 100% |  |  |  | start no earlier than 2026-06-27 09:00 | Бундин В | 4h | 4h |
| 1693 | 3.68 | удлинить воронку смесителя до горловины шнека. Приготовить сварщику, обяснить что нужно сделать. Вместо вибратора |  | 4h | 2026-06-27 09:00 A | 2026-06-29 13:00 A |  | 100% |  |  |  | start no earlier than 2026-06-27 09:00 | Дедов В; Бундин В | 8h | 8h |
| 1694 | 3.69 | байпас для масленной станции |  | 2h | 2026-07-01 09:00 A | 2026-07-01 11:00 A |  | 100% |  |  |  | start no earlier than 2026-07-01 09:00 | Тимофеев В | 2h | 2h |
| 1695 | 3.70 | **площадка для операторов для доступа к бункеру, что бы не наступали на краны** |  | 0.12d | 2026-07-02 09:00 A | 2026-07-02 10:00 A |  | 100% |  |  |  |  | Макаревич А; Некрасов А | 4h | 4h |
| 1696 | 3.70.1 | убрать заусенцы болгаркой |  | 1h | 2026-07-02 09:00 A | 2026-07-02 10:00 A |  | 100% |  |  |  | start no earlier than 2026-07-02 09:00 | Макаревич А; Тимофеев В | 2h | 2h |

| ID | WBS | Task | Type | Duration | Start | Finish | Predecessors | Complete | Constraint | Resources | Work | Actual work |
| --- | --- | --- | --- | --- | --- | --- | --- | --- | --- | --- | --- | --- |
| 1697 | 3.71 | **монтаж второй площадки с другой стороны (лестницу берем у 5 цеха -белую)** |  | 0.12d | 2026-07-03 09:00 A | 2026-07-03 10:00 A |  | 100% |  | Макаревич А; Некрасов А | 3h | 3h |
| 1698 | 3.71.1 | покрасить лестницу (мастер ц.1 даст людей- контроль) |  | 1h | 2026-07-03 09:00 A | 2026-07-03 10:00 A |  | 100% | start no earlier than 2026-07-03 09:00 | Макаревич А | 1h | 1h |
| 1699 | 3.72 | закрутить крышку двигателя улитки на циклоне жиров |  | 1h | 2026-06-25 09:00 A | 2026-06-25 10:00 A |  | 100% | start no earlier than 2026-06-25 09:00 | Дедов В | 1h | 1h |
| 1700 | 3.73 | укоротить шланг подачи масла | manual | 1h | 2026-06-25 08:00 A | 2026-06-25 09:00 A |  | 100% | start no earlier than 2026-06-25 08:00 | Макаревич А | 1h | 1h |
| 1701 | 3.74 | проверка подачи воды на парогенератор и прекондиционер, почему клапан подачи в бак заблокирован. |  | 2h | 2026-06-25 09:00 A | 2026-06-25 11:00 A |  | 100% | start no earlier than 2026-06-25 09:00 | Дедов В | 2h | 2h |
| 1702 | 3.75 | проверить парогенератор |  | 0.5h | 2026-06-25 09:00 A | 2026-06-25 09:30 A |  | 100% | start no earlier than 2026-06-25 09:00 | Дедов В | 0.5h | 0.5h |
| 1703 | 3.76 | вскрыть парогенератор, чистка электродов- фото |  | 3h | 2026-06-25 08:00 A | 2026-06-25 12:00 A |  | 100% | start no earlier than 2026-06-25 08:00 | Макаревич А | 3h | 3h |
| 1704 | 3.77 | подключить ролеты на охладителе |  | 1h | 2026-06-25 09:00 A | 2026-06-25 10:00 A |  | 100% | start no earlier than 2026-06-25 09:00 | Дедов В | 1h | 1h |
| 1705 | 3.78 | изготовление и установка шибера в лоток |  | 2h | 2026-06-25 09:00 A | 2026-06-25 11:00 A |  | 100% | start no earlier than 2026-06-25 09:00 | Дедов В | 2h | 2h |
| 1706 | 3.79 | контроль печи, будет включена пока не перестанет дымить |  | 1h | 2026-06-24 09:00 A | 2026-06-24 10:00 A |  | 100% | start no earlier than 2026-06-24 09:00 | Труфанов А; Макаревич А | 2h | 2h |
| 1707 | 3.80 | **взять на складе у Веры кронштейн под щетку, закрепить на него саму щетку и прикрутить на мезонине навесок в сторону ворот** |  | 28.38d | 2026-07-07 09:00 A | 2026-08-14 12:00 A |  | 100% |  |  | 3.5h | 3.5h |
| 1708 | 3.80.1 | заказать профиль 5мм |  | 15min | 2026-07-07 09:00 A | 2026-07-07 09:15 A |  | 100% | start no earlier than 2026-07-07 09:00 | Зорькин В | 0.25h | 0.25h |
| 1709 | 3.80.2 | контроль досставки |  | 15min | 2026-07-17 09:15 A | 2026-07-17 09:30 A | 1708FS+10d | 100% | start no earlier than 2026-07-07 09:00 | Зорькин В | 0.25h | 0.25h |
| 1710 | 3.80.3 | прикрепить на клепки/ саморезу щетку и установить на мезонине где ворота (все это находиться в 3 ц. справа на входе) Еще одна щетка есть у веры на складе, висела на кабинке | manual | 3h | 2026-08-14 09:00 A | 2026-08-14 12:00 A | 1709 | 100% |  | Макаревич А | 3h | 3h |
| 1711 | 3.81 | кабель трется о дверь, уложить в лоток, приподнять -закрепить к воздуховоду |  | 3h | 2026-06-24 09:00 A | 2026-06-24 12:00 A |  | 100% | start no earlier than 2026-06-24 09:00 | Труфанов А | 3h | 3h |
| 1712 | 3.82 | на частотнике пневмоулитки на жирах- увеличить время разгона и торможения |  | 1h | 2026-06-23 09:00 A | 2026-06-23 10:00 A |  | 100% | start no earlier than 2026-06-23 09:00 | Труфанов А | 1h | 1h |
| 1713 | 3.83 | проверить редукторы на печи (утечка есть или нет) |  | 1h | 2026-06-23 09:00 A | 2026-06-23 10:00 A |  | 100% | start no earlier than 2026-06-23 09:00 | Труфанов А | 1h | 1h |
| 1714 | 3.84 | убрать трубу нерж в коридоре возле охладителя в комнату на выходе из цеха | manual | 1h | 2026-06-20 09:00 A | 2026-06-20 10:00 A |  | 100% | start no earlier than 2026-06-20 09:00 | Бундин В | 1h | 1h |
| 1715 | 3.85 | капает с улитки вытяжки печи- просверлить сверло 6мм |  | 1h | 2026-06-20 09:00 A | 2026-06-22 10:00 A |  | 100% | start no earlier than 2026-06-20 09:00 | Дедов В | 1h | 1h |
| 1716 | 3.86 | герметизация всех стыков вневмотрубы аллюминевым скотчем (улитка с печи на жиры) | manual | 1h | 2026-06-21 09:00 A | 2026-06-21 10:00 A |  | 100% | start no earlier than 2026-06-21 09:00 | Труфанов А | 1h | 1h |
| 1717 | 3.87 | отпилить одну перекладину опоры вентиляции, чтобы открывалась дверь печи | manual | 3h | 2026-06-21 09:00 A | 2026-06-21 12:00 A |  | 100% | start no earlier than 2026-06-21 09:00 | Бундин В | 3h | 3h |
| 1718 | 3.88 | проверка подачи воды в прекондиционер | manual | 1h | 2026-06-21 09:00 A | 2026-06-21 10:00 A |  | 100% | start no earlier than 2026-06-21 09:00 | Труфанов А | 1h | 1h |
| 1719 | 3.89 | включаем печь, прожигаем масло- чтобы вагорело и не дымило… контроль |  | 1h | 2026-06-23 09:00 A | 2026-06-23 10:00 A |  | 100% | start no earlier than 2026-06-23 09:00 | Шуранов Ю | 1h | 1h |
| 1720 | 3.90 | прикрутить горловину прекондиционера (находиться в комнате на выходе из цеха) | manual | 1h | 2026-06-20 09:00 A | 2026-06-20 10:00 A |  | 100% | start no earlier than 2026-06-20 09:00 | Бундин В | 1h | 1h |
| 1721 | 3.91 | на 1 и 2 зоне температура растет больше факта- проверить |  | 1h | 2026-06-23 09:00 A | 2026-06-23 10:00 A |  | 100% | start no earlier than 2026-06-23 09:00 | Труфанов А | 1h | 1h |
| 1722 | 3.92 | собрать парогенератор (насос+ вход вода в парик) |  | 1h | 2026-06-19 09:00 A | 2026-06-19 10:00 A |  | 100% | start no earlier than 2026-06-19 09:00 | Дедов В | 1h | 1h |
| 1723 | 3.93 | увеличить частоту на пневмоулитку с печи в жиры |  | 1h | 2026-06-19 09:00 A | 2026-06-19 10:00 A |  | 100% | start no earlier than 2026-06-19 09:00 | Дедов В | 1h | 1h |
| 1724 | 3.94 | трубу жиротопки утеплить |  | 2h | 2026-06-18 09:00 A | 2026-06-18 11:00 A |  | 100% | start no earlier than 2026-06-18 08:00 | Труфанов А | 2h | 2h |
| 1725 | 3.95 | установка смесителя душа 2 этаж продолжить |  | 4h | 2026-07-07 09:00 A | 2026-07-07 13:00 A |  | 100% | start no earlier than 2026-07-07 09:00 | Бундин В | 4h | 4h |
| 1726 | 3.96 | на прекондеционере настроить премыкание на всех дверцах | manual | 3h | 2026-06-21 09:00 A | 2026-06-21 12:00 A |  | 100% | start no earlier than 2026-06-21 09:00 | Труфанов А | 3h | 3h |
| 1727 | 3.97 | обрезить шпильки, которые торчат, на воздуховодах вентиляции (зона навесок и жиров) |  | 2h | 2026-06-18 09:00 A | 2026-06-18 11:00 A |  | 100% | start no earlier than 2026-06-18 08:00 | Труфанов А | 2h | 2h |

| ID | WBS | Task | Type | Duration | Start | Finish | Predecessors | Complete | Constraint | Resources | Work | Actual work |
| --- | --- | --- | --- | --- | --- | --- | --- | --- | --- | --- | --- | --- |
| 1728 | 3.98 | **модернизация схема ШУ жиротопки - отключается циркуляц насос при достжении температуры** |  | 5.5d | 2026-06-07 09:00 A | 2026-06-15 13:00 A |  | 100% |  |  | 5h | 5h |
| 1729 | 3.98.1 | изучить схему, согласовать предложения модернизации |  | 1h | 2026-06-07 09:00 A | 2026-06-08 10:00 A |  | 100% | start no earlier than 2026-06-07 09:00 | Дедов В | 1h | 1h |
| 1730 | 3.98.2 | реализации модернизации |  | 4h | 2026-06-15 09:00 A | 2026-06-15 13:00 A | 1729 | 100% | start no earlier than 2026-06-15 09:00 | Дедов В | 4h | 4h |
| 1731 | 3.99 | **сборка квадропак с системой дозации** |  | 56.5d | 2026-06-18 09:00 A | 2026-09-04 13:00 A |  | 100% |  |  | 67h | 67h |
| 1732 | 3.99.1 | сборка нория |  | 8h | 2026-07-17 09:00 A | 2026-07-17 18:00 A |  | 100% | start no earlier than 2026-07-17 09:00 | Некрасов А; Тимофеев В | 15h | 15h |
| 1733 | 3.99.2 | сборка площадка |  | 4h | 2026-07-20 09:00 A | 2026-07-20 13:00 A | 1732 | 100% | start no earlier than 2026-07-09 08:00 | Некрасов А; Тимофеев В | 8h | 8h |
| 1734 | 3.99.3 | монтаж весы |  | 4h | 2026-07-20 14:00 A | 2026-07-20 18:00 A | 1733 | 100% | start no earlier than 2026-07-09 08:00 | Некрасов А; Тимофеев В | 8h | 8h |
| 1735 | 3.99.4 | подключить квадропак / пусконаладка |  | 4h | 2026-09-04 09:00 A | 2026-09-04 13:00 A |  | 100% | start no earlier than 2026-09-04 09:00 | Зорькин В; Труфанов А | 8h | 8h |
| 1736 | 3.99.5 | разгрузка / распаковка |  | 1h | 2026-06-18 09:00 A | 2026-06-18 10:00 A |  | 100% | start no earlier than 2026-06-18 09:00 | Некрасов А; Тимофеев В | 1h | 1h |
| 1737 | 3.99.6 | сборка рама в 1ц над столом выгрузки пакетов. Примерка/доработка рамы по месту |  | 4h | 2026-07-09 09:00 A | 2026-07-09 13:00 A |  | 100% | start no earlier than 2026-07-09 09:00 | Некрасов А; Макаревич А; Тимофеев В | 11h | 11h |
| 1738 | 3.99.7 | сборка дозатор |  | 4h | 2026-07-09 09:00 A | 2026-07-09 13:00 A |  | 100% | start no earlier than 2026-07-09 09:00 | Зорькин В; Макаревич А; Некрасов А; Тимофеев В | 16h | 16h |
| 1739 | 3.100 | устранить заусенцы пол площадки жиротопки. Рвет тряпку уборщица. |  | 4h | 2026-05-31 09:00 A | 2026-06-01 13:00 A |  | 100% | start no earlier than 2026-05-31 09:00 | Макаревич А | 4h | 4h |
| 1740 | 3.101 | **востановить насос циркуляция воды на жиротопке** |  | 8.32d | 2026-06-06 09:00 A | 2026-06-18 11:35 A |  | 100% |  |  | 3.58h | 3.58h |
| 1741 | 3.101.1 | разборка насос / выяснить причину заклинивания |  | 1h | 2026-06-06 09:00 A | 2026-06-08 10:00 A |  | 100% | start no earlier than 2026-06-06 09:00 | Бундин В | 1h | 1h |
| 1742 | 3.101.2 | заявка аналог |  | 20min | 2026-06-08 09:00 A | 2026-06-08 09:20 A | 1741 | 100% | start no earlier than 2026-06-08 09:00 | Шуранов Ю | 0.33h | 0.33h |
| 1743 | 3.101.3 | контроль доставка |  | 15min | 2026-06-17 09:20 A | 2026-06-17 09:35 A | 1742FS+7d | 100% | start no earlier than 2026-06-05 08:00 | Шуранов Ю | 0.25h | 0.25h |
| 1744 | 3.101.4 | замена |  | 2h | 2026-06-18 09:35 A | 2026-06-18 11:35 A | 1743FS+1d | 100% | start no earlier than 2026-06-05 08:00 | Тимофеев В | 2h | 2h |
| 1745 | 3.102 | **жиротопка** |  | 9.5d | 2026-06-09 09:00 A | 2026-06-22 13:00 A |  | 100% |  |  | 9h | 9h |
| 1746 | 3.102.1 | (проверить двигатель и сам насос) |  | 1h | 2026-06-09 09:00 A | 2026-06-09 10:00 A |  | 100% | start no earlier than 2026-06-09 09:00 | Тимофеев В | 1h | 1h |
| 1747 | 3.102.2 | ремонт заклинившего насоса жиров (сняли сегодя голову ) |  | 1h | 2026-06-18 09:00 A | 2026-06-18 10:00 A | 1746 | 100% | start no earlier than 2026-06-18 09:00 | Труфанов А | 1h | 1h |
| 1748 | 3.102.3 | установить насос, который перебрал Труфанов поставить на штатное место / если не заработает ставим новый | manual | 1h | 2026-06-21 09:00 A | 2026-06-21 10:00 A | 1747 | 100% | start no earlier than 2026-06-21 09:00 | Бундин В | 1h | 1h |
| 1749 | 3.102.4 | восстановить работу пускателя на насос перекачки с бака в бак |  | 4h | 2026-06-20 09:00 A | 2026-06-22 13:00 A |  | 100% | start no earlier than 2026-06-20 09:00 | Дедов В | 4h | 4h |
| 1750 | 3.102.5 | подключить все шланги подачи жира в баки | manual | 2h | 2026-06-22 09:00 A | 2026-06-22 11:00 A |  | 100% | start no earlier than 2026-06-22 09:00 | Труфанов А | 2h | 2h |
| 1751 | 3.103 | **трасса нерж жиротопка- баки, найти утечки устранить** |  | 0.75d | 2026-05-23 09:00 A | 2026-05-25 16:00 A |  | 100% |  |  | 6h | 6h |
| 1752 | 3.103.1 | заварить места утечки и восстановить утеплитель + греющий кабель |  | 6h | 2026-05-23 09:00 A | 2026-05-25 16:00 A |  | 100% | start no earlier than 2026-05-23 09:00 | Макаревич А | 6h | 6h |

| ID | WBS | Task | Duration | Start | Finish | Predecessors | Complete | Remaining | Actual start | Actual finish | Total slack | Constraint | Resources | Work | Actual work |
| --- | --- | --- | --- | --- | --- | --- | --- | --- | --- | --- | --- | --- | --- | --- | --- |
| 1753 | 3.104 | **защита ворот на мезонине загрузки** | 8h? | 2026-05-22 09:00 | 2026-05-22 18:00 |  | 100% |  | 2026-05-29 09:00 | 2026-08-13 13:00 |  |  |  | 27h | 27h |
| 1754 | 3.104.1 | покрасить конструкцию | 2h | 2026-05-31 09:00 A | 2026-06-01 11:00 A |  | 100% |  |  |  |  | start no earlier than 2026-05-31 09:00 | Макаревич А | 2h | 2h |
| 1755 | 3.104.2 | приварить дополнительную перекладину на защиту воротины | 2h | 2026-07-07 09:00 A | 2026-07-07 11:00 A |  | 100% |  |  |  |  | start no earlier than 2026-07-07 09:00 | Труфанов А; Тимофеев В | 4h | 4h |
| 1756 | 3.104.3 | заказать щетку и битумную ленту | 1h | 2026-05-31 11:00 A | 2026-06-01 10:00 A | 1754 | 100% |  |  |  |  | start no earlier than 2026-05-22 09:00 | Шуранов Ю | 1h | 1h |
| 1757 | 3.104.4 | контроль доставки | 1d? | 2026-05-31 12:00 A | 2026-06-01 18:00 A | 1756 | 100% |  |  |  |  | start no earlier than 2026-05-29 09:00 | Шуранов Ю | 8h | 8h |
| 1758 | 3.104.5 | установка щетки | 4h | 2026-08-13 09:00 A | 2026-08-13 13:00 A |  | 100% |  |  |  |  | start no earlier than 2026-08-13 09:00 | Макаревич А | 4h | 4h |
| 1759 | 3.104.6 | монтаж | 1d? | 2026-05-29 09:00 A | 2026-05-29 18:00 A |  | 100% |  |  |  |  | start no earlier than 2026-05-29 09:00 | Некрасов А | 8h | 8h |
| 1760 | 3.105 | установить щетку на поломоечную машину (щетка на складе) | 2h | 2026-05-21 09:00 A | 2026-05-21 11:00 A |  | 100% |  |  |  |  | start no earlier than 2026-05-21 08:00 | Бундин В | 2h | 2h |
| 1761 | 3.106 | площадка мезонина зона фасовки- убрать щели профиля битумной лентой | 2h | 2026-05-21 09:00 A | 2026-05-21 11:00 A |  | 100% |  |  |  |  | start no earlier than 2026-05-21 09:00 | Бундин В | 2h | 2h |
| 1762 | 3.107 | прикрутить дюзы форсунок подачи воды в прекондиционер, взять у меня на столе. | 1h | 2026-05-22 09:00 A | 2026-05-22 10:00 A |  | 100% |  |  |  |  | start no earlier than 2026-05-22 09:00 | Тимофеев В | 1h | 1h |
| 1763 | 3.108 | проверить насос подачи жира со 2 бака на барабаны, Викторович его разобрал | 2h | 2026-05-19 08:00 A | 2026-05-19 11:00 A |  | 100% |  |  |  |  | start no earlier than 2026-05-19 08:00 | Дедов В | 2h | 2h |
| 1764 | 3.109 | проверить рабочий или нет циркуляционный насос для змеевика на жиротопке | 1h | 2026-05-19 08:00 A | 2026-05-19 10:00 A |  | 100% |  |  |  |  | start no earlier than 2026-05-19 08:00 | Дедов В | 1h | 1h |
| 1765 | 3.110 | проверка оборудования на жирах водой | 3h | 2026-05-19 09:00 A | 2026-05-19 12:00 A |  | 100% |  |  |  |  | start no earlier than 2026-05-20 09:00 | Тимофеев В | 3h | 3h |
| 1766 | 3.111 | покраска пол под лотком барабан-охладитель | 1h | 2026-05-15 09:00 A | 2026-05-15 10:00 A |  | 100% |  |  |  |  | start no earlier than 2026-05-15 09:00 | Бобренок В | 1h | 1h |
| 1767 | 3.112 | **ремонт ворот рольставня** | 4.12d | 2026-05-14 09:00 A | 2026-05-20 10:00 A |  | 100% |  |  |  |  |  |  | 2h | 2h |
| 1768 | 3.112.1 | вызывать сервис | 1h | 2026-05-14 09:00 A | 2026-05-14 10:00 A |  | 100% |  |  |  |  | start no earlier than 2026-05-14 09:00 | Зорькин В | 1h | 1h |
| 1769 | 3.112.2 | контроль работ | 1h | 2026-05-20 09:00 A | 2026-05-20 10:00 A |  | 100% |  |  |  |  | start no earlier than 2026-05-20 09:00 | Зорькин В | 1h | 1h |
| 1770 | 3.113 | вырезать косая пластина в воронку пневмотранспорта на подачу жиров | 2h | 2026-05-14 09:00 A | 2026-05-14 11:00 A |  | 100% |  |  |  |  | start no earlier than 2026-05-14 09:00 | Макаревич А | 2h | 2h |
| 1771 | 3.114 | убрать бороду от вентиляторов | 4h | 2026-05-12 09:00 A | 2026-05-12 13:00 A |  | 100% |  |  |  |  | start no earlier than 2026-05-12 09:00 | Некрасов А; Труфанов А | 8h | 8h |
| 1772 | 3.115 | монтаж кабель управления заслонками вентиляторы окно | 4h | 2026-05-20 09:00 A | 2026-05-20 13:00 A |  | 100% |  |  |  |  | start no earlier than 2026-05-22 09:00 | Некрасов А; Бундин В | 8h | 8h |
| 1773 | 3.116 | **автоматика управления смесителями** | 80.38d | 2026-05-04 09:00 A | 2026-08-24 12:00 |  | 91% | 6.89d |  |  | 151.22d |  |  | 35h | 32h |
| 1774 | 3.116.1 | поменять местами переключатели управления смесителями левый что бы включал поперечный смеситель | 2h | 2026-07-12 09:00 A | 2026-07-13 11:00 A |  | 100% |  |  |  |  | start no earlier than 2026-07-12 09:00 | Дедов В | 2h | 2h |
| 1775 | 3.116.2 | сделать подключение красных смесителей по схеме Домоводова | 22h | 2026-05-18 09:00 A | 2026-05-20 16:00 A |  | 100% |  |  |  |  | start no earlier than 2026-05-19 09:00 | Дедов В | 22h | 22h |
| 1776 | 3.116.3 | доработка схемы управления смесителями по логике ТЗ, упорядочить монтаж, промаркировать соденения | 8h | 2026-05-04 09:00 A | 2026-05-04 18:00 A |  | 100% |  |  |  |  | start no earlier than 2026-05-04 09:00 | Дедов В | 8h | 8h |
| 1777 | 3.116.4 | уложить красиво все провода в шкафу управления смесителями | 3h | 2026-08-24 09:00 | 2026-08-24 12:00 |  |  |  |  |  | 151.22d | start no earlier than 2026-08-24 09:00 | Дедов В | 3h |  |

| ID | WBS | Task | Type | Duration | Start | Finish | Predecessors | Complete | Constraint | Resources | Work | Actual work |
| --- | --- | --- | --- | --- | --- | --- | --- | --- | --- | --- | --- | --- |
| 1778 | 3.117 | **установить воздуховод на 300мм на красные смесители** |  | 6.25d | 2026-05-08 08:00 A | 2026-05-18 11:00 A |  | 100% |  |  | 4h | 4h |
| 1779 | 3.117.1 | заказать другой диаметр | milestone | 0d | 2026-05-08 08:00 A | 2026-05-08 08:00 A |  | 100% | start no earlier than 2026-05-08 08:00 | Зорькин В |  |  |
| 1780 | 3.117.2 | установить ф300 | milestone | 0h | 2026-05-13 09:00 A | 2026-05-13 09:00 A |  | 100% | start no earlier than 2026-05-13 09:00 | Тимофеев В; Зорькин В |  |  |
| 1781 | 3.117.3 | красные смесители вернуть воздуховоды (доработать рукав пересыпки воронка-смеситель) |  | 2h | 2026-05-13 09:00 A | 2026-05-13 11:00 A |  | 100% | start no earlier than 2026-05-13 09:00 | Тимофеев В | 2h | 2h |
| 1782 | 3.117.4 | сборка рукав на второй смеситель. Сшить по образцу |  | 2h | 2026-05-18 09:00 A | 2026-05-18 11:00 A |  | 100% | start no earlier than 2026-05-18 09:00 | Тимофеев В | 2h | 2h |
| 1783 | 3.118 | проверить почему не запускается приточная вентиляция в вент. Камере 7,5кВт |  | 1h | 2026-04-29 08:00 A | 2026-04-29 10:00 A |  | 100% | start no earlier than 2026-04-29 08:00 | Дедов В | 1h | 1h |
| 1784 | 3.119 | прозвонить кнопку индикации водителя под сиденьем (позвони объясню) |  | 2h | 2026-04-15 09:00 A | 2026-04-15 11:00 A |  | 100% | start no earlier than 2026-04-15 08:00 | Бундин В | 2h | 2h |
| 1785 | 3.120 | проверить приход с Китая по шнекам и гильзам |  | 1h | 2026-04-09 09:00 A | 2026-04-09 10:00 A |  | 100% | start no earlier than 2026-04-09 08:00 | Шуранов Ю | 1h | 1h |
| 1786 | 3.121 | собрать и установить мойку (со старой прикрутить смеситель) мойка у Веры на складе на 2 верхнем ярусе стеллажей | manual | 2h | 2026-04-05 09:00 A | 2026-04-05 11:00 A |  | 100% | start no earlier than 2026-04-05 09:00 | Труфанов А | 2h | 2h |
| 1787 | 3.122 | вывоз 3 поддона с мусором |  | 30min | 2026-03-24 09:00 A | 2026-03-24 09:30 A |  | 100% | start no earlier than 2026-03-24 09:00 | Некрасов А; Труфанов А | 1h | 1h |
| 1788 | 3.123 | установить отбойники на стеллажи | manual | 8h | 2026-03-29 09:00 A | 2026-03-29 18:00 A |  | 100% | start no earlier than 2026-03-29 09:00 | Бундин В | 8h | 8h |
| 1789 | 3.124 | установить отбойники на стеллажи | manual | 6h | 2026-04-18 09:00 A | 2026-04-18 16:00 A |  | 100% | start no earlier than 2026-04-18 09:00 | Бобренок В | 6h | 6h |
| 1790 | 3.125 | уборка зона курилка / венткамера |  | 4h | 2026-03-17 09:00 A | 2026-03-17 13:00 A |  | 100% | start no earlier than 2026-03-17 09:00 | Тимофеев В; Некрасов А; Макаревич А; Труфанов А | 16h | 16h |
| 1791 | 3.126 | **сборка квадропак** |  | 13.25d | 2026-05-06 09:00 A | 2026-05-25 11:00 A |  | 100% |  |  | 14h | 14h |
| 1792 | 3.126.1 | подвести воздух к квадропаку |  | 4h | 2026-05-22 09:00 A | 2026-05-22 13:00 A |  | 100% | start no earlier than 2026-05-22 09:00 | Тимофеев В | 4h | 4h |
| 1793 | 3.126.2 | установить перед пневмораспределителями влагоотделитель |  | 2h | 2026-05-24 09:00 A | 2026-05-25 11:00 A |  | 100% | start no earlier than 2026-05-24 09:00 | Дедов В | 2h | 2h |
| 1794 | 3.126.3 | подключить квадропак к щитку кабель 5х2,5 |  | 4h | 2026-05-06 09:00 A | 2026-05-06 13:00 A |  | 100% | start no earlier than 2026-05-06 09:00 | Труфанов А; Тимофеев В | 8h | 8h |
| 1795 | 3.127 | крепление магистрали компрессора. Зона дрожировки |  | 1h | 2026-03-08 09:00 A | 2026-03-09 10:00 A |  | 100% | start no earlier than 2026-03-08 09:00 | Бундин В | 1h | 1h |
| 1796 | 3.128 | Собрать транспортер тип2 (уточнить у Шуранова)/ доделать |  | 3h | 2026-03-08 09:00 A | 2026-03-09 12:00 A |  | 100% | start no earlier than 2026-03-08 09:00 | Бобренок В | 3h | 3h |
| 1797 | 3.129 | **Покраска лестницы** |  | 43d | 2026-03-04 09:00 A | 2026-05-01 18:00 A |  | 100% |  |  | 116.33h | 116.33h |
| 1798 | 3.129.1 | Заявка на краску |  | 20min | 2026-03-04 09:00 A | 2026-03-04 09:20 A |  | 100% | start no earlier than 2026-03-04 09:00 | Зорькин В | 0.33h | 0.33h |
| 1799 | 3.129.2 | Доставка |  | 10d | 2026-03-04 09:20 A | 2026-03-18 09:20 A | 1798 | 100% | start no earlier than 2026-03-03 08:00 | Карабанов | 80h | 80h |
| 1800 | 3.129.3 | Работа по покраске |  | 6h | 2026-04-28 09:00 A | 2026-04-28 16:00 A | 1799 | 100% | start no earlier than 2026-04-28 09:00 | оперторы2; Олег | 12h | 12h |
| 1801 | 3.129.4 | покраска колонны в коридоре |  | 4h | 2026-04-28 09:00 A | 2026-04-28 13:00 A |  | 100% | start no earlier than 2026-04-28 08:00 | оперторы2; Олег | 8h | 8h |
| 1802 | 3.129.5 | покарска потолок в корридоре |  | 2d | 2026-04-30 09:00 A | 2026-05-01 18:00 A |  | 100% | start no earlier than 2026-04-30 09:00 | оператор2 | 16h | 16h |

| ID | WBS | Task | Duration | Start | Finish | Predecessors | Complete | Actual start | Actual finish | Total slack | Constraint | Resources | Work | Actual work |
| --- | --- | --- | --- | --- | --- | --- | --- | --- | --- | --- | --- | --- | --- | --- |
| 1803 | 3.130 | **доработка лотка барабан-охладитель - снизить скорость падения, установить сетку** | 1.5d? | 2026-04-14 09:00 | 2026-04-15 13:00 |  | 100% | 2026-05-13 09:00 | 2026-06-17 18:00 |  |  |  | 46.75h | 46.75h |
| 1804 | 3.130.1 | сборка кронштейны + стека | 5h | 2026-05-13 09:00 A | 2026-05-13 15:00 A |  | 100% |  |  |  | start no earlier than 2026-05-13 09:00 | Труфанов А; Некрасов А | 10h | 10h |
| 1805 | 3.130.2 | сборка ручки, установка. Фотоотчет | 2h | 2026-05-15 09:00 A | 2026-05-15 11:00 A |  | 100% |  |  |  | start no earlier than 2026-05-15 09:00 | Некрасов А; Труфанов А | 4h | 4h |
| 1806 | 3.130.3 | сборка вращающаяся заслонка | 4h | 2026-05-15 11:00 A | 2026-05-15 16:00 A | 1805 | 100% |  |  |  | start no earlier than 2026-05-15 09:00 | Некрасов А; Труфанов А | 8h | 8h |
| 1807 | 3.130.4 | доработка пластины, что бы не клинила | 1h | 2026-05-21 09:00 A | 2026-05-21 10:00 A |  | 100% |  |  |  | start no earlier than 2026-05-22 09:00 | Некрасов А; Бундин В | 2h | 2h |
| 1808 | 3.130.5 | заказ на лазере пластину для регулировки шибера | 1d? | 2026-05-25 09:00 A | 2026-05-25 18:00 A |  | 100% |  |  |  | start no earlier than 2026-05-25 09:00 | Зорькин В | 8h | 8h |
| 1809 | 3.130.6 | чертеж пластина фиксации рычага | 2h | 2026-05-19 09:00 A | 2026-05-19 11:00 A | 1806 | 100% |  |  |  | start no earlier than 2026-05-19 09:00 | Зорькин В | 2h | 2h |
| 1810 | 3.130.7 | заявка на изготвление на лазер | 15min | 2026-05-20 11:00 A | 2026-05-20 11:15 A | 1809FS+1d | 100% |  |  |  | start no earlier than 2026-05-15 08:00 | Зорькин В | 0.25h | 0.25h |
| 1811 | 3.130.8 | контроль изг | 15min | 2026-06-01 09:00 A | 2026-06-01 09:15 A | 1810FS+5d | 100% |  |  |  | start no earlier than 2026-06-01 09:00 | Зорькин В | 0.25h | 0.25h |
| 1812 | 3.130.9 | доставка орг | 15min | 2026-06-05 09:00 A | 2026-06-05 09:15 A | 1811FS+1d | 100% |  |  |  | start no earlier than 2026-06-05 09:00 | Зорькин В | 0.25h | 0.25h |
| 1813 | 3.130.10 | сборка рычага | 4h | 2026-06-08 09:15 A | 2026-06-08 14:15 A | 1812FS+1d | 100% |  |  |  | start no earlier than 2026-06-06 09:00 | Бундин В | 4h | 4h |
| 1814 | 3.130.11 | сделать напраляшку на шибере регулируемую- сыпит в одну сторону | 1d? | 2026-06-17 09:00 A | 2026-06-17 18:00 A |  | 100% |  |  |  | start no earlier than 2026-06-23 09:00 | Тимофеев В | 8h | 8h |
| 1815 | 3.131 | сборка система отопления 2 этаж | 1d? | 2026-06-15 09:00 | 2026-06-15 18:00 |  |  |  |  | 200.59d | start no earlier than 2026-06-15 09:00 | Труфанов А; Некрасов А; Олег | 24h |  |
| 1816 | 3.132 | **заменить сопряжение смесителей на гибк вставку** | 29.25d | 2026-03-19 09:00 A | 2026-04-29 11:00 A |  | 100% |  |  |  |  |  | 122.5h | 122.5h |
| 1817 | 3.132.1 | заявка | 30min | 2026-03-19 09:00 A | 2026-03-19 09:30 A |  | 100% |  |  |  | start no earlier than 2026-03-19 09:00 | Зорькин В | 0.5h | 0.5h |
| 1818 | 3.132.2 | доставка | 15d | 2026-03-19 09:30 A | 2026-04-09 09:30 A | 1817 | 100% |  |  |  | start no earlier than 2026-02-27 08:00 | Карабанов | 120h | 120h |
| 1819 | 3.132.3 | замена | 2h | 2026-04-29 09:00 A | 2026-04-29 11:00 A | 1818 | 100% |  |  |  | start no earlier than 2026-04-29 09:00 | Тимофеев В | 2h | 2h |
| 1820 | 3.133 | **приточная вентиляция** | 154.25d | 2026-03-06 09:00 A | 2026-09-29 11:00 A |  | 100% |  |  |  |  |  | 13.5h | 13.5h |
| 1821 | 3.133.1 | визит Евгения. Контроль монтажа | 30min | 2026-03-06 09:00 A | 2026-03-06 09:30 A |  | 100% |  |  |  | start no earlier than 2026-03-06 09:00 | Домоводов К | 0.5h | 0.5h |
| 1822 | 3.133.2 | подключить силовой кабель в ШУ (лежит в лотке) | 3h | 2026-03-13 09:00 A | 2026-03-13 12:00 A |  | 100% |  |  |  | start no earlier than 2026-03-13 09:00 | Подрядчик | 3h | 3h |
| 1823 | 3.133.3 | монтаж изоляционных прокладок вводный автомат между фазами | 2h | 2026-09-24 09:00 A | 2026-09-24 11:00 A |  | 100% |  |  |  | start no earlier than 2026-09-24 09:00 | Дедов В | 2h | 2h |
| 1824 | 3.133.4 | подключить нулевой провод шкаф управления | 2h | 2026-09-24 09:00 A | 2026-09-24 11:00 A |  | 100% |  |  |  | start no earlier than 2026-09-24 09:00 | Дедов В | 2h | 2h |
| 1825 | 3.133.5 | монтаж перемычек от автомата на ТВ реле . Звонить Дедову | 2h | 2026-09-24 09:00 A | 2026-09-24 11:00 A |  | 100% |  |  |  | start no earlier than 2026-09-24 09:00 | Дедов В | 2h | 2h |
| 1826 | 3.133.6 | замена схемы включения вентилятор вытяжка / приточка | 2h | 2026-05-04 09:00 A | 2026-05-04 11:00 A |  | 100% |  |  |  | start no earlier than 2026-05-04 09:00 | Дедов В | 2h | 2h |
| 1827 | 3.133.7 | проверить все подключения / тест | 2h | 2026-09-29 09:00 A | 2026-09-29 11:00 A |  | 100% |  |  |  | start no earlier than 2026-09-29 09:00 | Дедов В | 2h | 2h |
| 1828 | 3.134 | установить гидроаккумулятор | 2h | 2026-03-03 09:00 A | 2026-03-03 11:00 A |  | 100% |  |  |  | start no earlier than 2026-03-03 09:00 | Тимофеев В | 2h | 2h |
| 1829 | 3.135 | тест герметичности. жиропровод нерж оборудовать греющим кабелем + утеплитель. | 2h | 2026-06-01 09:00 | 2026-06-01 11:00 |  |  |  |  | 211.34d | start no earlier than 2026-05-31 09:00 | Макаревич А | 2h |  |

| ID | WBS | Task | Type | Duration | Start | Finish | Complete | Actual finish | Total slack | Constraint | Resources | Work | Actual work |
| --- | --- | --- | --- | --- | --- | --- | --- | --- | --- | --- | --- | --- | --- |
| 1830 | 3.136 | **установить перила площадка загрузки навески** |  | 0.25d | 2026-05-27 09:00 A | 2026-05-27 11:00 A | 100% |  |  |  |  | 2h | 2h |
| 1831 | 3.136.1 | покрасить перила |  | 2h | 2026-05-27 09:00 A | 2026-05-27 11:00 A | 100% |  |  | start no earlier than 2026-05-27 09:00 | оператор2 | 2h | 2h |
| 1832 | 3.137 | дорабать качелю безопасности на площадке загрузки навески что бы не задевала за вентиляцию |  | 2h | 2026-05-12 09:00 A | 2026-05-12 11:00 A | 100% |  |  | start no earlier than 2026-05-12 09:00 | Некрасов А | 2h | 2h |
| 1833 | 3.138 | подготовить отражатели тепла на подшипники печи линия 4 |  | 8h | 2025-09-01 09:00 | 2025-09-01 18:00 |  |  | 405.59d | start no earlier than 2025-08-30 09:00 | Тимофеев В | 8h |  |
| 1834 | 3.139 | усилить раму прекондиционера |  | 1d? | 2026-04-28 08:00 A | 2026-04-28 18:00 A | 100% |  |  | start no earlier than 2026-04-28 08:00 | Тимофеев В | 8h | 8h |
| 1835 | 3.140 | переместить магнит загрузки сырья |  | 2h | 2026-05-07 09:00 A | 2026-05-07 11:00 A | 100% |  |  | start no earlier than 2026-05-07 09:00 | Тимофеев В | 2h | 2h |
| 1836 | 3.141 | труба выход пара греет шнек - переместить |  | 1d? | 2026-06-19 09:00 | 2026-06-19 18:00 |  |  | 196.59d | start no earlier than 2026-06-19 09:00 | Тимофеев В | 8h |  |
| 1837 | 3.142 | герметизация примыкание на выходе из печи |  | 2d | 2026-05-18 09:00 A | 2026-05-19 18:00 A | 100% |  |  | start no earlier than 2026-05-18 09:00 | Олег | 16h | 16h |
| 1838 | 3.143 | обшить стены курилки |  | 2d | 2026-04-30 09:00 A | 2026-05-01 18:00 A | 100% |  |  | start no earlier than 2026-04-30 09:00 | Олег; Некрасов А | 32h | 32h |
| 1839 | 3.144 | покраска рамы воздуховодов уличные |  | 4h | 2026-05-27 09:00 | 2026-05-27 13:00 |  |  | 214.09d | start no earlier than 2026-05-27 09:00 | оператор2 | 4h |  |
| 1840 | 3.145 | Выяснить количество теплопотерь с печи на входе |  | 1h | 2026-08-28 09:00 | 2026-08-28 10:00 |  |  | 147.47d | start no earlier than 2026-08-28 09:00 | Зорькин В; Бобренок В | 2h |  |
| 1841 | 3.146 | Переделка входа пневмотрассы с печи на жиры, сделать плавный переход из двух углов по 45 |  | 4h | 2026-07-24 09:00 | 2026-07-24 13:00 |  |  | 172.09d | start no earlier than 2026-07-24 09:00 | Бундин В | 4h |  |
| 1842 | 3.147 | **Печь** |  | 0d | 2026-07-25 09:00 A | 2026-07-26 11:00 A | 100% |  |  |  |  | 6h | 6h |
| 1843 | 3.147.1 | Переделка входа пневмотрассы с печи на жиры, сделать плавный переход из двух углов по 45, закончить если Валентин не доделал или взять в работу если Валентин не начал. Уточнить у него как он хотел сделать. | manual | 4h | 2026-07-25 09:00 A | 2026-07-25 13:00 A | 100% |  |  | start no earlier than 2026-07-25 09:00 | Макаревич А | 4h | 4h |
| 1844 | 3.147.2 | 4 зона шкаф управления не набирает заданную температуру, выяснить причину/устранить | manual | 2h | 2026-07-26 09:00 A | 2026-07-26 11:00 A | 100% |  |  | start no earlier than 2026-07-26 09:00 | Бобренок В | 2h | 2h |
| 1845 | 3.148 | **розетки** |  | 0.25d | 2026-07-25 09:00 A | 2026-07-27 11:00 A | 100% |  |  |  |  | 6h | 6h |
| 1846 | 3.148.1 | Монтаж розетки для болера, где мойка экструдера, подключиться к резерву ШУ на экструдере | manual | 2h | 2026-07-25 09:00 A | 2026-07-25 11:00 A | 100% |  |  | start no earlier than 2026-07-25 09:00 | Бобренок В | 2h | 2h |
| 1847 | 3.148.2 | Монтаж розетки, где ворота выхода готовой продукции | manual | 2h | 2026-07-27 09:00 A | 2026-07-27 11:00 A | 100% |  |  |  | Некрасов А; Труфанов А | 4h | 4h |
| 1848 | 3.149 | **Дражжировка** |  | 0d | 2026-07-26 09:00 A | 2026-07-26 11:00 A | 100% |  |  |  |  | 2h | 2h |
| 1849 | 3.149.1 | Устранить течь за раковиной. Вода перекрывается на потолке возле главной вентилляции | manual | 2h | 2026-07-26 09:00 A | 2026-07-26 11:00 A | 100% |  |  | start no earlier than 2026-07-26 09:00 | Бобренок В | 2h | 2h |
| 1850 | 3.150 | обшить стены вент камеры |  | 2d | 2026-05-06 09:00 A | 2026-05-07 18:00 A | 100% |  |  | start no earlier than 2026-05-06 09:00 | Олег; Некрасов А | 32h | 32h |
| 1851 | 3.151 | убрать металл 100*100 в зону охладителя или корридор |  | 1h | 2026-03-02 09:00 A | 2026-03-02 10:00 A | 100% |  |  | start no earlier than 2026-03-02 09:00 | Некрасов А; Труфанов А | 2h | 2h |
| 1852 | 4 | **4 склад** |  | 109.75d | 2026-03-13 09:00 A | 2026-07-15 16:00 | 100% | 2026-07-29 11:00 |  |  |  | 93.25h | 93.25h |
| 1853 | 4.1 | реверс направления кнопок движения вперед-назад ричтрака |  | 2h | 2026-07-14 08:00 A | 2026-07-14 11:00 A | 100% |  |  | start no earlier than 2026-07-14 08:00 | Дедов В | 2h | 2h |
| 1854 | 4.2 | 2 ветки не работают светильники -разобраться |  | 1h | 2026-07-02 09:00 A | 2026-07-02 10:00 A | 100% |  |  | start no earlier than 2026-07-02 09:00 | Тимофеев В | 1h | 1h |
| 1855 | 4.3 | Выяснить почему перегорают светильники |  | 2h | 2026-07-29 08:00 A | 2026-07-29 11:00 A | 100% |  |  | start no earlier than 2026-07-29 08:00 | Дедов В | 2h | 2h |
| 1856 | 4.4 | замена светильников |  | 8h | 2026-04-17 09:00 A | 2026-04-17 18:00 A | 100% |  |  | start no earlier than 2026-04-17 08:00 | Некрасов А; Труфанов А | 16h | 16h |
| 1857 | 4.5 | сборка рохли 1шт |  | 1h | 2026-03-13 09:00 A | 2026-03-13 10:00 A | 100% |  |  | start no earlier than 2026-03-13 09:00 | Тимофеев В | 1h | 1h |
| 1858 | 4.6 | ремонт обрамление погрузочной рампы |  | 4h | 2026-05-28 09:00 A | 2026-05-28 13:00 A | 100% |  |  | start no earlier than 2026-05-28 09:00 | Олег | 4h | 4h |
| 1859 | 4.7 | замена неисправных светильников |  | 1d | 2026-03-14 09:00 A | 2026-03-16 18:00 A | 100% |  |  | start no earlier than 2026-03-14 09:00 | Некрасов А; Бобренок В | 15h | 15h |

| ID | WBS | Task | Type | Duration | Start | Finish | Predecessors | Complete | Remaining | Actual start | Total slack | Free slack | Constraint | Resources | Work | Actual work |
| --- | --- | --- | --- | --- | --- | --- | --- | --- | --- | --- | --- | --- | --- | --- | --- | --- |
| 1860 | 4.8 | **замена неисправных светильников** |  | 87.75d | 2026-03-16 09:00 A | 2026-07-15 16:00 A |  | 100% |  |  |  |  |  |  | 52.25h | 52.25h |
| 1861 | 4.8.1 | заявка светильники |  | 15min | 2026-03-16 09:00 A | 2026-03-16 09:15 A |  | 100% |  |  |  |  | start no earlier than 2026-03-16 09:00 | Шуранов Ю | 0.25h | 0.25h |
| 1862 | 4.8.2 | доставка |  | 5d | 2026-03-16 09:15 A | 2026-03-23 09:15 A | 1861 | 100% |  |  |  |  | start no earlier than 2026-03-12 08:00 | Карабанов | 40h | 40h |
| 1863 | 4.8.3 | замена |  | 6h | 2026-07-15 09:00 A | 2026-07-15 16:00 A | 1862 | 100% |  |  |  |  | start no earlier than 2026-07-15 09:00 | Некрасов А; Труфанов А | 12h | 12h |
| 1864 | 5 | **5 цех** |  | 970.25d? | 2023-05-29 09:00 A | 2027-02-02 11:00 |  | 64% | 352.97d? |  | 26.34d |  |  |  | 1925.75h | 1233.25h |
| 1866 | 5.1 | **изготовить бункер нерж** |  | 77d? | 2026-06-06 09:00 | 2026-09-16 18:00 |  | 94% | 4.72d? | 2026-03-16 09:00 |  |  |  |  | 159.5h | 147.5h |
| 1867 | 5.1.1 | доработка / покрасить уголок |  | 4h | 2026-10-19 09:00 | 2026-10-19 13:00 |  |  |  |  | 102.09d |  | start no earlier than 2026-10-19 08:00 | Бундин В | 4h |  |
| 1868 | 5.1.2 | составить чертеж |  | 1h | 2026-03-16 09:00 A | 2026-03-16 10:00 A |  | 100% |  |  |  |  | start no earlier than 2026-03-16 09:00 | Зорькин В | 1h | 1h |
| 1869 | 5.1.3 | заявка на нерж |  | 30min | 2026-03-16 10:00 A | 2026-03-16 10:30 A | 1868 | 100% |  |  |  |  | start no earlier than 2026-02-27 08:00 | Зорькин В | 0.5h | 0.5h |
| 1870 | 5.1.4 | доставка |  | 10d | 2026-04-23 09:00 A | 2026-05-06 18:00 A | 1869 | 100% |  |  |  |  | start no earlier than 2026-04-23 09:00 | Карабанов | 80h | 80h |
| 1871 | 5.1.5 | проверка черетежей / подготовка к сборке |  | 1h | 2026-10-12 09:00 A | 2026-10-12 10:00 A |  | 100% |  |  |  |  | start no earlier than 2026-10-12 09:00 | Труфанов А; Зорькин В | 2h | 2h |
| 1872 | 5.1.6 | сборка | manual | 2d | 2026-10-16 09:00 A | 2026-10-17 18:00 A | 1870, 1871 | 100% |  |  |  |  | start no earlier than 2026-10-16 09:00 | Макаревич А; Труфанов А | 32h | 32h |
| 1873 | 5.1.7 | сборка шибер |  | 1d? | 2026-10-16 09:00 A | 2026-10-16 18:00 A |  | 100% |  |  |  |  | start no earlier than 2026-10-16 09:00 | Макаревич А | 8h | 8h |
| 1874 | 5.1.8 | покраска рама |  | 1d? | 2026-10-17 09:00 A | 2026-10-17 18:00 A |  | 100% |  |  |  |  | start no earlier than 2026-10-17 09:00 | Бундин В | 8h | 8h |
| 1875 | 5.1.9 | сборка крышка с крепеж для магнита |  | 1d? | 2026-10-19 09:00 A | 2026-10-19 18:00 A |  | 100% |  |  |  |  | start no earlier than 2026-10-19 08:00 | Труфанов А; Некрасов | 16h | 16h |
| 1876 | 5.1.10 | доработка / перевоз бункера / монтаж |  | 4h | 2026-10-20 09:00 | 2026-10-20 13:00 |  |  |  |  | 101.09d |  | start no earlier than 2026-10-20 09:00 | Труфанов А; Некрасов | 8h |  |
| 1877 | 5.2 | Закрепить табличку с графиком работы цеха, взять в кабинете у мастеров, можно присверлить, но аккуратно, посмотреть варианты крепляния на других цехах |  | 1h | 2026-10-12 09:00 A | 2026-10-12 10:00 A |  | 100% |  |  |  |  | start no earlier than 2026-10-12 08:00 | Бундин В | 1h | 1h |
| 1878 | 5.3 | Выбрать болеменее нормальные балки 2 шт для стеллажей лежат рядом с 5а в углу и закрепить их по аналогу других балок |  | 2h | 2026-10-13 09:00 A | 2026-10-13 11:00 A |  | 100% |  |  |  |  | start no earlier than 2026-10-13 09:00 | Макаревич А; Труфанов А | 4h | 4h |
| 1879 | 5.4 | **сборка полок для стеллажей архив бухгалтерии** |  | 3d? | 2026-10-20 09:00 | 2026-10-22 18:00 |  |  |  |  | 98.59d |  |  |  | 24h |  |
| 1880 | 5.4.1 | контроль доставка материал |  | 1d? | 2026-10-20 09:00 | 2026-10-20 18:00 |  |  |  |  | 98.59d | 0d | start no earlier than 2026-10-20 09:00 | Зорькин В | 8h |  |
| 1881 | 5.4.2 | сборка полок для стеллажей архив бухгалтерии |  | 1d? | 2026-10-22 09:00 | 2026-10-22 18:00 | 1880FS+1d |  |  |  | 98.59d |  | start no earlier than 2026-10-19 08:00 | Тимофеев В; Николаев | 16h |  |
| 1882 | 5.5 | **монтаж тепловые пушки подвесные 5 цех** |  | 58d | 2026-08-21 09:00 A | 2026-10-28 18:00 |  | 36% | 37.12d |  | 94.59d |  |  |  | 41h | 9h |
| 1883 | 5.5.1 | составить схему монтажа |  | 4h | 2026-08-26 09:00 A | 2026-08-26 13:00 A |  | 100% |  |  |  |  | start no earlier than 2026-08-26 09:00 | Зорькин В | 4h | 4h |
| 1884 | 5.5.2 | заявка на тепловые пушки вулкан |  | 2h | 2026-08-21 09:00 A | 2026-08-21 11:00 A |  | 100% |  |  |  |  | start no earlier than 2026-08-21 09:00 | Зорькин В | 2h | 2h |
| 1885 | 5.5.3 | контроль остатки нерж труба, фтинги |  | 2h | 2026-09-07 09:00 A | 2026-09-07 11:00 A | 1884 | 100% |  |  |  |  | start no earlier than 2026-09-07 09:00 | Зорькин В | 2h | 2h |
| 1886 | 5.5.4 | контроль доставки |  | 1h | 2026-09-21 09:00 A | 2026-09-21 10:00 A | 1885FS+7d | 100% |  |  |  |  | start no earlier than 2026-09-21 09:00 | Зорькин В | 1h | 1h |
| 1887 | 5.5.5 | монтаж |  | 2d | 2026-10-27 09:00 | 2026-10-28 18:00 | 1886FS+1d |  |  |  | 94.59d |  | start no earlier than 2026-10-27 09:00 | Некрасов А; Труфанов А | 32h |  |
| 1888 | 5.6 | на 2 этаж раковина Установка смесителей (краны) с гибкой подводкой, получить на складе |  | 1h | 2026-09-21 09:00 A | 2026-09-21 10:00 A |  | 100% |  |  |  |  | start no earlier than 2026-09-21 09:00 | Некрасов А | 1h | 1h |
| 1889 | 5.7 | ремонт дека от вибросито |  | 3h | 2026-09-12 09:00 A | 2026-09-12 12:00 A |  | 100% |  |  |  |  | start no earlier than 2026-09-12 09:00 | Макаревич А | 3h | 3h |

| ID | WBS | Task | Type | Duration | Start | Finish | Predecessors | Complete | Remaining | Total slack | Free slack | Constraint | Resources | Work | Actual work |
| --- | --- | --- | --- | --- | --- | --- | --- | --- | --- | --- | --- | --- | --- | --- | --- |
| 1890 | 5.8 | **установить зажим троса на тельфер** |  | 49d? | 2026-09-03 09:00 A | 2026-10-28 18:00 |  | 3% | 47.56d? | 94.59d |  |  |  | 8.5h | 0.25h |
| 1891 | 5.8.1 | заявка |  | 15min | 2026-09-03 09:00 A | 2026-09-03 09:15 A |  | 100% |  |  |  | start no earlier than 2026-09-03 09:00 | Зорькин В | 0.25h | 0.25h |
| 1892 | 5.8.2 | контроль доставки |  | 15min | 2026-10-20 09:00 | 2026-10-20 09:15 | 1143FS+5d |  |  | 100.56d | 5.97d | start no earlier than 2026-10-20 09:00 | Зорькин В | 0.25h |  |
| 1893 | 5.8.3 | монтаж |  | 1d? | 2026-10-28 09:00 | 2026-10-28 18:00 | 1144FS+1d, 1892 |  |  | 94.59d |  | start no earlier than 2026-10-28 09:00 | Тимофеев В | 8h |  |
| 1894 | 5.9 | **ремонт насос водоснабжения** |  | 69.25d | 2026-09-03 09:00 A | 2026-11-26 11:00 A |  | 100% |  |  |  |  |  | 4.5h | 4.5h |
| 1895 | 5.9.1 | перекрутить американку для удобного обслуживания |  | 2h | 2026-11-26 09:00 A | 2026-11-26 11:00 A |  | 100% |  |  |  | start no earlier than 2026-11-26 09:00 | Макаревич А | 2h | 2h |
| 1896 | 5.9.2 | Сказать параметры, шильдик насосной станции передать зорькину |  | 15min | 2026-09-03 09:00 A | 2026-09-03 09:15 A |  | 100% |  |  |  | start no earlier than 2026-09-03 09:00 | Тимофеев В | 0.25h | 0.25h |
| 1897 | 5.9.3 | конртроль поставки |  | 15min | 2026-09-10 09:00 A | 2026-09-10 09:15 A | 1896 | 100% |  |  |  | start no earlier than 2026-09-10 09:00 | Зорькин В | 0.25h | 0.25h |
| 1898 | 5.9.4 | замена |  | 1h | 2026-09-11 09:15 A | 2026-09-11 10:15 A | 1897FS+1d | 100% |  |  |  | start no earlier than 2026-09-11 09:00 | Некрасов А; Макаревич А | 2h | 2h |
| 1899 | 5.10 | воставноить заземление на обоих ситах |  | 2h | 2026-09-04 09:00 A | 2026-09-04 11:00 A |  | 100% |  |  |  | start no earlier than 2026-09-04 09:00 | Бобренок В | 2h | 2h |
| 1900 | 5.11 | востановить контакт пульт тельфера у стены (переменный контакт при движении кабеля у пульта) |  | 1h | 2026-09-03 09:00 A | 2026-09-03 10:00 A |  | 100% |  |  |  | start no earlier than 2026-09-03 08:00 | Бобренок В | 1h | 1h |
| 1901 | 5.12 | подключить Олегу сварочный автомат |  | 1h | 2026-08-31 09:00 A | 2026-08-31 10:00 A |  | 100% |  |  |  | start no earlier than 2026-08-31 09:00 | Тимофеев В | 1h | 1h |
| 1902 | 5.13 | **подготовить сетку на мал дробилку 3 и 4мм** |  | 11.12d | 2026-09-12 09:00 A | 2026-09-23 10:00 A |  | 100% |  |  |  |  |  | 1.5h | 1.5h |
| 1903 | 5.13.1 | проверка отстатков сетки на складах |  | 30min | 2026-09-12 09:00 A | 2026-09-12 09:30 A |  | 100% |  |  |  | start no earlier than 2026-09-12 09:00 | Макаревич А | 0.5h | 0.5h |
| 1904 | 5.13.2 | вырезатиь сетку в размер |  | 1h | 2026-09-23 09:00 A | 2026-09-23 10:00 A | 1903FS+1d | 100% |  |  |  | start no earlier than 2026-09-29 09:00 | Тимофеев В | 1h | 1h |
| 1905 | 5.14 | ревизия шнека |  | 3h | 2026-08-17 09:00 A | 2026-08-17 12:00 A |  | 100% |  |  |  | start no earlier than 2026-08-17 09:00 | Бобренок В; Некрасов А | 6h | 6h |
| 1906 | 5.15 | **свет в туалет передать крепление светильника** |  | 1.12d | 2026-08-14 09:00 A | 2026-08-17 10:00 A |  | 100% |  |  |  |  |  | 2.25h | 2.25h |
| 1907 | 5.15.1 | проверить наличие светильника с боковым монтажем |  | 15min | 2026-08-14 09:00 A | 2026-08-14 09:15 A |  | 100% |  |  |  | start no earlier than 2026-08-14 09:00 | Домоводов К | 0.25h | 0.25h |
| 1908 | 5.15.2 | замена светильника / или закрепить |  | 1h | 2026-08-17 09:00 A | 2026-08-17 10:00 A | 1907 | 100% |  |  |  | start no earlier than 2026-08-15 09:00 | Бундин В | 1h | 1h |
| 1909 | 5.15.3 | закрепить светильник в коридоре -вход в туалет |  | 1h | 2026-08-17 09:00 A | 2026-08-17 10:00 A |  | 100% |  |  |  | start no earlier than 2026-08-17 09:00 | Бундин В | 1h | 1h |
| 1910 | 5.16 | трещина вибросито №2 1см ремонт |  | 6h | 2026-08-27 09:00 A | 2026-08-27 16:00 A |  | 100% |  |  |  | start no earlier than 2026-08-27 09:00 | Макаревич А | 6h | 6h |
| 1911 | 5.17 | трещина вибросито №1 кольцо. ремонт |  | 4h | 2026-08-28 09:00 A | 2026-08-28 13:00 A |  | 100% |  |  |  | start no earlier than 2026-08-28 09:00 | Макаревич А | 4h | 4h |
| 1912 | 5.18 | **проект новая дробилка** |  | 40.03d | 2026-08-21 09:00 A | 2026-10-06 09:15 |  | 17% | 33.37d | 112.56d |  |  |  | 144.25h | 24h |
| 1913 | 5.18.1 | **кабель для доп мощности** |  | 40.03d | 2026-08-21 09:00 A | 2026-10-06 09:15 |  | 17% | 33.37d | 112.56d |  |  |  | 144.25h | 24h |
| 1914 | 5.18.1.1 | составить ТЗ на монтаж кабеля |  | 3d | 2026-08-21 09:00 A | 2026-08-25 18:00 A |  | 100% |  |  |  | start no earlier than 2026-08-21 09:00 | Домоводов К | 24h | 24h |
| 1915 | 5.18.1.2 | получить КП / счет договор | milestone | 0d | 2026-09-09 09:00 | 2026-09-09 09:00 | 1914FS+2d |  |  | 112.56d | 0d | start no earlier than 2026-09-09 09:00 | Домоводов К |  |  |
| 1916 | 5.18.1.3 | предоплата |  | 15min | 2026-09-10 09:00 | 2026-09-10 09:15 | 1915FS+1d |  |  | 112.56d | 0d | start no earlier than 2026-08-10 08:00 | Домоводов К | 0.25h |  |
| 1917 | 5.18.1.4 | монтаж |  | 15d | 2026-09-20 09:15 | 2026-10-06 09:15 | 1916FS+10d |  |  | 112.56d |  | start no earlier than 2026-08-10 08:00 | Подрядчик | 120h |  |

| ID | WBS | Task | Type | Duration | Start | Finish | Predecessors | Complete | Remaining | Total slack | Free slack | Constraint | Resources | Work | Actual work |
| --- | --- | --- | --- | --- | --- | --- | --- | --- | --- | --- | --- | --- | --- | --- | --- |
| 1918 | 5.19 | **монтаж вода в 5ц** |  | 60.01d | 2026-08-10 08:00 A | 2026-10-20 09:05 |  | 94% | 3.4d | 101.58d |  |  |  | 128.08h | 124h |
| 1919 | 5.19.1 | Подключение греющего кабеля |  | 3h | 2026-09-16 09:00 A | 2026-09-16 12:00 A |  | 100% |  |  |  | start no earlier than 2026-09-16 09:00 | Некрасов А; Труфанов А | 6h | 6h |
| 1920 | 5.19.2 | подклюючить воду на прямую |  | 2h | 2026-09-14 09:00 A | 2026-09-14 11:00 A |  | 100% |  |  |  | start no earlier than 2026-09-15 09:00 | Тимофеев В | 2h | 2h |
| 1921 | 5.19.3 | Все доделать/подключить |  | 6h | 2026-09-18 09:00 A | 2026-09-18 16:00 A |  | 100% |  |  |  | start no earlier than 2026-09-18 09:00 | Труфанов А; Некрасов А | 12h | 12h |
| 1922 | 5.19.4 | установить в конце линии расширительный бак / защита от гидроудара |  | 2h | 2026-09-21 09:00 A | 2026-09-21 11:00 A |  | 100% |  |  |  | start no earlier than 2026-09-21 09:00 | Труфанов А; Некрасов А | 4h | 4h |
| 1923 | 5.19.5 | Установка точек воды для пожврного гидранта и набора воды для поломоечной машинки цех 3,4,5а и 5 |  | 6h | 2026-09-22 09:00 A | 2026-09-22 16:00 A |  | 100% |  |  |  | start no earlier than 2026-09-22 09:00 | Труфанов А; Некрасов А | 12h | 12h |
| 1924 | 5.19.6 | переключение линии "без бачка" |  | 2h | 2026-09-22 09:00 A | 2026-09-22 11:00 A | 1922 | 100% |  |  |  | start no earlier than 2026-09-22 09:00 | Труфанов А; Некрасов А | 4h | 4h |
| 1925 | 5.19.7 | тестирование системы |  | 2h | 2026-09-21 09:00 A | 2026-09-21 11:00 A | 1924 | 100% |  |  |  | start no earlier than 2026-09-18 08:00 | Труфанов А; Некрасов А | 4h | 4h |
| 1926 | 5.19.8 | выяснить возможность обмена тройников 1+1/4-1/2 на 3/4-1/2 |  | 15min | 2026-09-21 09:00 A | 2026-09-21 09:15 A |  | 100% |  |  |  | start no earlier than 2026-09-21 09:00 | Зорькин В | 0.25h | 0.25h |
| 1927 | 5.19.9 | Прокнуть греющий кабель | manual | 3h | 2026-09-16 09:00 A | 2026-09-16 12:00 A |  | 100% |  |  |  |  | Некрасов А; Труфанов А | 6h | 6h |
| 1928 | 5.19.10 | **монтаж трассы по 3ц** |  | 4.5d | 2026-08-11 09:00 A | 2026-08-17 13:00 A |  | 100% |  |  |  |  |  | 16.5h | 16.5h |
| 1929 | 5.19.10.1 | заявка хомуты сантех - получить дату поставки |  | 15min | 2026-08-11 09:00 A | 2026-08-11 09:15 A |  | 100% |  |  |  | start no earlier than 2026-08-11 09:00 | Домоводов К | 0.25h | 0.25h |
| 1930 | 5.19.10.2 | контроль доставки |  | 15min | 2026-08-14 09:15 A | 2026-08-14 09:30 A | 1929FS+3d | 100% |  |  |  | start no earlier than 2026-08-10 08:00 | Зорькин В | 0.25h | 0.25h |
| 1931 | 5.19.10.3 | монтаж продложть |  | 4h | 2026-08-14 09:30 A | 2026-08-14 14:30 A | 1930 | 100% |  |  |  | start no earlier than 2026-08-10 08:00 | Некрасов А; Бундин В | 8h | 8h |
| 1932 | 5.19.10.4 | монтаж продложть |  | 4h | 2026-08-17 09:00 A | 2026-08-17 13:00 A | 1930 | 100% |  |  |  | start no earlier than 2026-08-17 09:00 | Некрасов А; Бобренок В | 8h | 8h |
| 1933 | 5.19.11 | **монтаж труба в земле между 3 и 4ц** |  | 60.01d | 2026-08-10 08:00 A | 2026-10-20 09:05 |  | 66% | 20.28d | 101.58d |  |  |  | 19.08h | 15h |
| 1934 | 5.19.11.1 | монтаж ф32 в ф40 |  | 4h | 2026-08-10 08:00 A | 2026-08-10 13:00 A |  | 100% |  |  |  | start no earlier than 2026-08-10 08:00 | Некрасов А; Макаревич А | 8h | 8h |
| 1935 | 5.19.11.2 | заявка греющий кабель внтуреннего монтажа + |  | 1h | 2026-08-11 09:00 A | 2026-08-11 10:00 A | 1934 | 100% |  |  |  | start no earlier than 2026-08-11 09:00 | Домоводов К | 1h | 1h |
| 1936 | 5.19.11.3 | заявка защита УЗО |  | 1h | 2026-08-24 09:00 | 2026-08-24 10:00 |  |  |  | 151.46d | 49.88d | start no earlier than 2026-08-24 09:00 | Зорькин В | 1h |  |
| 1937 | 5.19.11.4 | контоль доставка |  | 5min | 2026-10-20 09:00 | 2026-10-20 09:05 | 1935FS+5d, 1936 |  |  | 101.58d |  | start no earlier than 2026-10-20 09:00 | Зорькин В | 0.08h |  |
| 1938 | 5.19.11.5 | монтаж кабеля |  | 3h | 2026-09-16 12:00 A | 2026-09-16 16:00 A | 1937FS+1d, 1919 | 100% |  |  |  | start no earlier than 2026-09-16 09:00 | Некрасов А; Макаревич А | 6h | 6h |
| 1939 | 5.19.11.6 | монтаж щиток кабеля с УЗО |  | 3h | 2026-09-14 09:00 | 2026-09-14 12:00 |  |  |  | 133.22d |  | start no earlier than 2026-09-14 09:00 | Дедов В | 3h |  |
| 1940 | 5.19.12 | **монтаж трассы по воздуху м/д 4 и 5А** |  | 9.5d | 2026-08-11 09:00 A | 2026-08-24 13:00 A |  | 100% |  |  |  |  |  | 9.25h | 9.25h |
| 1941 | 5.19.12.1 | подготовка материал |  | 1h | 2026-08-11 09:00 A | 2026-08-11 10:00 A |  | 100% |  |  |  | start no earlier than 2026-08-11 09:00 | Некрасов А; Макаревич А | 1h | 1h |
| 1942 | 5.19.12.2 | контроль поставки рым 10 |  | 15min | 2026-08-21 09:00 A | 2026-08-21 09:15 A |  | 100% |  |  |  | start no earlier than 2026-08-21 09:00 | Зорькин В | 0.25h | 0.25h |
| 1943 | 5.19.12.3 | монтаж |  | 4h | 2026-08-24 09:00 A | 2026-08-24 13:00 A | 1942 | 100% |  |  |  | start no earlier than 2026-08-24 09:00 | Некрасов А; Тимофеев В | 8h | 8h |
| 1944 | 5.19.13 | монтаж щиток греющего кабеля по воздуху |  | 4h | 2026-09-16 09:00 A | 2026-09-16 13:00 A |  | 100% |  |  |  | start no earlier than 2026-09-16 09:00 | Труфанов А | 4h | 4h |
| 1945 | 5.19.14 | монтаж трассы по 4ц |  | 6h | 2026-08-18 09:00 A | 2026-08-18 16:00 A | 1930 | 100% |  |  |  | start no earlier than 2026-08-18 09:00 | Некрасов А; Макаревич А | 11h | 11h |
| 1946 | 5.19.15 | монтаж трассы по 5ц |  | 4h | 2026-08-19 09:00 A | 2026-08-19 13:00 A | 1945 | 100% |  |  |  | start no earlier than 2026-08-19 09:00 | Некрасов А; Макаревич А | 8h | 8h |
| 1947 | 5.19.16 | монтаж трассы по 5ц |  | 6h | 2026-08-24 09:00 A | 2026-08-24 16:00 A | 1945 | 100% |  |  |  | start no earlier than 2026-08-24 09:00 | Некрасов А; Макаревич А | 10h | 10h |
| 1948 | 5.20 | замена светильника перегоревшего у Большакова в кабинете |  | 2h | 2026-08-06 09:00 A | 2026-08-06 11:00 A |  | 100% |  |  |  | start no earlier than 2026-08-07 09:00 | Труфанов А | 2h | 2h |
| 1949 | 5.21 | устранить утечку воды в душе |  | 1h | 2026-08-06 09:00 A | 2026-08-06 10:00 A |  | 100% |  |  |  | start no earlier than 2026-08-06 08:00 | Бундин В | 1h | 1h |

| ID | WBS | Task | Type | Duration | Start | Finish | Complete | Actual finish | Constraint | Resources | Work | Actual work |
| --- | --- | --- | --- | --- | --- | --- | --- | --- | --- | --- | --- | --- |
| 1950 | 5.22 | **установить унитаз на 3 этаже** |  | 3.38d? | 2026-08-04 09:00 A | 2026-08-07 12:00 A | 100% |  |  | Бобренок В | 38h | 38h |
| 1951 | 5.22.1 | заказать гофру и гибкую вставку |  | 1d? | 2026-08-04 09:00 A | 2026-08-04 18:00 A | 100% |  | start no earlier than 2026-08-04 08:00 | Шуранов Ю | 8h | 8h |
| 1952 | 5.22.2 | установка унитаза (гофротруба и гибкая подводка и коронка у Большакова) коронку вернуть Большакову |  | 3h | 2026-08-07 09:00 A | 2026-08-07 12:00 A | 100% |  | start no earlier than 2026-08-07 09:00 | Труфанов А | 3h | 3h |
| 1953 | 5.23 | монтаж свет в туалете 3 этаж (оператора дадут в помощь) | manual | 6h | 2026-08-09 09:00 A | 2026-08-09 16:00 A | 100% |  | start no earlier than 2026-08-09 09:00 | Бобренок В | 6h | 6h |
| 1954 | 5.24 | прикрутить смотровые окна на дробилке, не хватает саморезов- просыпается сырье |  | 1h | 2026-08-02 09:00 A | 2026-08-03 10:00 A | 100% |  | start no earlier than 2026-08-02 09:00 | Макаревич А | 1h | 1h |
| 1955 | 5.25 | сборка ограничиетелей на сетку №2 для сито из лазера |  | 4h | 2026-07-17 09:00 A | 2026-07-17 13:00 A | 100% |  | start no earlier than 2026-07-17 09:00 | Макаревич А | 4h | 4h |
| 1956 | 5.26 | ремонт сетки, хомуты с 5ц |  | 2h | 2026-07-15 09:00 A | 2026-07-15 11:00 A | 100% |  | start no earlier than 2026-07-15 09:00 | Бундин В | 2h | 2h |
| 1957 | 5.27 | вырезать сетку 2мм на большую дробилку |  | 2h | 2026-07-15 09:00 A | 2026-07-15 11:00 A | 100% |  | start no earlier than 2026-07-15 09:00 | Бобренок В | 2h | 2h |
| 1958 | 5.28 | заменаить ножи на мал дробилке |  | 6h | 2026-07-06 08:00 A | 2026-07-06 16:00 A | 100% |  | start no earlier than 2026-07-06 08:00 | Дедов В | 6h | 6h |
| 1959 | 5.29 | заварить хомут от деко 5 ц. в слесарке |  | 2h | 2026-07-11 09:00 A | 2026-07-13 11:00 A | 100% |  | start no earlier than 2026-07-11 09:00 | Макаревич А | 2h | 2h |
| 1960 | 5.30 | Дефектовка кнопок растаривателя, ремонт, клинит кнопку |  | 30min | 2026-07-06 08:00 A | 2026-07-06 09:30 A | 100% |  | start no earlier than 2026-07-06 08:00 | Дедов В | 0.5h | 0.5h |
| 1961 | 5.31 | сито просечка с лазера - доплнить 4шт до 6-8 уголоков ограничителей. |  | 2h | 2026-06-26 08:00 A | 2026-06-26 11:00 A | 100% |  | start no earlier than 2026-06-26 08:00 | Макаревич А | 2h | 2h |
| 1962 | 5.32 | просечки нерж. наварить уголки, чтобы не падало внутрь |  | 2h | 2026-06-25 08:00 A | 2026-06-25 11:00 A | 100% |  | start no earlier than 2026-06-25 08:00 | Макаревич А | 2h | 2h |
| 1963 | 5.33 | на поворотную кнопку реверса шнека №1 установить бокс (взять на складе) |  | 1h | 2026-06-24 09:00 A | 2026-06-24 10:00 A | 100% |  | start no earlier than 2026-06-24 09:00 | Труфанов А | 1h | 1h |
| 1964 | 5.34 | развернуть ножи на большой дробилке, если не успеваем передаем по смене |  | 3h | 2026-06-23 08:00 A | 2026-06-23 12:00 A | 100% |  | start no earlier than 2026-06-23 08:00 | Труфанов А; Макаревич А | 6h | 6h |
| 1965 | 5.35 | **протянуть все болтовые соединения: шиберы растаривателей, металлоконструкции под бункера и т.д. если нет болта - прикручиваем** |  | 3h? | 2026-06-23 09:00 A | 2026-06-23 12:00 | 100% | 2026-06-23 18:00 |  | Труфанов А | 11h | 11h |
| 1966 | 5.35.1 | заказать краску |  | 1d? | 2026-06-23 09:00 A | 2026-06-23 18:00 A | 100% |  | start no earlier than 2026-06-23 08:00 | Шуранов Ю | 8h | 8h |
| 1967 | 5.36 | проверить откуда гайку нашли на магните, растариватель-дробилка -шнеки -крепление магнитов |  | 1h | 2026-06-22 09:00 A | 2026-06-22 10:00 A | 100% |  | start no earlier than 2026-06-22 08:00 | Бундин В | 1h | 1h |
| 1968 | 5.37 | **закрепить штурвал на растаривателе 1** |  | 1d? | 2026-06-23 09:00 A | 2026-06-23 18:00 A | 100% |  |  | Бундин В | 16h | 16h |
| 1969 | 5.37.1 | заказываем растариватель |  | 1d? | 2026-06-23 09:00 A | 2026-06-23 18:00 A | 100% |  | start no earlier than 2026-06-23 09:00 | Шуранов Ю | 8h | 8h |
| 1970 | 5.38 | заварить просеиватель ближе к стеллажам и на правом (расскажу как) |  | 3h | 2026-06-11 09:00 A | 2026-06-11 12:00 A | 100% |  | start no earlier than 2026-06-11 09:00 | Бундин В | 3h | 3h |
| 1971 | 5.39 | ремонт просечку с вибросито, передать в 5ц |  | 2h | 2026-06-12 09:00 A | 2026-06-12 11:00 A | 100% |  | start no earlier than 2026-06-12 09:00 | Бундин В | 2h | 2h |
| 1972 | 5.40 | ремонт хомут с вибросито |  | 2h | 2026-06-05 09:00 A | 2026-06-05 11:00 A | 100% |  | start no earlier than 2026-06-05 08:00 | Бундин В | 2h | 2h |
| 1973 | 5.41 | заварить хомут от деко 5 ц. в слесарке |  | 2h | 2026-07-14 09:00 A | 2026-07-14 11:00 A | 100% |  | start no earlier than 2026-07-14 09:00 | Бундин В | 2h | 2h |

| ID | WBS | Task | Duration | Start | Finish | Predecessors | Complete | Remaining | Total slack | Free slack | Constraint | Resources | Work | Actual work |
| --- | --- | --- | --- | --- | --- | --- | --- | --- | --- | --- | --- | --- | --- | --- |
| 1974 | 5.42 | **востановить коробку тельфера** | 182.25d | 2026-06-04 09:00 A | 2027-02-02 11:00 |  | 59% | 74.69d | 26.34d |  |  |  | 5.08h | 3h |
| 1975 | 5.42.1 | найти производителя тельфера и выяснить марку коробку / найти в продаже подходящий артикул | 2h | 2026-06-04 09:00 A | 2026-06-04 11:00 A |  | 100% |  |  |  | start no earlier than 2026-06-04 09:00 | Шуранов Ю | 2h | 2h |
| 1976 | 5.42.2 | заявка | 1h | 2026-06-05 09:00 A | 2026-06-05 10:00 A |  | 100% |  |  |  | start no earlier than 2026-06-05 09:00 | Шуранов Ю | 1h | 1h |
| 1977 | 5.42.3 | доставка контроль | 5min | 2026-09-18 09:00 | 2026-09-18 09:05 |  |  |  | 129.33d | 102.99d | start no earlier than 2026-09-18 09:00 | Домоводов К | 0.08h |  |
| 1978 | 5.42.4 | замена | 2h | 2027-02-02 09:00 | 2027-02-02 11:00 | 1977 |  |  | 26.34d |  | start no earlier than 2027-02-02 09:00 | Некрасов А | 2h |  |
| 1979 | 5.43 | замена пускатель тельфер 24дц / найти/изготовить + установить крышку контакторов / доработать крепеж кабеля к тросу | 1h | 2026-05-27 09:00 A | 2026-05-27 10:00 A |  | 100% |  |  |  | start no earlier than 2026-05-27 09:00 | Некрасов А; Бундин В | 2h | 2h |
| 1980 | 5.44 | проверка всех банок АКБ штабелера / замена неисправных | 2h | 2026-05-30 09:00 A | 2026-06-01 11:00 A |  | 100% |  |  |  | start no earlier than 2026-05-30 09:00 | Бобренок В | 2h | 2h |
| 1981 | 5.45 | посмотреть что с тельфером на дробилке | 1h | 2026-05-26 09:00 A | 2026-05-26 10:00 A |  | 100% |  |  |  | start no earlier than 2026-05-26 09:00 | Некрасов А | 1h | 1h |
| 1982 | 5.46 | приварить магниты на сито | 0.5h | 2026-05-26 09:00 A | 2026-05-26 09:30 A |  | 100% |  |  |  | start no earlier than 2026-05-26 09:00 | Некрасов А | 0.5h | 0.5h |
| 1983 | 5.47 | заварить растариватель №2 | 4h | 2026-05-25 08:00 A | 2026-05-25 13:00 A |  | 100% |  |  |  | start no earlier than 2026-05-25 08:00 | Тимофеев В; Некрасов А | 7h | 7h |
| 1984 | 5.48 | уложить красиво кабель в гофре зона дробилки | 1h | 2026-05-19 09:00 A | 2026-05-19 10:00 A |  | 100% |  |  |  | start no earlier than 2026-05-19 09:00 | Бундин В; Некрасов А | 2h | 2h |
| 1985 | 5.49 | заварить 2 просечки от сито и отправить все на 5 цех | 1h | 2026-05-19 09:00 A | 2026-05-19 10:00 A |  | 100% |  |  |  | start no earlier than 2026-05-19 09:00 | Бундин В | 1h | 1h |
| 1986 | 5.50 | сделать дублирующий пост (вкл. И выкл. Смесителя) на мезонине дробилки | 4h | 2026-05-18 08:00 A | 2026-05-18 13:00 A |  | 100% |  |  |  | start no earlier than 2026-05-18 08:00 | Дедов В | 4h | 4h |
| 1987 | 5.51 | прошприцевать сам двигатель дробилки | 1h | 2026-05-19 09:00 A | 2026-05-19 10:00 A |  | 100% |  |  |  | start no earlier than 2026-05-19 09:00 | Некрасов А; Бундин В | 2h | 2h |
| 1988 | 5.52 | **сборка схемы блокировки дробилки при открытом люке** | 7.25d? | 2026-05-17 09:00 A | 2026-05-27 11:00 A |  | 100% |  |  |  |  |  | 17h | 17h |
| 1989 | 5.52.1 | монтаж кабель | 4h | 2026-05-17 09:00 A | 2026-05-18 13:00 A |  | 100% |  |  |  | start no earlier than 2026-05-17 09:00 | Макаревич А | 4h | 4h |
| 1990 | 5.52.2 | сборка схема | 2h | 2026-05-27 09:00 A | 2026-05-27 11:00 A | 1989 | 100% |  |  |  | start no earlier than 2026-05-27 09:00 | Дедов В | 2h | 2h |
| 1991 | 5.52.3 | заказать концевики | 1d? | 2026-05-25 09:00 A | 2026-05-25 18:00 A |  | 100% |  |  |  | start no earlier than 2026-05-25 08:00 | Шуранов Ю | 8h | 8h |
| 1992 | 5.52.4 | доделать схему блокировки- концевики LA167-Z8/122 на складе | 3h | 2026-05-26 09:00 A | 2026-05-26 12:00 A |  | 100% |  |  |  | start no earlier than 2026-05-26 09:00 | Дедов В | 3h | 3h |
| 1993 | 5.53 | проверка центровки мотора после замены подшипнка + замена подшипник задний | 4h | 2026-05-12 08:00 A | 2026-05-12 13:00 A |  | 100% |  |  |  | start no earlier than 2026-05-12 08:00 | Тимофеев В; Бобренок В | 8h | 8h |
| 1994 | 5.54 | заварить сито | 2h | 2026-05-08 08:00 A | 2026-05-08 11:00 A |  | 100% |  |  |  | start no earlier than 2026-05-08 08:00 | Макаревич А | 2h | 2h |
| 1995 | 5.55 | закрепить штурвал, чтобы не болтался на растаривателе 1 | 1h | 2026-05-08 08:00 A | 2026-05-08 10:00 A |  | 100% |  |  |  | start no earlier than 2026-05-08 08:00 | Макаревич А | 1h | 1h |
| 1996 | 5.56 | посмотреть компрессор (если проблема в предохранителе- то взять у меня на столе)пароль8989 | 1h | 2026-05-08 08:00 A | 2026-05-08 10:00 A |  | 100% |  |  |  | start no earlier than 2026-05-08 08:00 | Дедов В | 1h | 1h |
| 1997 | 5.57 | проверить на 2х котлах давление в системе отопления- где нужно долить воды. И слить воду система отопления 5а цех | 2h | 2026-05-06 08:00 A | 2026-05-06 11:00 A |  | 100% |  |  |  | start no earlier than 2026-05-06 08:00 | Бобренок В | 2h | 2h |

| ID | WBS | Task | Type | Duration | Start | Finish | Predecessors | Complete | Actual start | Actual finish | Total slack | Constraint | Resources | Work | Actual work |
| --- | --- | --- | --- | --- | --- | --- | --- | --- | --- | --- | --- | --- | --- | --- | --- |
| 1998 | 5.58 | **ремонт сито (попробовать заклеить эпоксидкой) / ремонт у производсителя** |  | 13d | 2026-05-13 09:00 A | 2026-05-29 18:00 A |  | 100% |  |  |  |  |  | 0.75h | 0.75h |
| 1999 | 5.58.1 | отправить сито на ремонт производителю |  | 30min | 2026-05-13 09:00 A | 2026-05-13 09:30 A |  | 100% |  |  |  | start no earlier than 2026-05-13 09:00 | Шуранов Ю | 0.5h | 0.5h |
| 2000 | 5.58.2 | контроль доставки |  | 15min | 2026-05-29 17:45 A | 2026-05-29 18:00 A | 1999SF+15d | 100% |  |  |  | start no earlier than 2026-05-12 08:00 | Шуранов Ю | 0.25h | 0.25h |
| 2001 | 5.59 | зачистить приемный бункер после дробилке болгаркой |  | 1h | 2026-04-30 08:00 A | 2026-04-30 10:00 A |  | 100% |  |  |  | start no earlier than 2026-04-30 08:00 | Дедов В | 1h | 1h |
| 2002 | 5.60 | **ремонт стиральной машинки / шум подшипника** |  | 1d? | 2026-04-27 09:00 | 2026-04-27 18:00 |  |  |  |  | 235.59d |  |  | 8h |  |
| 2003 | 5.60.1 | договор |  | 1d? | 2026-04-27 09:00 | 2026-04-27 18:00 |  |  |  |  | 235.59d | start no earlier than 2026-04-27 08:00 | Шуранов Ю | 8h |  |
| 2004 | 5.61 | **ремонт утечки с системы отопления** |  | 1.12d | 2026-05-04 09:00 | 2026-05-05 10:00 |  | 100% | 2026-05-07 09:00 | 2026-05-08 10:00 |  |  |  | 10h | 10h |
| 2005 | 5.61.1 | слив воды |  | 4h | 2026-05-07 09:00 A | 2026-05-07 13:00 A |  | 100% |  |  |  | start no earlier than 2026-05-07 09:00 | Макаревич А | 4h | 4h |
| 2006 | 5.61.2 | ремонт утечки |  | 2h | 2026-05-07 13:00 A | 2026-05-07 16:00 A | 2005 | 100% |  |  |  | start no earlier than 2026-04-27 08:00 | Макаревич А | 2h | 2h |
| 2007 | 5.61.3 | заправить воду / опресовать |  | 4h | 2026-05-07 15:00 A | 2026-05-08 10:00 A | 2006 | 100% |  |  |  | start no earlier than 2026-04-27 08:00 | Макаревич А | 4h | 4h |
| 2008 | 5.62 | долить в систему отопления воды цех 5а, электрокотел не включаем. Работаем на газ котле |  | 1h | 2026-04-24 09:00 A | 2026-04-24 10:00 A |  | 100% |  |  |  | start no earlier than 2026-04-24 08:00 | Бундин В | 1h | 1h |
| 2009 | 5.63 | вывезти шнек на синий склад |  | 1h | 2026-04-23 09:00 A | 2026-04-23 10:00 A |  | 100% |  |  |  | start no earlier than 2026-04-24 09:00 | Бобренок В; Тимофеев В | 2h | 2h |
| 2010 | 5.64 | взять на зажима для троса на складе и натянуть трос на воротах 5а |  | 2h | 2026-04-25 09:00 A | 2026-04-27 11:00 A |  | 100% |  |  |  | start no earlier than 2026-04-25 09:00 | Макаревич А | 2h | 2h |
| 2011 | 5.65 | убавить температуры на газ котлах |  | 1h | 2026-04-24 09:00 A | 2026-04-24 10:00 A |  | 100% |  |  |  | start no earlier than 2026-04-24 09:00 | Шуранов Ю | 1h | 1h |
| 2012 | 5.66 | заварить сито и хомуты |  | 1h | 2026-04-24 09:00 A | 2026-04-24 10:00 A |  | 100% |  |  |  | start no earlier than 2026-04-24 09:00 | Тимофеев В | 1h | 1h |
| 2013 | 5.67 | проверка вибросит детальный осмотр с полной разборкой / ремонт трещин |  | 4h | 2026-04-21 09:00 A | 2026-04-21 13:00 A |  | 100% |  |  |  | start no earlier than 2026-04-21 09:00 | Бундин В | 4h | 4h |
| 2014 | 5.68 | протяжка анкеров стеллажей, болтается |  | 2h | 2026-04-20 09:00 A | 2026-04-20 11:00 A |  | 100% |  |  |  | start no earlier than 2026-04-20 09:00 | Макаревич А | 2h | 2h |
| 2015 | 5.69 | замена потускневших ламп в инсекютере. Мастеру сообщить кол-во. б/у складывать в коробку |  | 2h | 2026-05-06 09:00 A | 2026-05-06 11:00 A |  | 100% |  |  |  | start no earlier than 2026-05-06 09:00 | Бобренок В | 2h | 2h |
| 2016 | 5.70 | переворачиваем молотки дробилка |  | 4h | 2026-04-15 09:00 A | 2026-04-15 13:00 A |  | 100% |  |  |  | start no earlier than 2026-04-17 08:00 | Макаревич А; Тимофеев В | 8h | 8h |
| 2017 | 5.71 | завершить работы по примыканию к кровли 5А (излишки изоспан) |  | 1d? | 2026-06-19 09:00 | 2026-06-19 18:00 |  |  |  |  | 196.59d | start no earlier than 2026-06-19 09:00 | Олег | 8h |  |
| 2018 | 5.72 | монтаж тамбур для завоза навесок |  | 10d | 2026-04-16 09:00 | 2026-04-29 18:00 |  |  |  |  | 233.59d | start no earlier than 2026-04-16 08:00 | Некрасов А; Олег | 160h |  |
| 2019 | 5.73 | вырезать верхушку еврокуба возле мусорки, будет туда засыпать отсев для дворника | manual | 1h | 2026-04-18 09:00 A | 2026-04-18 10:00 A |  | 100% |  |  |  | start no earlier than 2026-04-18 09:00 | Макаревич А | 1h | 1h |
| 2020 | 5.74 | заварить хомуты и сетки от сито |  | 1h | 2026-04-14 09:00 A | 2026-04-14 10:00 A |  | 100% |  |  |  | start no earlier than 2026-04-14 08:00 | Труфанов А | 1h | 1h |
| 2021 | 5.75 | проверить дист. Воду на штабелере, если нужно долить (фото модели акб) |  | 1h | 2026-04-13 09:00 A | 2026-04-13 10:00 A |  | 100% |  |  |  | start no earlier than 2026-04-13 08:00 | Бундин В | 1h | 1h |
| 2022 | 5.76 | установка шнека отремонтированного обратно на дробилку |  | 6h | 2026-04-21 09:00 A | 2026-04-21 16:00 A |  | 100% |  |  |  | start no earlier than 2026-04-21 09:00 | Некрасов А; Труфанов А | 12h | 12h |
| 2023 | 5.77 | установка бойлера отремонтированного в туалет, а с туалета на 2 этаж, мастер выделит человека в помощь |  | 4h | 2026-04-13 09:00 A | 2026-04-13 13:00 A |  | 100% |  |  |  | start no earlier than 2026-04-13 09:00 | Труфанов А | 4h | 4h |
| 2024 | 5.78 | замена паука на расстаривателе- высокие бэги не могут поднять до конца |  | 1h | 2026-04-10 08:00 A | 2026-04-10 10:00 A |  | 100% |  |  |  | start no earlier than 2026-04-10 08:00 | Тимофеев В | 1h | 1h |

| ID | WBS | Task | Type | Duration | Start | Finish | Predecessors | Complete | Actual start | Actual finish | Constraint | Resources | Work | Actual work |
| --- | --- | --- | --- | --- | --- | --- | --- | --- | --- | --- | --- | --- | --- | --- |
| 2025 | 5.79 | **получить насос Wilo, установить на 1 газовый котел** |  | 0.12d | 2026-04-10 09:00 A | 2026-04-10 10:00 A |  | 100% |  |  |  | Бундин В | 2h | 2h |
| 2026 | 5.79.1 | проверить направление подачи воды, посмотреть по аналогии 2 котла |  | 1h | 2026-04-10 09:00 A | 2026-04-10 10:00 A |  | 100% |  |  | start no earlier than 2026-04-10 09:00 | Тимофеев В | 1h | 1h |
| 2027 | 5.80 | ремот сеток с сито |  | 2h | 2026-04-06 09:00 A | 2026-04-06 11:00 A |  | 100% |  |  | start no earlier than 2026-04-06 08:00 | Труфанов А | 2h | 2h |
| 2028 | 5.81 | на выходах из сито №1 и №2 установить сетки с бортиками |  | 2h | 2026-04-06 09:00 A | 2026-04-06 11:00 A |  | 100% |  |  | start no earlier than 2026-04-06 08:00 | Труфанов А | 2h | 2h |
| 2029 | 5.82 | сыпит сырье с дробилки (вход) |  | 2h | 2026-06-15 09:00 A | 2026-06-15 11:00 A |  | 100% |  |  | start no earlier than 2026-06-13 09:00 | Некрасов А; Труфанов А | 4h | 4h |
| 2030 | 5.83 | востановить ручной штурвал заслонки на растаривателе дробилки |  | 1h | 2026-04-02 08:00 A | 2026-04-02 10:00 A |  | 100% |  |  | start no earlier than 2026-04-02 08:00 | Бобренок В | 1h | 1h |
| 2031 | 5.84 | изготовить штурвал заслонки на растариватель вибросита у стены |  | 2h | 2026-04-13 09:00 A | 2026-04-13 11:00 A |  | 100% |  |  | start no earlier than 2026-04-13 09:00 | Труфанов А | 2h | 2h |
| 2032 | 5.85 | монтаж отбойников | manual | 6h | 2026-04-18 09:00 A | 2026-04-18 16:00 A |  | 100% |  |  | start no earlier than 2026-04-18 09:00 | Бобренок В | 6h | 6h |
| 2033 | 5.86 | **ремонт шкаф управления шнеком 1 растариватель (замена щитка взять на складе)** |  | 13.5d? | 2026-04-21 09:00 | 2026-05-07 13:00 |  | 100% | 2026-04-17 09:00 | 2026-04-29 09:30 |  |  | 91.75h | 91.75h |
| 2034 | 5.86.1 | вывод кнопки управления частотником на ШУ (если нужно замена частотника) с мастером согласовать остановку |  | 5h | 2026-04-20 09:00 A | 2026-04-20 15:00 A |  | 100% |  |  | start no earlier than 2026-04-20 09:00 | Дедов В | 5h | 5h |
| 2035 | 5.86.2 | установить кнопочный пост |  | 2h | 2026-04-21 09:00 A | 2026-04-21 11:00 A |  | 100% |  |  | start no earlier than 2026-04-21 09:00 | Дедов В | 2h | 2h |
| 2036 | 5.86.3 | заявка кнопка SB7 |  | 15min | 2026-04-21 09:00 A | 2026-04-21 09:15 A |  | 100% |  |  | start no earlier than 2026-04-21 09:00 | Зорькин В | 0.25h | 0.25h |
| 2037 | 5.86.4 | доставка |  | 5d | 2026-04-21 09:15 A | 2026-04-28 09:15 A | 2036 | 100% |  |  | start no earlier than 2026-04-20 08:00 | Карабанов | 40h | 40h |
| 2038 | 5.86.5 | замена |  | 1h | 2026-04-27 09:15 A | 2026-04-27 10:15 A | 2037 | 100% |  |  | start no earlier than 2026-04-20 08:00 | Дедов В | 1h | 1h |
| 2039 | 5.86.6 | ремонт корпус |  | 1h | 2026-04-17 09:00 A | 2026-04-17 10:00 A | 2034 | 100% |  |  | start no earlier than 2026-04-09 09:00 | Труфанов А | 1h | 1h |
| 2040 | 5.86.7 | **замена корпус** |  | 6.06d | 2026-04-21 09:00 A | 2026-04-29 09:30 A |  | 100% |  |  |  |  | 42.5h | 42.5h |
| 2041 | 5.86.7.1 | заявка |  | 30min | 2026-04-21 09:00 A | 2026-04-21 09:30 A |  | 100% |  |  | start no earlier than 2026-03-31 08:00 | Зорькин В | 0.5h | 0.5h |
| 2042 | 5.86.7.2 | доставка |  | 5d | 2026-04-21 09:30 A | 2026-04-29 09:30 A | 2041 | 100% |  |  | start no earlier than 2026-03-31 08:00 | Карабанов | 40h | 40h |
| 2043 | 5.86.7.3 | замена |  | 2h | 2026-04-28 09:30 A | 2026-04-28 11:30 A | 2042 | 100% |  |  | start no earlier than 2026-04-14 09:00 | Тимофеев В | 2h | 2h |
| 2044 | 5.87 | получить фланец на складе NMRV040 и установить мотор-редуктор на расстаривателе №1 |  | 2h | 2026-04-28 09:00 A | 2026-04-28 11:00 A |  | 100% |  |  | start no earlier than 2026-04-28 09:00 | Бундин В | 2h | 2h |
| 2045 | 5.88 | убрать красный скотч везде в дробилке, сделать крепление фильтра с малой дробилки на ленточный хомут |  | 3h | 2026-03-27 09:00 A | 2026-03-27 12:00 A |  | 100% |  |  | start no earlier than 2026-03-27 08:00 | Труфанов А | 3h | 3h |
| 2046 | 5.89 | ремонт вибросито |  | 4h | 2026-03-27 08:00 A | 2026-03-27 13:00 A |  | 100% |  |  | start no earlier than 2026-03-27 08:00 | Тимофеев В; Некрасов А | 7h | 7h |
| 2047 | 5.90 | заварить сито возле слесарки (2 шт) и деки 2 шт |  | 3h | 2026-03-26 09:00 A | 2026-03-26 12:00 A |  | 100% |  |  | start no earlier than 2026-03-26 08:00 | Труфанов А | 3h | 3h |
| 2048 | 5.91 | сделать отбойник на входную дверь |  | 1h | 2026-03-28 09:00 A | 2026-03-30 10:00 A |  | 100% |  |  | start no earlier than 2026-03-28 09:00 | Бундин В | 1h | 1h |
| 2049 | 5.92 | сделать трап в курилку |  | 3h | 2026-04-01 09:00 A | 2026-04-01 12:00 A |  | 100% |  |  | start no earlier than 2026-04-01 09:00 | Бундин В | 3h | 3h |
| 2050 | 5.93 | заварить бункер дробилки |  | 2h | 2026-03-24 09:00 A | 2026-03-24 11:00 A |  | 100% |  |  | start no earlier than 2026-03-24 09:00 | Некрасов А; Труфанов А | 4h | 4h |
| 2051 | 5.94 | перенос металл с торца стеллажа напротив ВРУ / на син склад |  | 1h | 2026-03-25 09:00 A | 2026-03-25 10:00 A |  | 100% |  |  | start no earlier than 2026-03-25 09:00 | Бобренок В | 1h | 1h |
| 2052 | 5.95 | пульт управления шибером растариватель правый демонтаж красный скотч / закрепить |  | 1h | 2026-03-22 09:00 A | 2026-03-23 10:00 A |  | 100% |  |  | start no earlier than 2026-03-22 09:00 | Бобренок В | 1h | 1h |
| 2053 | 5.96 | установить корпус на переключатель реверса шнек растаривателя правый / продуть от пыли контакты |  | 30min | 2026-03-22 09:00 A | 2026-03-23 09:30 A |  | 100% |  |  | start no earlier than 2026-03-22 09:00 | Бобренок В | 0.5h | 0.5h |
| 2054 | 5.97 | демонтаж розетки без крышки 2 этаж щиток в фае |  | 30min | 2026-03-25 09:00 A | 2026-03-25 09:30 A |  | 100% |  |  | start no earlier than 2026-03-25 09:00 | Бобренок В | 0.5h | 0.5h |
| 2055 | 5.98 | подлючить розетку для зарядки нового АКБ для штабелера Ц.5А |  | 2h | 2026-03-21 09:00 A | 2026-03-23 11:00 A |  | 100% |  |  | start no earlier than 2026-03-21 09:00 | Дедов В | 2h | 2h |

| ID | WBS | Task | Type | Duration | Start | Finish | Predecessors | Complete | Total slack | Free slack | Constraint | Resources | Work | Actual work |
| --- | --- | --- | --- | --- | --- | --- | --- | --- | --- | --- | --- | --- | --- | --- |
| 2056 | 5.99 | **ремонт шнек с дробилки** |  | 11.75d | 2026-03-17 09:00 A | 2026-04-01 16:00 A |  | 100% |  |  |  |  | 7h | 7h |
| 2057 | 5.99.1 | орг пескоструйка корпус шнека - отправить |  | 1h | 2026-03-17 09:00 A | 2026-03-17 10:00 A |  | 100% |  |  | start no earlier than 2026-03-17 08:00 | Шуранов Ю | 1h | 1h |
| 2058 | 5.99.2 | сборка шнека с ремонта |  | 6h | 2026-04-01 09:00 A | 2026-04-01 16:00 A | 2057 | 100% |  |  | start no earlier than 2026-04-01 09:00 | Некрасов А | 6h | 6h |
| 2059 | 5.100 | установить уплотнения на гофра без красн скотча |  | 4h | 2026-03-20 09:00 A | 2026-03-20 13:00 A |  | 100% |  |  | start no earlier than 2026-03-20 09:00 | Некрасов А; Труфанов А | 8h | 8h |
| 2060 | 5.101 | добавить воду в 4 газ. Котел проверить реальное давление в системе |  | 2h | 2026-03-19 08:00 A | 2026-03-19 11:00 A |  | 100% |  |  | start no earlier than 2026-03-19 08:00 | Бундин В | 2h | 2h |
| 2061 | 5.102 | сменить палярность вращения дробилки / сточило ножи |  | 1h | 2026-03-16 09:00 A | 2026-03-16 10:00 A |  | 100% |  |  | start no earlier than 2026-03-16 09:00 | Труфанов А; Некрасов А | 2h | 2h |
| 2062 | 5.103 | **устанвить ИБП на клапан газ** |  | 0.03d | 2026-03-16 09:00 A | 2026-03-16 09:15 A |  | 100% |  |  |  |  | 0.25h | 0.25h |
| 2063 | 5.103.1 | координация сроков выполнения с газовщиком |  | 15min | 2026-03-16 09:00 A | 2026-03-16 09:15 A |  | 100% |  |  | start no earlier than 2026-03-16 09:00 | Шуранов Ю | 0.25h | 0.25h |
| 2064 | 5.104 | **установить вентилятор с клапаном и фильтром** |  | 11.03d? | 2026-03-18 09:00 | 2026-04-02 09:15 |  |  | 253.56d |  |  |  | 88.25h |  |
| 2065 | 5.104.1 | получить сммету / счет |  | 15min | 2026-03-18 09:00 | 2026-03-18 09:15 |  |  | 253.56d | 0d | start no earlier than 2026-03-18 09:00 | Домоводов К | 0.25h |  |
| 2066 | 5.104.2 | изготовление поставка |  | 10d | 2026-03-18 09:15 | 2026-04-01 09:15 | 2065 |  | 253.56d | 0d | start no earlier than 2026-03-17 08:00 | оплот | 80h |  |
| 2067 | 5.104.3 | монтаж |  | 1d? | 2026-04-01 09:15 | 2026-04-02 09:15 | 2066 |  | 253.56d |  | start no earlier than 2026-03-17 08:00 | оплот | 8h |  |
| 2068 | 5.105 | закрыть отвертстие от демонтированной аспирации фильтротканью. Временно, до изг фильтра |  | 1h | 2026-03-13 08:00 A | 2026-03-13 10:00 A |  | 100% |  |  | start no earlier than 2026-03-13 08:00 | Дедов В | 1h | 1h |
| 2069 | 5.106 | **на отверстие от демонтированной оспирации установить фильтр** |  | 7.01d | 2026-03-20 09:00 A | 2026-03-31 09:05 A |  | 100% |  |  |  |  | 2.08h | 2.08h |
| 2070 | 5.106.1 | получить фильтры |  | 5min | 2026-03-31 09:00 A | 2026-03-31 09:05 A |  | 100% |  |  | start no earlier than 2026-03-31 09:00 | Шуранов Ю | 0.08h | 0.08h |
| 2071 | 5.106.2 | монтаж |  | 1h | 2026-03-20 09:00 A | 2026-03-20 10:00 A | 2070FS+1d | 100% |  |  | start no earlier than 2026-03-20 09:00 | Некрасов А; Труфанов А | 2h | 2h |
| 2072 | 5.107 | **устранить ржавчину шнека после дробилки** |  | 1d? | 2026-03-16 09:00 A | 2026-03-16 18:00 A |  | 100% |  |  |  |  | 16h | 16h |
| 2073 | 5.107.1 | полная разборка / зачистка / сборка |  | 1d? | 2026-03-16 09:00 A | 2026-03-16 18:00 A |  | 100% |  |  | start no earlier than 2026-03-16 09:00 | Труфанов А; Некрасов А | 16h | 16h |
| 2074 | 5.107.2 | согласовать чем можно покрыть шнек внутри | milestone | 0d | 2026-03-16 09:00 A | 2026-03-16 09:00 A |  | 100% |  |  | start no earlier than 2026-03-16 09:00 | Домоводов К |  |  |
| 2075 | 5.108 | заменаить гидро АКБ на насосной станции / замена мебраны и золотника |  | 2h | 2026-03-15 09:00 A | 2026-03-16 11:00 A |  | 100% |  |  | start no earlier than 2026-03-15 09:00 | Бундин В | 2h | 2h |
| 2076 | 5.109 | устарнить выдавливание материала с шнека №1 узел дробилки |  | 4h | 2026-03-13 09:00 A | 2026-03-13 13:00 A |  | 100% |  |  | start no earlier than 2026-03-13 09:00 | Тимофеев В; Бундин В | 8h | 8h |
| 2077 | 5.110 | проверить обр клапан бойлер в гардеробе. Стреляет |  | 30min | 2026-03-13 09:00 A | 2026-03-13 09:30 A |  | 100% |  |  | start no earlier than 2026-03-13 09:00 | Бундин В | 0.5h | 0.5h |
| 2078 | 5.111 | долить дистилят в АКБ штабелер свинцовый |  | 1h | 2026-03-11 09:00 A | 2026-03-11 10:00 A |  | 100% |  |  | start no earlier than 2026-03-11 09:00 | Макаревич А | 1h | 1h |
| 2079 | 5.112 | **замена бойлер туалет** |  | 16.25d | 2026-03-23 09:00 A | 2026-04-14 11:00 A |  | 100% |  |  |  |  | 82.25h | 82.25h |
| 2080 | 5.112.1 | заявка бойлер |  | 15min | 2026-03-23 09:00 A | 2026-03-23 09:15 A |  | 100% |  |  | start no earlier than 2026-03-23 09:00 | Шуранов Ю | 0.25h | 0.25h |
| 2081 | 5.112.2 | доставка |  | 10d | 2026-03-30 09:00 A | 2026-04-10 18:00 A | 2080 | 100% |  |  | start no earlier than 2026-03-29 09:00 | Карабанов | 80h | 80h |
| 2082 | 5.112.3 | монтаж |  | 2h | 2026-04-14 09:00 A | 2026-04-14 11:00 A | 2081 | 100% |  |  | start no earlier than 2026-03-12 08:00 | Тимофеев В | 2h | 2h |
| 2083 | 5.113 | ремонт хомут с вибросито |  | 1h | 2026-03-10 09:00 A | 2026-03-10 10:00 A |  | 100% |  |  | start no earlier than 2026-03-10 09:00 | Макаревич А | 1h | 1h |
| 2084 | 5.114 | Заварить деку на сито |  | 2h | 2026-03-06 09:00 A | 2026-03-06 11:00 A |  | 100% |  |  | start no earlier than 2026-03-06 09:00 | Тимофеев В | 2h | 2h |
| 2085 | 5.115 | Замена двойной розетки (созвон с Шурановым) или спросить у мастера |  | 1h | 2026-03-05 08:00 A | 2026-03-05 10:00 A |  | 100% |  |  | start no earlier than 2026-03-05 08:00 | Дедов В | 1h | 1h |
| 2086 | 5.116 | ошибка Е10 стиральная машинка |  | 1h | 2026-03-04 09:00 A | 2026-03-04 10:00 A |  | 100% |  |  | start no earlier than 2026-03-04 09:00 | Дедов В | 1h | 1h |
| 2087 | 5.117 | ремонт сито, сварка шов |  | 2h | 2026-03-03 09:00 A | 2026-03-03 11:00 A |  | 100% |  |  | start no earlier than 2026-03-03 09:00 | Макаревич А | 2h | 2h |
| 2088 | 5.118 | ремонт растариватель №1 + установить косынки |  | 2h | 2026-03-03 09:00 A | 2026-03-03 11:00 A |  | 100% |  |  | start no earlier than 2026-03-03 09:00 | Некрасов А; Труфанов А | 4h | 4h |

| ID | WBS | Task | Duration | Start | Finish | Predecessors | Complete | Remaining | Actual start | Total slack | Constraint | Resources | Work | Actual work |
| --- | --- | --- | --- | --- | --- | --- | --- | --- | --- | --- | --- | --- | --- | --- |
| 2089 | 5.119 | **ремонт растаривателя №3 - клинит заслонку** | 97.81d | 2026-04-20 09:00 A | 2026-09-02 16:30 |  | 87% | 13.01d |  | 143.78d |  |  | 16.92h | 14.67h |
| 2090 | 5.119.1 | установка ручной штурвал управления шибером | 2h | 2026-04-20 09:00 A | 2026-04-20 11:00 A |  | 100% |  |  |  | start no earlier than 2026-04-20 09:00 | Бундин В | 2h | 2h |
| 2091 | 5.119.2 | контроль поставка Зип - оплачивали или нет? | 10min | 2026-08-12 09:00 A | 2026-08-12 09:10 A |  | 100% |  |  |  | start no earlier than 2026-08-12 09:00 | Зорькин В | 0.17h | 0.17h |
| 2092 | 5.119.3 | получить счет | 15min | 2026-08-13 09:00 A | 2026-08-13 09:15 A |  | 100% |  |  |  | start no earlier than 2026-08-13 09:00 | Домоводов К | 0.25h | 0.25h |
| 2093 | 5.119.4 | контроль поставки | 15min | 2026-08-31 09:15 | 2026-08-31 09:30 | 2092FS+12d |  |  |  | 146.53d | start no earlier than 2026-08-31 09:00 | Зорькин В | 0.25h |  |
| 2094 | 5.119.5 | приемка | 15min | 2026-09-01 09:30 A | 2026-09-01 09:45 A | 2093FS+1d | 100% |  |  |  | start no earlier than 2026-08-31 09:00 | Зорькин В | 0.25h | 0.25h |
| 2095 | 5.119.6 | замена | 4h | 2026-09-02 09:30 A | 2026-09-02 14:30 A | 2094FS+1d | 100% |  |  |  | start no earlier than 2026-08-12 09:00 | Тимофеев В | 4h | 4h |
| 2096 | 5.119.7 | Ремонт паука с растаривателя, оценить состояние. | 2h | 2026-09-02 09:00 A | 2026-09-02 11:00 A |  | 100% |  |  |  | start no earlier than 2026-09-02 09:00 | Тимофеев В | 2h | 2h |
| 2097 | 5.119.8 | установить фланец на редуктор NMRV050 | 2h | 2026-05-18 09:00 A | 2026-05-18 11:00 A |  | 100% |  |  |  | start no earlier than 2026-05-20 09:00 | Бобренок В | 2h | 2h |
| 2098 | 5.119.9 | настройка тепловое реле, настройка концевиков | 2h | 2026-09-02 14:30 | 2026-09-02 16:30 | 2095, 2097 |  |  |  | 143.78d | start no earlier than 2026-05-08 09:00 | Дедов В | 2h |  |
| 2099 | 5.119.10 | доработка пластины, которая клинит | 4h | 2026-05-07 09:00 A | 2026-05-07 13:00 A |  | 100% |  |  |  | start no earlier than 2026-05-07 09:00 | Тимофеев В | 4h | 4h |
| 2100 | 5.120 | **установить курилку на раму. Изготовить лавочку** | 19.25d? | 2026-02-28 09:00 A | 2026-03-27 11:00 A |  | 100% |  |  |  |  |  | 27h | 27h |
| 2101 | 5.120.1 | сделать удлинители для синей платформы, на которые встанет курилка | 1d? | 2026-02-28 09:00 A | 2026-03-02 18:00 A |  | 100% |  |  |  | start no earlier than 2026-02-28 09:00 | Макаревич А | 8h | 8h |
| 2102 | 5.120.2 | закрыть отверстие в полу жзелезом | 1h | 2026-03-13 09:00 A | 2026-03-13 10:00 A |  | 100% |  |  |  | start no earlier than 2026-03-13 09:00 | Некрасов А; Труфанов А | 2h | 2h |
| 2103 | 5.120.3 | монтаж фанера на лавочку | 2h | 2026-03-27 09:00 A | 2026-03-27 11:00 A | 2102 | 100% |  |  |  | start no earlier than 2026-03-27 09:00 |  |  |  |
| 2104 | 5.120.4 | поворот курилки к стене, от ветра | 1h | 2026-03-20 09:00 A | 2026-03-20 10:00 A |  | 100% |  |  |  | start no earlier than 2026-03-20 09:00 | Некрасов А | 1h | 1h |
| 2105 | 5.120.5 | изготовить трап входной | 4h | 2026-03-20 10:00 A | 2026-03-20 15:00 A | 2104 | 100% |  |  |  | start no earlier than 2026-03-12 08:00 | Некрасов А | 4h | 4h |
| 2106 | 5.120.6 | изготовить лавку по периметру курилки. На железо будет потом доска или пенка. Металл с остатков 3ц или с синего склада | 1d? | 2026-03-01 09:00 A | 2026-03-02 18:00 A |  | 100% |  |  |  | start no earlier than 2026-03-01 09:00 | Макаревич А | 8h | 8h |
| 2107 | 5.120.7 | приготовить ручки за которые будет толпа поднимать руками курилку | 2h | 2026-03-09 09:00 A | 2026-03-09 11:00 A |  | 100% |  |  |  | start no earlier than 2026-03-09 09:00 | Некрасов А; Труфанов А | 4h | 4h |
| 2108 | 5.121 | ТО штабелеров - обрезать нитки. Дефектовка подшипников, указать в отчете состояние | 2h | 2026-03-01 09:00 A | 2026-03-02 11:00 A |  | 100% |  |  |  | start no earlier than 2026-03-01 09:00 | Макаревич А | 2h | 2h |
| 2109 | 5.122 | **штабелер - замена ролик мачты. Подшипник котка** | 0.01d | 2026-03-03 09:00 A | 2026-03-03 09:05 A |  | 100% |  |  |  |  |  | 0.17h | 0.17h |
| 2110 | 5.122.1 | контроль | 5min | 2026-03-03 09:00 A | 2026-03-03 09:05 A |  | 100% |  |  |  | start no earlier than 2026-03-03 09:00 | Зорькин В; Тракресурс | 0.17h | 0.17h |
| 2111 | 5.123 | **установить стеллажи для архив образцов** | 25.06d? | 2026-03-03 09:00 | 2026-04-07 09:30 A |  | 100% |  | 2026-03-05 09:00 |  |  |  | 227.25h | 227.25h |
| 2112 | 5.123.1 | монтаж освещение | 4h | 2026-03-06 09:00 A | 2026-03-06 13:00 A |  | 100% |  |  |  | start no earlier than 2026-03-06 09:00 | Некрасов А; Труфанов А | 8h | 8h |

| ID | WBS | Task | Duration | Start | Finish | Predecessors | Complete | Actual start | Actual finish | Constraint | Resources | Work | Actual work |
| --- | --- | --- | --- | --- | --- | --- | --- | --- | --- | --- | --- | --- | --- |
| 2113 | 5.123.2 | **покрасить стеллажи** | 12.02d | 2026-03-06 14:00 A | 2026-03-24 14:10 A | 2112 | 100% |  |  |  |  | 92.17h | 92.17h |
| 2114 | 5.123.2.1 | Заказать краску не пахнущую для радиаторов | 10min | 2026-03-06 14:00 A | 2026-03-06 14:10 A |  | 100% |  |  | start no earlier than 2026-03-03 09:00 | Зорькин В | 0.17h | 0.17h |
| 2115 | 5.123.2.2 | Доставка | 10d | 2026-03-06 14:10 A | 2026-03-24 14:10 A | 2114 | 100% |  |  | start no earlier than 2026-03-03 09:00 | Карабанов | 80h | 80h |
| 2116 | 5.123.2.3 | покраска | 4h | 2026-03-06 14:00 A | 2026-03-06 18:00 A |  | 100% |  |  | start no earlier than 2026-03-06 09:00 | Некрасов А; Труфанов А | 8h | 8h |
| 2117 | 5.123.2.4 | покраска | 4h | 2026-03-06 14:00 A | 2026-03-06 18:00 A |  | 100% |  |  | start no earlier than 2026-03-06 09:00 | Бундин В | 4h | 4h |
| 2118 | 5.123.3 | занести стеллажи в кабинеты с работниками 5ц | 4h | 2026-03-09 09:00 A | 2026-03-09 13:00 A | 2120 | 100% |  |  | start no earlier than 2026-03-09 09:00 | Бобренок В | 4h | 4h |
| 2119 | 5.123.4 | сборка стеллажей | 4h | 2026-03-13 09:00 A | 2026-03-13 13:00 A |  | 100% |  |  | start no earlier than 2026-03-13 09:00 | Труфанов А; Некрасов А | 8h | 8h |
| 2120 | 5.123.5 | монтаж доп полок с уголка | 4h | 2026-03-08 09:00 A | 2026-03-09 13:00 A | 2121 | 100% |  |  | start no earlier than 2026-03-08 09:00 | Бобренок В | 4h | 4h |
| 2121 | 5.123.6 | напилить фанеру на стеллажи | 8h | 2026-03-15 09:00 A | 2026-03-16 18:00 A |  | 100% |  |  | start no earlier than 2026-03-15 09:00 | Бундин В | 8h | 8h |
| 2122 | 5.123.7 | напилить фанеру на стеллажи | 4h | 2026-03-16 09:00 A | 2026-03-16 13:00 A |  | 100% |  |  | start no earlier than 2026-03-16 09:00 | Макаревич А; Тимофеев В | 8h | 8h |
| 2123 | 5.123.8 | **монтаж двери** | 8.06d? | 2026-03-03 09:00 | 2026-03-11 09:30 |  | 100% | 2026-03-05 09:00 | 2026-04-07 09:30 |  |  | 95.08h | 95.08h |
| 2124 | 5.123.8.1 | заявка фурнитуры | 30min | 2026-03-05 09:00 A | 2026-03-05 09:30 A |  | 100% |  |  | start no earlier than 2026-03-05 09:00 | Зорькин В | 0.5h | 0.5h |
| 2125 | 5.123.8.2 | получить коробку на дверь / контроолль поставки | 5min | 2026-03-18 09:00 A | 2026-03-18 09:05 A |  | 100% |  |  | start no earlier than 2026-03-18 09:00 | Зорькин В | 0.08h | 0.08h |
| 2126 | 5.123.8.3 | монтаж 2 двери | 4h | 2026-03-20 09:00 A | 2026-03-20 13:00 A |  | 100% |  |  | start no earlier than 2026-03-20 09:00 | Тимофеев В; Бундин В | 8h | 8h |
| 2127 | 5.123.8.4 | монтаж замка и ручек | 2h | 2026-03-24 09:00 A | 2026-03-24 11:00 A |  | 100% |  |  | start no earlier than 2026-03-24 09:00 | Тимофеев В | 2h | 2h |
| 2128 | 5.123.8.5 | **монтаж наличноков** | 10.06d | 2026-03-24 09:00 A | 2026-04-07 09:30 A |  | 100% |  |  |  |  | 84.5h | 84.5h |
| 2129 | 5.123.8.5.1 | заявка на наличинки | 30min | 2026-03-24 09:00 A | 2026-03-24 09:30 A |  | 100% |  |  | start no earlier than 2026-03-24 09:00 | Зорькин В | 0.5h | 0.5h |
| 2130 | 5.123.8.5.2 | доставка | 10d | 2026-03-24 09:30 A | 2026-04-07 09:30 A | 2129 | 100% |  |  | start no earlier than 2026-03-20 08:00 | Карабанов | 80h | 80h |
| 2131 | 5.123.8.5.3 | монтаж | 4h | 2026-04-04 09:30 A | 2026-04-06 13:00 A | 2130 | 100% |  |  | start no earlier than 2026-03-20 08:00 | Тимофеев В | 4h | 4h |
| 2132 | 5.124 | **монтаж розеток для весов** | 83d | 2026-03-02 09:00 A | 2026-06-24 18:00 A |  | 100% |  |  |  |  | 98.5h | 98.5h |
| 2133 | 5.124.1 | составить план монтажа, расчет материалов | 30min | 2026-03-02 09:00 A | 2026-03-02 09:30 A |  | 100% |  |  | start no earlier than 2026-03-02 09:00 | Некрасов А; Зорькин В; Труфанов А | 1.5h | 1.5h |
| 2134 | 5.124.2 | заявка трос/ талреп | 30min | 2026-03-02 09:30 A | 2026-03-02 10:00 A | 2133 | 100% |  |  | start no earlier than 2026-02-27 08:00 | Зорькин В | 0.5h | 0.5h |
| 2135 | 5.124.3 | доставка | 10d | 2026-03-02 10:00 A | 2026-03-16 10:00 A | 2134 | 100% |  |  | start no earlier than 2026-02-27 08:00 | Карабанов | 80h | 80h |
| 2136 | 5.124.4 | комплектация | 30min | 2026-06-01 09:00 A | 2026-06-01 09:30 A |  | 100% |  |  | start no earlier than 2026-06-01 09:00 | Зорькин В | 0.5h | 0.5h |
| 2137 | 5.124.5 | монтаж | 8h | 2026-06-24 09:00 A | 2026-06-24 18:00 A | 2135 | 100% |  |  | start no earlier than 2026-06-24 09:00 | Тимофеев В; Макаревич А | 16h | 16h |

| ID | WBS | Task | Duration | Start | Finish | Predecessors | Complete | Remaining | Total slack | Free slack | Constraint | Resources | Work | Actual work |
| --- | --- | --- | --- | --- | --- | --- | --- | --- | --- | --- | --- | --- | --- | --- |
| 2138 | 5.125 | **установить кнопочный пост вентилятора в окно в доступную зону** | 5.06d | 2026-03-03 09:00 A | 2026-03-10 09:30 |  | 1% | 5.01d | 270.53d |  |  |  | 44.5h | 0.5h |
| 2139 | 5.125.1 | заявка частотник 0,5-0,75квт | 30min | 2026-03-03 09:00 A | 2026-03-03 09:30 A |  | 100% |  |  |  | start no earlier than 2026-03-03 09:00 | Зорькин В | 0.5h | 0.5h |
| 2140 | 5.125.2 | доставка | 5d | 2026-03-03 09:30 | 2026-03-10 09:30 | 2139 |  |  | 270.53d |  | start no earlier than 2026-02-27 08:00 | Карабанов | 40h |  |
| 2141 | 5.125.3 | монтаж | 4h | 2026-03-03 09:00 | 2026-03-03 13:00 |  |  |  | 275.09d |  | start no earlier than 2026-03-03 09:00 | Дедов В | 4h |  |
| 2142 | 5.126 | замена местами бойлер с раздевали и кухня | 2h | 2026-02-27 09:00 A | 2026-02-27 11:00 A |  | 100% |  |  |  | start no earlier than 2026-02-27 08:00 | Бундин В; Труфанов А | 4h | 4h |
| 2143 | 5.127 | **установить калорифер на 4 котел** | 11.12d? | 2026-10-12 09:00 | 2026-10-26 10:00 |  |  |  | 97.47d |  |  |  | 97h |  |
| 2144 | 5.127.1 | заявка | 1h | 2026-10-12 09:00 | 2026-10-12 10:00 |  |  |  | 97.47d | 0d | start no earlier than 2026-10-12 09:00 | Зорькин В | 1h |  |
| 2145 | 5.127.2 | доставка | 10d | 2026-10-12 10:00 | 2026-10-23 10:00 | 2144 |  |  | 97.47d | 0d | start no earlier than 2026-02-27 08:00 | Карабанов | 80h |  |
| 2146 | 5.127.3 | монтаж | 1d? | 2026-10-23 10:00 | 2026-10-26 10:00 | 2145 |  |  | 97.47d |  | start no earlier than 2026-02-27 08:00 | Некрасов А; Труфанов А | 16h |  |
| 2147 | 5.128 | аудит по взрывоопасности 5ц | 1d? | 2025-09-03 09:00 | 2025-09-03 18:00 |  |  |  | 403.59d |  | start no earlier than 2025-09-03 09:00 |  |  |  |
| 2148 | 5.129 | **расширить прорем для проезда погрузчика** | 3d? | 2024-05-27 09:00 | 2024-05-29 18:00 |  |  |  | 733.59d |  |  |  | 24h |  |
| 2149 | 5.129.1 | перенос канализ трубы | 1d? | 2024-05-27 09:00 | 2024-05-27 18:00 |  |  |  | 733.59d | 0d | start no earlier than 2024-05-27 09:00 | Некрасов А | 8h |  |
| 2150 | 5.129.2 | монтаж закладных в прорем +400мм | 1d? | 2024-05-28 09:00 | 2024-05-28 18:00 | 2149 |  |  | 733.59d | 0d | start no earlier than 2024-05-17 09:00 | Некрасов А | 8h |  |
| 2151 | 5.129.3 | демонтаж /расширение | 1d? | 2024-05-29 09:00 | 2024-05-29 18:00 | 2150 |  |  | 733.59d |  | start no earlier than 2024-05-17 09:00 | Некрасов А | 8h |  |
| 2152 | 5.130 | подключить концевые выключатели шибера растаривателя | 2h | 2023-06-21 09:00 | 2023-06-21 11:00 |  |  |  | 979.34d |  | start no earlier than 2023-06-21 09:00 | Дедов В | 2h |  |
| 2153 | 5.131 | **установить сирену при включении тельфера** | 119d? | 2023-05-29 09:00 A | 2023-11-09 18:00 |  |  | 118.79d? | 877.59d |  |  |  | 48.08h | 0.08h |
| 2154 | 5.131.1 | заявка на сирену и кабель | 5min | 2023-05-29 09:00 A | 2023-05-29 09:05 A |  | 100% |  |  |  | start no earlier than 2023-05-29 09:00 | Лобанов И | 0.08h | 0.08h |
| 2155 | 5.131.2 | доставка | 5d | 2023-05-29 09:05 | 2023-06-05 09:05 | 2154 |  |  | 990.58d | 112.99d | start no earlier than 2023-05-22 09:00 | Малинина М | 40h |  |
| 2156 | 5.131.3 | монтаж | 1d? | 2023-11-09 09:00 | 2023-11-09 18:00 | 2155 |  |  | 877.59d |  | start no earlier than 2023-11-09 09:00 | Дедов В | 8h |  |
| 2157 | 5.132 | держак мешка для сбора отработанного корма лопатой, что бы второй не держал мешок | 1d? | 2026-05-04 09:00 | 2026-05-04 18:00 |  |  |  | 230.59d |  | start no earlier than 2026-05-04 09:00 | Тимофеев В | 8h |  |
| 2158 | 5.133 | **Замена насосной станции** | 9.25d | 2026-09-01 09:00 A | 2026-09-11 11:00 |  | 92% | 0.71d | 136.34d |  |  |  | 6.33h | 6h |
| 2159 | 5.133.1 | Замена насоса | 2h | 2026-09-01 09:00 A | 2026-09-01 11:00 A |  | 100% |  |  |  | start no earlier than 2026-09-01 09:00 | Бундин В | 2h | 2h |
| 2160 | 5.133.2 | Заявка на станцию | 15min | 2026-09-02 09:00 | 2026-09-02 09:15 |  |  |  | 144.56d |  | start no earlier than 2026-09-02 08:00 | Зорькин В | 0.25h |  |
| 2161 | 5.133.3 | контроль доставки | 5min | 2026-09-11 09:00 | 2026-09-11 09:05 |  |  |  | 136.58d |  | start no earlier than 2026-09-11 09:00 | Зорькин В | 0.08h |  |
| 2162 | 5.133.4 | установка новой насосной станции | 2h | 2026-09-11 09:00 A | 2026-09-11 11:00 A |  | 100% |  |  |  | start no earlier than 2026-09-11 09:00 | Некрасов А; Макаревич А | 4h | 4h |
| 2163 | 5.134 | Попытаться заварить деки и хомуты той проволокой по нерже, что есть у нас | 3h | 2026-07-28 08:00 A | 2026-07-28 12:00 A |  | 100% |  |  |  | start no earlier than 2026-07-28 08:00 | Макаревич А | 3h | 3h |

| ID | WBS | Task | Duration | Start | Finish | Predecessors | Complete | Remaining | Total slack | Constraint | Resources | Work | Actual work |
| --- | --- | --- | --- | --- | --- | --- | --- | --- | --- | --- | --- | --- | --- |
| 2164 | 5.135 | **5 цех** | 0.25d | 2026-04-07 09:00 A | 2026-04-07 11:00 A |  | 100% |  |  |  |  | 3.5h | 3.5h |
| 2165 | 5.135.1 | Установка сеток на сито | 1h | 2026-04-07 09:00 A | 2026-04-07 10:00 A |  | 100% |  |  | start no earlier than 2026-04-07 08:00 | Бундин В | 1h | 1h |
| 2166 | 5.135.2 | **2 цех** | 0.25d | 2026-04-07 09:00 A | 2026-04-07 11:00 A |  | 100% |  |  |  |  | 2.5h | 2.5h |
| 2167 | 5.135.2.1 | Взять шланг с мойки зона экструдера, установить на складе навесок цех 2, для набора воды в кубы | 30min | 2026-04-07 09:00 A | 2026-04-07 09:30 A |  | 100% |  |  | start no earlier than 2026-04-07 08:00 | Бундин В | 0.5h | 0.5h |
| 2168 | 5.135.2.2 | Посмотреть подачу воды на поломоечной машинке | 2h | 2026-04-07 09:00 A | 2026-04-07 11:00 A |  | 100% |  |  | start no earlier than 2026-04-07 08:00 | Бундин В | 2h | 2h |
| 2169 | 6 | **модернизация** | 984.5d? | 2023-06-07 09:00 A | 2027-03-03 13:00 |  | 48% | 508.67d? | 5.09d |  |  | 3394.67h | 2643.67h |
| 2170 | 6.1 | доработка нерж труб для парогенератора (антиэлектрод) | 1h | 2026-07-06 09:00 | 2026-07-06 10:00 |  |  |  | 186.47d | start no earlier than 2026-07-06 09:00 | Тимофеев В | 1h |  |
| 2171 | 6.2 | **Дражжировка 2 линия 1 цех** | 0.25d | 2026-07-29 08:00 A | 2026-07-29 11:00 A |  | 100% |  |  |  |  | 2h | 2h |
| 2172 | 6.2.1 | установка трубки с отверстиями, эксперимент | 2h | 2026-07-29 08:00 A | 2026-07-29 11:00 A |  | 100% |  |  | start no earlier than 2026-07-29 08:00 | Тимофеев В | 2h | 2h |
| 2173 | 6.3 | **поточные весы на входе в барабан жира** | 0.12d | 2026-06-15 09:00 A | 2026-06-15 10:00 A |  | 100% |  |  |  |  | 1h | 1h |
| 2174 | 6.3.1 | запрос КП у НОТИС - весы с дозатором / бункеры | 1h | 2026-06-15 09:00 A | 2026-06-15 10:00 A |  | 100% |  |  | start no earlier than 2026-06-15 09:00 | Зорькин В | 1h | 1h |
| 2175 | 6.4 | **устройство загрузки в смесители** | 0.12d | 2026-03-31 09:00 | 2026-03-31 10:00 |  |  |  | 255.47d |  |  | 1h |  |
| 2176 | 6.4.1 | подбор оборудования, запрос КП | 1h | 2026-03-31 09:00 | 2026-03-31 10:00 |  |  |  | 255.47d | start no earlier than 2026-03-31 08:00 | Зорькин В | 1h |  |
| 2177 | 6.5 | **определить параметры сушки гранулы лаб испытанием** | 6d | 2024-09-09 09:00 A | 2024-09-16 18:00 A |  | 100% |  |  |  |  | 16h | 16h |
| 2178 | 6.5.1 | изучить метод материал, физ законы процесса сушки. | 4h | 2024-09-09 09:00 A | 2024-09-09 13:00 A |  | 100% |  |  | start no earlier than 2024-09-09 09:00 | Зорькин В | 4h | 4h |
| 2179 | 6.5.2 | Определить набор средств измерения и оборыдования для лаб работы. | 4h | 2024-09-09 14:00 A | 2024-09-09 18:00 A | 2178 | 100% |  |  | start no earlier than 2024-09-09 09:00 | Зорькин В | 4h | 4h |
| 2180 | 6.5.3 | разрабоать пошаговый план лаб работы сушки 1кг продукта в термошкафу | 4h | 2024-09-16 09:00 A | 2024-09-16 13:00 A | 2179 | 100% |  |  | start no earlier than 2024-09-16 09:00 | Зорькин В | 4h | 4h |
| 2181 | 6.5.4 | определить зависимость времени сушки от температуры и влажности среды. | 4h | 2024-09-16 14:00 A | 2024-09-16 18:00 A | 2180 | 100% |  |  | start no earlier than 2024-09-06 08:00 | Зорькин В | 4h | 4h |
| 2182 | 6.6 | **станция фильтрации гидролизат с еврокуба в промежут емкость. Фильтр + насос** | 27.25d | 2026-03-13 09:00 A | 2026-04-21 11:00 A |  | 100% |  |  |  |  | 8h | 8h |
| 2183 | 6.6.1 | составить схему размещения насос / фильтр | 1h | 2026-03-13 09:00 A | 2026-03-13 10:00 A |  | 100% |  |  | start no earlier than 2026-03-13 09:00 | Зорькин В | 1h | 1h |
| 2184 | 6.6.2 | заявка фильтр 5" коллона + фитинги РР | 1h | 2026-03-13 10:00 A | 2026-03-13 11:00 A | 2183 | 100% |  |  | start no earlier than 2026-03-12 08:00 | Зорькин В | 1h | 1h |
| 2185 | 6.6.3 | доставка | 10d | 2026-03-13 11:00 A | 2026-03-27 11:00 A | 2184 | 100% |  |  | start no earlier than 2026-03-12 08:00 |  |  |  |
| 2186 | 6.6.4 | сборка насосная станция с фильром в 1ц | 4h | 2026-04-20 09:00 A | 2026-04-20 13:00 A | 2185 | 100% |  |  | start no earlier than 2026-04-20 09:00 | Тимофеев В | 4h | 4h |
| 2187 | 6.6.5 | оформление протокол испытаний | 2h | 2026-04-21 09:00 A | 2026-04-21 11:00 A |  | 100% |  |  | start no earlier than 2026-04-21 09:00 | Зорькин В | 2h | 2h |

| ID | WBS | Task | Type | Duration | Start | Finish | Predecessors | Complete | Remaining | Total slack | Constraint | Resources | Work | Actual work |
| --- | --- | --- | --- | --- | --- | --- | --- | --- | --- | --- | --- | --- | --- | --- |
| 2188 | 6.7 | **тест форсунки на гидролизат фильтрованный гидролизат** |  | 95.25d | 2026-04-21 11:00 A | 2026-09-01 13:00 | 2182 | 72% | 26.28d | 145.09d |  |  | 19h | 15h |
| 2189 | 6.7.1 | подготовить переходник |  | 2h | 2026-04-21 11:00 A | 2026-04-21 13:00 A |  | 100% |  |  | start no earlier than 2026-03-12 08:00 | Тимофеев В | 2h | 2h |
| 2190 | 6.7.2 | тестирование разных форсунок |  | 2h | 2026-04-21 13:00 A | 2026-04-21 16:00 A | 2189 | 100% |  |  | start no earlier than 2026-03-12 08:00 | Тимофеев В; Зорькин В | 4h | 4h |
| 2191 | 6.7.3 | контроль наличия фитингов для подключения насосной фильтровальной станции к еврокубу |  | 30min | 2026-04-24 08:00 A | 2026-04-24 09:30 A |  | 100% |  |  | start no earlier than 2026-04-24 08:00 | Зорькин В; Тимофеев В | 1h | 1h |
| 2192 | 6.7.4 | тест - наполнить канистру с куба гидролизатом через станцию+фильтр |  | 2h | 2026-04-27 09:00 A | 2026-04-27 11:00 A |  | 100% |  |  | start no earlier than 2026-04-27 09:00 | Зорькин В; Тимофеев В | 3h | 3h |
| 2193 | 6.7.5 | фильтрованный гдз распылить форсунками штатным насосом - забивакет |  | 4h | 2026-05-13 09:00 A | 2026-05-13 13:00 A | 2192 | 100% |  |  | start no earlier than 2026-05-13 09:00 | Зорькин В; Тимофеев В | 5h | 5h |
| 2194 | 6.7.6 | проект распыление моторчиком |  | 4h | 2026-09-01 09:00 | 2026-09-01 13:00 |  |  |  | 145.09d | start no earlier than 2026-09-01 09:00 | Домоводов К | 4h |  |
| 2195 | 6.8 | **станция фильтраци куринный жир с еврокуба в промежут емкость. Насос + фильтр** |  | 36.75d? | 2026-03-05 09:00 A | 2026-04-24 16:00 A |  | 100% |  |  |  |  | 46h | 46h |
| 2196 | 6.8.1 | подбор производительный насос и фильтр для жира. Закачка с еврокуба, перекачка через фильтр |  | 1d? | 2026-03-05 09:00 A | 2026-03-05 18:00 A |  | 100% |  |  | start no earlier than 2026-03-05 09:00 | Домоводов К; Зорькин В | 16h | 16h |
| 2197 | 6.8.2 | заявка материалы |  | 1d? | 2026-03-06 09:00 A | 2026-03-06 18:00 A | 2196 | 100% |  |  | start no earlier than 2026-02-27 08:00 | Зорькин В | 8h | 8h |
| 2198 | 6.8.3 | тест насосной станцией с фильтром |  | 1d? | 2026-04-20 09:00 A | 2026-04-20 18:00 A |  | 100% |  |  | start no earlier than 2026-04-20 09:00 | Зорькин В; Тимофеев В | 16h | 16h |
| 2199 | 6.8.4 | сборка второй станции для жира на БГ11А |  | 6h | 2026-04-24 08:00 A | 2026-04-24 16:00 A |  | 100% |  |  | start no earlier than 2026-04-24 08:00 | Тимофеев В | 6h | 6h |
| 2200 | 6.9 | **мешалка гидролизата** |  | 131.12d | 2026-03-03 09:00 A | 2026-09-02 10:00 A |  | 100% |  |  |  |  | 37.08h | 37.08h |
| 2201 | 6.9.1 | определить диаметр вала / где инструкция? Выяснить |  | 20min | 2026-08-28 09:00 A | 2026-08-28 09:20 A |  | 100% |  |  | start no earlier than 2026-08-28 09:00 | Зорькин В | 0.33h | 0.33h |
| 2202 | 6.9.2 | согласовать договор /оплата счет |  | 1h | 2026-03-03 09:00 A | 2026-03-03 10:00 A |  | 100% |  |  | start no earlier than 2026-03-03 09:00 | Домоводов К | 1h | 1h |
| 2203 | 6.9.3 | доставка | milestone | 0d | 2026-08-10 08:00 A | 2026-08-10 08:00 A |  | 100% |  |  | start no earlier than 2026-08-10 08:00 |  |  |  |
| 2204 | 6.9.4 | планирование технологии работы / какие нужны доработки |  | 15min | 2026-08-12 09:00 A | 2026-08-12 09:15 A |  | 100% |  |  | start no earlier than 2026-08-12 09:00 | Домоводов К | 0.25h | 0.25h |
| 2205 | 6.9.5 | сборка и тест с операторами в 1ц. Можно приварить кронштейны под штабелер |  | 4h | 2026-08-12 09:00 A | 2026-08-12 13:00 A |  | 100% |  |  | start no earlier than 2026-08-12 09:00 | Макаревич А | 4h | 4h |
| 2206 | 6.9.6 | составить чертеж кронштейна |  | 1h | 2026-08-17 09:00 A | 2026-08-17 10:00 A |  | 100% |  |  | start no earlier than 2026-08-17 09:00 | Шуранов Ю | 1h | 1h |
| 2207 | 6.9.7 | заявка на лебедка |  | 15min | 2026-08-17 10:00 A | 2026-08-17 10:15 A | 2206 | 100% |  |  | start no earlier than 2026-08-14 09:00 | Шуранов Ю | 0.25h | 0.25h |
| 2208 | 6.9.8 | конроль доставки |  | 15min | 2026-08-22 10:15 A | 2026-08-24 09:15 A | 2207FS+5d | 100% |  |  | start no earlier than 2026-08-14 09:00 | Шуранов Ю | 0.25h | 0.25h |
| 2209 | 6.9.9 | монтаж лебедка |  | 6h | 2026-08-31 09:00 A | 2026-08-31 16:00 A | 2208FS+1d | 100% |  |  | start no earlier than 2026-08-31 09:00 | Некрасов А; Труфанов А | 12h | 12h |
| 2210 | 6.9.10 | монтаж кронштейн под лебедку |  | 6h | 2026-08-31 16:00 A | 2026-09-01 13:00 A | 2209 | 100% |  |  | start no earlier than 2026-08-31 09:00 | Некрасов А; Труфанов А | 12h | 12h |
| 2211 | 6.9.11 | Установить 3-х фазную вилку для мешалки рядом с частотником |  | 2h | 2026-08-31 08:00 A | 2026-08-31 11:00 A |  | 100% |  |  | start no earlier than 2026-08-31 08:00 | Дедов В | 2h | 2h |
| 2212 | 6.9.12 | Установить розетку для электротали, проложить кабель к розетке возле мухобойки |  | 3h | 2026-08-31 08:00 A | 2026-08-31 12:00 A |  | 100% |  |  | start no earlier than 2026-08-31 08:00 | Дедов В | 3h | 3h |
| 2213 | 6.9.13 | Подключить таль к розетке, проложить гофру |  | 1h | 2026-09-02 09:00 A | 2026-09-02 10:00 A |  | 100% |  |  | start no earlier than 2026-09-02 09:00 | Бундин В | 1h | 1h |

| ID | WBS | Task | Duration | Start | Finish | Predecessors | Complete | Remaining | Total slack | Constraint | Resources | Work | Actual work |
| --- | --- | --- | --- | --- | --- | --- | --- | --- | --- | --- | --- | --- | --- |
| 2214 | 6.10 | **качественное нанесение жира тесты** | 271.5d? | 2026-03-02 09:00 A | 2027-03-03 13:00 A |  | 100% |  |  |  |  | 2102h | 2102h |
| 2215 | 6.10.1 | **испытания форсунка 2х фазная 1ц** | 2.25d | 2026-03-02 09:00 A | 2026-03-04 11:00 A |  | 100% |  |  |  |  | 5.5h | 5.5h |
| 2216 | 6.10.1.1 | подготовить кронштейн крепления форсунки к конвейеру | 2h | 2026-03-02 09:00 A | 2026-03-02 11:00 A |  | 100% |  |  | start no earlier than 2026-03-02 09:00 | Тимофеев В | 2h | 2h |
| 2217 | 6.10.1.2 | подготовить пневморедуктор, временно с НОТИС 3ц | 1h | 2026-03-02 11:00 A | 2026-03-02 12:00 A | 2216 | 100% |  |  | start no earlier than 2026-02-27 08:00 | Тимофеев В | 1h | 1h |
| 2218 | 6.10.1.3 | подготовить фильтр 1шт | 30min | 2026-03-02 12:00 A | 2026-03-02 12:30 A | 2217 | 100% |  |  | start no earlier than 2026-02-27 08:00 | Тимофеев В | 0.5h | 0.5h |
| 2219 | 6.10.1.4 | Тест форсунки на жирах, скооперироваться с технологами | 2h | 2026-03-04 09:00 A | 2026-03-04 11:00 A |  | 100% |  |  | start no earlier than 2026-03-04 09:00 | Тимофеев В | 2h | 2h |
| 2220 | 6.10.2 | **монтаж форсунки в линию** | 262.5d? | 2026-03-11 09:00 A | 2027-03-03 13:00 A |  | 100% |  |  |  | Тимофеев В | 2096.5h | 2096.5h |
| 2221 | 6.10.2.1 | **тест однофазная форсунка** | 30.25d? | 2026-03-11 09:00 A | 2026-04-22 11:00 A |  | 100% |  |  |  |  | 52.5h | 52.5h |
| 2222 | 6.10.2.1.1 | заявка пневморедуктор, фитинги насос - кран - 3х ходовой | 30min | 2026-03-11 09:00 A | 2026-03-11 09:30 A |  | 100% |  |  | start no earlier than 2026-03-11 09:00 | Зорькин В | 0.5h | 0.5h |
| 2223 | 6.10.2.1.2 | проект рама для монтаж фильтров, редуктор, кронштейн форсунки | 1d? | 2026-03-11 09:30 A | 2026-03-12 09:30 A | 2222 | 100% |  |  | start no earlier than 2026-02-27 08:00 | Домоводов К | 8h | 8h |
| 2224 | 6.10.2.1.3 | доставка | 5d | 2026-03-30 09:00 A | 2026-04-03 18:00 A |  | 100% |  |  | start no earlier than 2026-03-30 09:00 | Карабанов | 40h | 40h |
| 2225 | 6.10.2.1.4 | сборка рама, покраска | 2h | 2026-04-22 09:00 A | 2026-04-22 11:00 A | 2223 | 100% |  |  | start no earlier than 2026-04-22 09:00 | Тимофеев В | 2h | 2h |
| 2226 | 6.10.2.1.5 | монтаж 0,3 форсунки | 2h | 2026-04-22 09:00 A | 2026-04-22 11:00 A | 2224 | 100% |  |  | start no earlier than 2026-04-22 09:00 | Тимофеев В | 2h | 2h |
| 2227 | 6.11 | **тест однофазная форсунка** | 0.02d | 2026-03-16 09:00 A | 2026-03-16 09:10 A |  | 100% |  |  |  |  | 0.17h | 0.17h |
| 2228 | 6.11.1 | получить счет | 10min | 2026-03-16 09:00 A | 2026-03-16 09:10 A |  | 100% |  |  | start no earlier than 2026-03-16 09:00 | Домоводов К | 0.17h | 0.17h |
| 2229 | 6.12 | **установить фильтры жир на 1 и 2 линию** | 71.25d | 2026-03-17 09:00 A | 2026-06-24 11:00 |  | 83% | 11.88d | 194.34d |  |  | 14h | 12h |
| 2230 | 6.12.1 | сборка система фильтров 2 фильтра на 2 линии подготовиь + рама | 4h | 2026-03-17 09:00 A | 2026-03-17 13:00 A |  | 100% |  |  | start no earlier than 2026-03-17 09:00 | Тимофеев В | 4h | 4h |
| 2231 | 6.12.2 | монтаж стационарно рама под фильтры | 4h | 2026-04-22 09:00 A | 2026-04-22 13:00 A | 2230 | 100% |  |  | start no earlier than 2026-04-22 09:00 | Тимофеев В | 4h | 4h |
| 2232 | 6.12.3 | калибровка PID регулятора подачи жира | 2h | 2026-05-13 09:00 A | 2026-05-13 11:00 A |  | 100% |  |  | start no earlier than 2026-05-13 09:00 | Зорькин В; Домоводов К | 4h | 4h |
| 2233 | 6.12.4 | подготовка для установить на 1 линию | 2h | 2026-06-24 09:00 | 2026-06-24 11:00 |  |  |  | 194.34d | start no earlier than 2026-06-24 09:00 | Тимофеев В | 2h |  |
| 2234 | 6.13 | **ТЕКО 0,4 или 1,5 поставить пленку с БЕСТРОМА 620мм** | 6.09d | 2026-03-13 09:00 A | 2026-03-23 09:45 A |  | 100% |  |  |  |  | 0.75h | 0.75h |
| 2235 | 6.13.1 | запрос возможности в ТЕКО | 30min | 2026-03-13 09:00 A | 2026-03-13 09:30 A |  | 100% |  |  | start no earlier than 2026-03-13 09:00 | Зорькин В | 0.5h | 0.5h |
| 2236 | 6.13.2 | контроль ответ | 15min | 2026-03-23 09:30 A | 2026-03-23 09:45 A | 2235FS+10d | 100% |  |  | start no earlier than 2026-03-12 08:00 | Зорькин В | 0.25h | 0.25h |
| 2237 | 6.14 | **фильера с вставками для 2ц** | 0.02d | 2025-02-21 09:00 A | 2025-02-21 09:10 A |  | 100% |  |  |  |  | 0.17h | 0.17h |
| 2238 | 6.14.1 | контроль изготовления | 10min | 2025-02-21 09:00 A | 2025-02-21 09:10 A |  | 100% |  |  | start no earlier than 2025-02-21 09:00 | Шуранов Ю | 0.17h | 0.17h |

| ID | WBS | Task | Duration | Start | Finish | Predecessors | Complete | Total slack | Free slack | Constraint | Resources | Work | Actual work |
| --- | --- | --- | --- | --- | --- | --- | --- | --- | --- | --- | --- | --- | --- |
| 2239 | 6.15 | **ручка для экструдера крутиьт мотор на 1 и 2 линию** | 138d? | 2024-08-09 09:00 | 2025-02-18 18:00 |  |  | 544.59d |  |  |  | 9h |  |
| 2240 | 6.15.1 | изготовление | 1d? | 2025-02-18 09:00 | 2025-02-18 18:00 |  |  | 544.59d |  | start no earlier than 2025-02-18 09:00 | Черепанов И | 8h |  |
| 2241 | 6.15.2 | составить чертежи / разместить изготовление | 1h | 2024-08-09 09:00 | 2024-08-09 10:00 |  |  | 682.47d |  | start no earlier than 2024-08-09 09:00 | Шуранов Ю | 1h |  |
| 2242 | 6.16 | **охлаждение шкафов управления печью 1 2 3 линия** | 5d? | 2024-04-18 09:00 | 2024-04-24 18:00 |  |  | 758.59d |  |  |  | 40h |  |
| 2243 | 6.16.1 | выбор и заявка кондиционеры для щитов управления | 1d? | 2024-04-18 09:00 | 2024-04-18 18:00 |  |  | 758.59d | 0d | start no earlier than 2024-04-18 09:00 | Домоводов К | 8h |  |
| 2244 | 6.16.2 | оплата / доставка | 1d? | 2024-04-19 09:00 | 2024-04-19 18:00 | 2243 |  | 758.59d | 0d | start no earlier than 2024-04-04 09:00 | Мультан | 8h |  |
| 2245 | 6.16.3 | монтаж | 3d | 2024-04-22 09:00 | 2024-04-24 18:00 | 2244 |  | 758.59d |  | start no earlier than 2024-04-11 09:00 | Некрасов А | 24h |  |
| 2246 | 6.17 | **подача гидролизат в смеситель насосом** | 25d? | 2024-03-25 09:00 | 2024-04-26 18:00 |  |  | 756.59d |  |  |  | 200h |  |
| 2247 | 6.17.1 | выбор насоса / заявка на насос | 1d? | 2024-03-25 09:00 | 2024-03-25 18:00 |  |  | 756.59d | 0d | start no earlier than 2024-03-25 09:00 | Домоводов К | 8h |  |
| 2248 | 6.17.2 | проректирование автоматика, монтажная часть / заявка | 1d? | 2024-03-26 09:00 | 2024-03-26 18:00 | 2247 |  | 756.59d | 0d | start no earlier than 2024-03-22 09:00 | Домоводов К | 8h |  |
| 2249 | 6.17.3 | поставка оборудования | 20d | 2024-03-27 09:00 | 2024-04-23 18:00 | 2248 |  | 756.59d | 0d | start no earlier than 2024-03-22 09:00 | Мультан | 160h |  |
| 2250 | 6.17.4 | монтаж электрика | 1d? | 2024-04-24 09:00 | 2024-04-24 18:00 | 2249 |  | 756.59d | 0d | start no earlier than 2024-03-22 09:00 | Некрасов А | 8h |  |
| 2251 | 6.17.5 | монтаж трубопровод | 1d? | 2024-04-25 09:00 | 2024-04-25 18:00 | 2250 |  | 756.59d | 0d | start no earlier than 2024-03-22 09:00 | Некрасов А | 8h |  |
| 2252 | 6.17.6 | монтаж автоматика | 1d? | 2024-04-26 09:00 | 2024-04-26 18:00 | 2251 |  | 756.59d |  | start no earlier than 2024-03-22 09:00 | Некрасов А | 8h |  |
| 2253 | 6.18 | **установить форсунки на подачу жир и гидролизат** | 106.38d | 2024-03-26 09:00 A | 2024-08-21 12:00 A |  | 100% |  |  |  |  | 187h | 187h |
| 2254 | 6.18.1 | выбор тип форсунок, заявка | 1d | 2024-03-26 09:00 A | 2024-03-26 18:00 A |  | 100% |  |  | start no earlier than 2024-03-26 09:00 | Домоводов К | 8h | 8h |
| 2255 | 6.18.2 | проректирование / заявка на пневматику и электрику для управления форсунками | 1d | 2024-03-27 09:00 A | 2024-03-27 18:00 A | 2254 | 100% |  |  | start no earlier than 2024-03-22 09:00 | Домоводов К | 8h | 8h |
| 2256 | 6.18.3 | тех решение / чертеж крепления форсунок | 1d | 2024-03-28 09:00 A | 2024-03-28 18:00 A | 2255 | 100% |  |  | start no earlier than 2024-03-22 09:00 | Домоводов К | 8h | 8h |
| 2257 | 6.18.4 | доставка | 20d | 2024-03-29 09:00 A | 2024-04-25 18:00 A | 2254, 2256 | 100% |  |  | start no earlier than 2024-03-22 09:00 | Мультан | 160h | 160h |
| 2258 | 6.18.5 | монтаж механника | 2h | 2024-08-21 09:00 A | 2024-08-21 11:00 A | 2257 | 100% |  |  | start no earlier than 2024-08-21 09:00 | Тимофеев В | 2h | 2h |
| 2259 | 6.18.6 | монтаж пневматика | 1h | 2024-08-21 11:00 A | 2024-08-21 12:00 A | 2258 | 100% |  |  | start no earlier than 2024-03-22 09:00 | Тимофеев В | 1h | 1h |
| 2260 | 6.19 | **модернизация откидной воронка загрузки в барабан дрожировки** | 10.62d | 2024-05-14 09:00 A | 2024-05-28 15:00 A |  | 100% |  |  |  |  | 89h | 89h |
| 2261 | 6.19.1 | составить эскиз / заказ шарниры (при остановке экструдера) | 1h | 2024-05-14 09:00 A | 2024-05-14 10:00 A |  | 100% |  |  | start no earlier than 2024-05-14 09:00 | Шуранов Ю | 1h | 1h |
| 2262 | 6.19.2 | доставка | 10d | 2024-05-14 10:00 A | 2024-05-28 10:00 A | 2261 | 100% |  |  | start no earlier than 2024-03-14 09:00 | Мультан | 80h | 80h |
| 2263 | 6.19.3 | монгтаж | 4h | 2024-05-28 10:00 A | 2024-05-28 15:00 A | 2262 | 100% |  |  | start no earlier than 2024-05-14 09:00 | Макаревич А; Некрасов А | 8h | 8h |
| 2264 | 6.20 | модернизация ножевого узла | 1d? | 2023-12-28 09:00 | 2023-12-28 18:00 |  |  | 842.59d |  | start no earlier than 2023-12-28 09:00 |  |  |  |

| ID | WBS | Task | Duration | Start | Finish | Predecessors | Complete | Remaining | Total slack | Free slack | Constraint | Resources | Work | Actual work |
| --- | --- | --- | --- | --- | --- | --- | --- | --- | --- | --- | --- | --- | --- | --- |
| 2265 | 6.21 | **модернизация дозации воды в прекондиционер** | 0.62d | 2023-12-25 09:00 A | 2023-12-25 15:00 A |  | 100% |  |  |  |  |  | 5h | 5h |
| 2266 | 6.21.1 | установить балансировочный кран 2 линия | 1h | 2023-12-25 09:00 A | 2023-12-25 10:00 A |  | 100% |  |  |  | start no earlier than 2023-12-25 09:00 | Дедов В | 1h | 1h |
| 2267 | 6.21.2 | установить расходомер 2 линия | 2h | 2023-12-25 10:00 A | 2023-12-25 12:00 A | 2266 | 100% |  |  |  | start no earlier than 2023-12-20 09:00 | Дедов В | 2h | 2h |
| 2268 | 6.21.3 | установить расходомер 2 линия | 2h | 2023-12-25 12:00 A | 2023-12-25 15:00 A | 2267 | 100% |  |  |  | start no earlier than 2023-12-20 09:00 | Дедов В | 2h | 2h |
| 2269 | 6.22 | **заменить шланг на высоктемпературный на жир** | 1.62d? | 2024-05-14 09:00 A | 2024-05-15 15:00 A |  | 100% |  |  |  |  |  | 13h | 13h |
| 2270 | 6.22.1 | заявка / подбор | 1h | 2024-05-14 09:00 A | 2024-05-14 10:00 A |  | 100% |  |  |  | start no earlier than 2024-05-14 09:00 | Шуранов Ю | 1h | 1h |
| 2271 | 6.22.2 | доставка | 1d? | 2024-05-14 10:00 A | 2024-05-15 10:00 A | 2270 | 100% |  |  |  | start no earlier than 2023-12-13 08:00 | Малинина М | 8h | 8h |
| 2272 | 6.22.3 | замена | 4h | 2024-05-15 10:00 A | 2024-05-15 15:00 A | 2271 | 100% |  |  |  | start no earlier than 2024-01-15 09:00 | Тимофеев В | 4h | 4h |
| 2273 | 6.23 | **тепловая защита электромоторов мехнизмов** | 108.75d | 2023-12-28 09:00 A | 2024-05-28 16:00 |  | 2% | 106.58d | 734.84d |  |  |  | 100h | 2h |
| 2274 | 6.23.1 | **составить список эл моторов (нужен ток ) без теплового реле - от вибросита - до упаковки вся технология** | 75.25d | 2024-01-30 09:00 A | 2024-05-14 11:00 |  | 17% | 62.71d | 745.34d |  |  |  | 12h | 2h |
| 2275 | 6.23.1.1 | 5 цех | 2h | 2024-01-30 09:00 A | 2024-01-30 11:00 A |  | 100% |  |  |  | start no earlier than 2024-01-30 09:00 | Дедов В | 2h | 2h |
| 2276 | 6.23.1.2 | 1 цех | 4h | 2024-01-30 09:00 | 2024-01-30 13:00 |  |  |  | 820.09d |  | start no earlier than 2024-01-30 09:00 | Дедов В | 4h |  |
| 2277 | 6.23.1.3 | 2 цех | 4h | 2024-01-30 09:00 | 2024-01-30 13:00 |  |  |  | 820.09d |  | start no earlier than 2024-01-30 09:00 | Дедов В | 4h |  |
| 2278 | 6.23.1.4 | заполнитьт таблицу для заявки место-двиг-ток | 2h | 2024-05-14 09:00 | 2024-05-14 11:00 |  |  |  | 745.34d |  | start no earlier than 2024-05-14 09:00 | Шуранов Ю | 2h |  |
| 2279 | 6.23.2 | переписать список мотор-редукторов | 2h | 2023-12-28 09:00 | 2023-12-28 11:00 |  |  |  | 831.59d | 96.75d | start no earlier than 2023-12-28 09:00 | Дедов В | 2h |  |
| 2280 | 6.23.3 | заявка тепл реле | 2h | 2024-05-14 09:00 | 2024-05-14 11:00 | 2279FS+1d |  |  | 734.84d | 0d | start no earlier than 2024-05-14 09:00 | Шуранов Ю | 2h |  |
| 2281 | 6.23.4 | дост авка | 10d | 2024-05-14 11:00 | 2024-05-28 11:00 | 2280 |  |  | 734.84d | 0d | start no earlier than 2023-12-13 08:00 | Малинина М | 80h |  |
| 2282 | 6.23.5 | монтаж конвейер 2ц | 2h | 2024-05-28 11:00 | 2024-05-28 13:00 | 2280, 2281 |  |  | 734.84d | 0d | start no earlier than 2024-01-19 09:00 | Дедов В | 2h |  |
| 2283 | 6.23.6 | монтаж составить список | 2h | 2024-05-28 14:00 | 2024-05-28 16:00 | 2282 |  |  | 734.84d |  | start no earlier than 2023-12-13 08:00 | Домоводов К | 2h |  |
| 2284 | 6.24 | **устройство контроля уровня сырья в большом бункере** | 14.03d | 2023-08-16 09:00 A | 2023-09-05 09:15 |  |  | 14d | 925.56d |  |  |  | 192.25h | 0.25h |
| 2285 | 6.24.1 | заявка на датчик | 15min | 2023-08-16 09:00 A | 2023-08-16 09:15 A |  | 100% |  |  |  | start no earlier than 2023-08-14 09:00 | Лобанов И | 0.25h | 0.25h |
| 2286 | 6.24.2 | доставка | 10d | 2023-08-16 09:15 | 2023-08-30 09:15 | 2285 |  |  | 925.56d | 0d | start no earlier than 2023-03-10 09:00 | Малинина М; Домоводов К | 160h |  |
| 2287 | 6.24.3 | выполнение монажных работ | 4d | 2023-08-30 09:15 | 2023-09-05 09:15 | 2286 |  |  | 925.56d |  | start no earlier than 2023-03-10 09:00 | Подрядчик | 32h |  |
| 2288 | 6.25 | **конвейер с охладителя регулировка ленты - модернизация** | 6.25d | 2024-05-14 09:00 A | 2024-05-22 11:00 A |  | 100% |  |  |  |  |  | 50h | 50h |
| 2289 | 6.25.1 | выбор и заявка натяжные буксы | 2h | 2024-05-14 09:00 A | 2024-05-14 11:00 A |  | 100% |  |  |  | start no earlier than 2024-05-14 09:00 | Шуранов Ю | 2h | 2h |
| 2290 | 6.25.2 | доставка | 5d | 2024-05-14 11:00 A | 2024-05-21 11:00 A | 2289 | 100% |  |  |  | start no earlier than 2023-10-30 09:00 | Малинина М | 40h | 40h |
| 2291 | 6.25.3 | монтаж | 1d | 2024-05-21 11:00 A | 2024-05-22 11:00 A | 2290 | 100% |  |  |  | start no earlier than 2023-12-01 09:00 | Тимофеев В | 8h | 8h |

| ID | WBS | Task | Duration | Start | Finish | Predecessors | Complete | Remaining | Actual start | Total slack | Free slack | Constraint | Resources | Work | Actual work |
| --- | --- | --- | --- | --- | --- | --- | --- | --- | --- | --- | --- | --- | --- | --- | --- |
| 2292 | 6.26 | **прекондиционер забивается отслоением слипшегося сырья** | 204d? | 2023-08-03 09:00 | 2024-05-14 18:00 |  |  |  |  | 0d |  |  |  | 24h |  |
| 2293 | 6.26.1 | **решение тех совет** | 1d? | 2023-08-03 09:00 | 2023-08-03 18:00 |  |  |  |  |  |  |  |  | 24h |  |
| 2294 | 6.26.1.1 | вар1 - доп лопатки на выходе | 1d? | 2024-05-14 09:00 | 2024-05-14 18:00 |  |  |  |  | 744.59d |  | start no earlier than 2024-05-14 09:00 | Шуранов Ю | 8h |  |
| 2295 | 6.26.1.2 | вар 2 - вертикальные ворошители | 1d? | 2024-05-14 09:00 | 2024-05-14 18:00 |  |  |  |  | 744.59d |  | start no earlier than 2024-05-14 09:00 | Шуранов Ю | 8h |  |
| 2296 | 6.26.1.3 | вар 3 - подача пара | 1d? | 2024-05-14 09:00 | 2024-05-14 18:00 |  |  |  |  | 744.59d |  | start no earlier than 2024-05-14 09:00 | Шуранов Ю | 8h |  |
| 2297 | 6.27 | **фильтры на баки жиров перед насосами** | 439.12d | 2023-07-20 09:00 A | 2025-03-26 10:00 A |  | 100% |  |  |  |  |  |  | 4.75h | 4.75h |
| 2298 | 6.27.1 | утвердить тех решение | 1h | 2023-07-20 09:00 A | 2023-07-20 10:00 A |  | 100% |  |  |  |  | start no earlier than 2023-07-20 09:00 | Лобанов И; Домоводов К; Сапелин С | 3h | 3h |
| 2299 | 6.27.2 | купить сетку в корпусе | 30min | 2024-05-14 09:00 A | 2024-05-14 09:30 A |  | 100% |  |  |  |  | start no earlier than 2024-05-14 09:00 | Шуранов Ю | 0.5h | 0.5h |
| 2300 | 6.27.3 | купить 1/2 муфта для установки фитингов | 15min | 2025-03-26 09:00 A | 2025-03-26 09:15 A |  | 100% |  |  |  |  | start no earlier than 2025-03-26 08:00 | Шуранов Ю | 0.25h | 0.25h |
| 2301 | 6.27.4 | проверка фитингов | 1h | 2025-03-26 09:00 A | 2025-03-26 10:00 A |  | 100% |  |  |  |  | start no earlier than 2025-03-26 08:00 | Зорькин В | 1h | 1h |
| 2302 | 6.28 | **защита редутора шнеков при отказе маслянного насоса** | 20.12d? | 2023-08-02 09:00 | 2023-08-30 10:00 |  | 33% | 13.52d? | 2023-07-28 09:00 |  |  |  |  | 126.5h | 41.5h |
| 2303 | 6.28.1 | поиск фитинг для замера реле давления | 30min | 2023-07-28 09:00 A | 2023-07-28 09:30 A |  | 100% |  |  |  |  | start no earlier than 2023-07-28 09:00 | Тимофеев В | 0.5h | 0.5h |
| 2304 | 6.28.2 | заявка на фитинг | 1h | 2023-07-31 09:00 A | 2023-07-31 10:00 A | 2303 | 100% |  |  |  |  | start no earlier than 2023-07-31 09:00 | Лобанов И | 1h | 1h |
| 2305 | 6.28.3 | доставка | 5d | 2023-07-31 10:00 A | 2023-08-07 10:00 A | 2304 | 100% |  |  |  |  | start no earlier than 2023-07-31 09:00 | Малинина М | 40h | 40h |
| 2306 | 6.28.4 | заявка реле потока 1/2 или 3/4 | 1h | 2026-03-19 09:00 | 2026-03-19 10:00 |  |  |  |  | 252.97d | 0d | start no earlier than 2026-03-19 09:00 | Шуранов Ю | 1h |  |
| 2307 | 6.28.5 | доставка | 10d | 2026-03-19 10:00 | 2026-04-02 10:00 | 2306 |  |  |  | 252.97d | 1.88d | start no earlier than 2026-03-12 08:00 | Карабанов | 80h |  |
| 2308 | 6.28.6 | монтаж гидравлика | 2h | 2026-04-06 09:00 | 2026-04-06 11:00 | 2307 |  |  |  | 251.09d | 0d | start no earlier than 2026-04-06 09:00 | Тимофеев В | 2h |  |
| 2309 | 6.28.7 | монтаж электрика схема защиты + привязка к частотному приводу | 2h | 2026-04-06 11:00 | 2026-04-06 13:00 | 2308 |  |  |  | 251.09d |  | start no earlier than 2023-07-20 09:00 | Тимофеев В | 2h |  |
| 2310 | 6.29 | **подача сырья в упаковщки 1 цех** | 199.5d? | 2023-06-07 09:00 A | 2024-03-12 13:00 |  | 12% | 175.32d? |  | 790.09d |  |  |  | 37h | 8h |
| 2311 | 6.29.1 | испытание пневмотранспорта напорная магистраль | 4h | 2024-03-12 09:00 A | 2024-03-12 13:00 A |  | 100% |  |  |  |  | start no earlier than 2024-03-12 09:00 | Бобренок В; Некрасов А | 8h | 8h |
| 2312 | 6.29.2 | технологическая схема подачи продукта в упаковщики | 1d? | 2023-06-19 09:00 | 2023-06-19 18:00 |  |  |  |  | 980.59d |  | start no earlier than 2023-06-19 09:00 | Технолог | 8h |  |
| 2313 | 6.29.3 | поиск / запрорс цен на диверторы | 2h | 2023-06-07 09:00 | 2023-06-07 11:00 |  |  |  |  | 986.97d | 0d | start no earlier than 2023-06-07 09:00 | Домоводов К | 2h |  |
| 2314 | 6.29.4 | поиск / запрос цены на эжекторный приемник | 2h | 2023-06-07 11:00 | 2023-06-07 13:00 | 2313 |  |  |  | 986.97d | 0d | start no earlier than 2023-05-10 08:00 | Домоводов К | 2h |  |
| 2315 | 6.29.5 | расчет трассы | 2d | 2023-06-07 14:00 | 2023-06-09 13:00 | 2314 |  |  |  | 986.97d | 0d | start no earlier than 2023-05-10 08:00 | Домоводов К | 16h |  |
| 2316 | 6.29.6 | подбор приобритение вентилятора | 1h | 2023-06-09 14:00 | 2023-06-09 15:00 | 2315 |  |  |  | 986.97d |  | start no earlier than 2023-04-27 09:00 | Домоводов К | 1h |  |

| ID | WBS | Task | Type | Duration | Start | Finish | Predecessors | Complete | Remaining | Total slack | Free slack | Constraint | Resources | Work | Actual work |
| --- | --- | --- | --- | --- | --- | --- | --- | --- | --- | --- | --- | --- | --- | --- | --- |
| 2317 | 6.30 | **защита тэн печи при отключении вентиляторов** |  | 160.25d? | 2023-06-09 09:00 | 2024-01-19 11:00 |  |  |  | 827.34d |  |  |  | 66h |  |
| 2318 | 6.30.1 | устиановить защиту на пускателе 380 1 линия |  | 2h | 2024-01-19 09:00 | 2024-01-19 11:00 |  |  |  | 827.34d |  | start no earlier than 2024-01-19 09:00 | Тимофеев В | 2h |  |
| 2319 | 6.30.2 | составить схему защиты |  | 1d? | 2023-06-09 09:00 | 2023-06-09 18:00 |  |  |  | 979.59d | 0d | start no earlier than 2023-06-09 09:00 | Домоводов К | 8h |  |
| 2320 | 6.30.3 | заявка |  | 1d? | 2023-06-12 09:00 | 2023-06-12 18:00 | 2319 |  |  | 979.59d | 0d | start no earlier than 2023-04-25 09:00 | Домоводов К | 8h |  |
| 2321 | 6.30.4 | оплата поставка |  | 5d | 2023-06-13 09:00 | 2023-06-19 18:00 | 2320 |  |  | 979.59d | 5d | start no earlier than 2023-05-02 09:00 | Малинина М | 40h |  |
| 2322 | 6.30.5 | сборка и монтаж |  | 1d? | 2023-06-27 09:00 | 2023-06-27 18:00 | 2321 |  |  | 974.59d |  | start no earlier than 2023-06-27 09:00 | Бобренок В | 8h |  |
| 2323 | 6.31 | Настройка даты на пробнике, нужно приподнять на 3-5 мм (ждем решение технологов, информация поменялась, читать письмо от 01.09.2026) |  | 3h | 2026-09-03 09:00 A | 2026-09-03 12:00 A |  | 100% |  |  |  | start no earlier than 2026-09-03 09:00 | Тимофеев В | 3h | 3h |
| 2324 | 7 | **техника** |  | 644d? | 2024-05-14 09:00 A | 2026-10-20 09:00 |  | 98% | 16.02d? | 101.59d |  |  |  | 52.58h | 51.25h |
| 2325 | 7.1 | **KAMATSU #1** |  | 1d | 2026-10-19 09:00 | 2026-10-20 09:00 |  |  |  | 101.59d |  |  |  | 0.08h |  |
| 2326 | 7.1.1 | **заявка 19_10** |  | 1d | 2026-10-19 09:00 | 2026-10-20 09:00 |  |  |  | 101.59d |  |  |  | 0.08h |  |
| 2327 | 7.1.1.1 | вызов АВТОБЕСТ |  | 5min | 2026-10-19 09:00 | 2026-10-19 09:05 |  |  |  | 102.58d | 0.99d | start no earlier than 2026-10-19 08:00 | Зорькин В | 0.08h |  |
| 2328 | 7.1.1.2 | рвет ремень генератора | milestone | 0d | 2026-10-20 09:00 | 2026-10-20 09:00 | 2327 |  |  | 101.59d | 0d | start no earlier than 2026-10-20 09:00 | Автобест |  |  |
| 2329 | 7.1.1.3 | течь "всех" патрубков - комплексная замена | milestone | 0d | 2026-10-20 09:00 | 2026-10-20 09:00 | 2328 |  |  | 101.59d | 0d | start no earlier than 2026-10-19 08:00 | Автобест |  |  |
| 2330 | 7.1.1.4 | течь с масл наоса гидравлики - 1р/нет подливка уровень | milestone | 0d | 2026-10-20 09:00 | 2026-10-20 09:00 | 2329 |  |  | 101.59d |  | start no earlier than 2026-10-19 08:00 | Автобест |  |  |
| 2331 | 7.2 | не заводится TRF, сломана шпилька колесо. Контроль приезда приемка работ |  | 1h | 2026-08-17 09:00 A | 2026-08-17 10:00 A |  | 100% |  |  |  | start no earlier than 2026-08-17 09:00 | Шуранов Ю | 1h | 1h |
| 2332 | 7.3 | **капремонт погрузчика коматсу короткий** |  | 51.03d | 2026-08-13 09:00 A | 2026-10-13 09:15 |  | 91% | 4.64d | 107.56d |  |  |  | 2.75h | 2.5h |
| 2333 | 7.3.1 | заявка получить цену в тракресурс |  | 15min | 2026-08-13 09:00 A | 2026-08-13 09:15 A |  | 100% |  |  |  | start no earlier than 2026-08-13 09:00 | Домоводов К | 0.25h | 0.25h |
| 2334 | 7.3.2 | заявка получить цену в форклифт |  | 15min | 2026-08-13 09:15 A | 2026-08-13 09:30 A | 2333 | 100% |  |  |  | start no earlier than 2026-08-13 09:00 | Домоводов К | 0.25h | 0.25h |
| 2335 | 7.3.3 | получить КП 2 | milestone | 0d | 2026-08-17 09:00 A | 2026-08-17 09:00 A |  | 100% |  |  |  | start no earlier than 2026-08-17 09:00 | Домоводов К |  |  |
| 2336 | 7.3.4 | решение о дате | milestone | 0d | 2026-09-07 09:00 A | 2026-09-07 09:00 A | 2334FS+1d | 100% |  |  |  | start no earlier than 2026-09-07 09:00 | Домоводов К |  |  |
| 2337 | 7.3.5 | орг отправить погрузчик в ремонт / составить акт |  | 2h | 2026-09-01 09:00 A | 2026-09-01 11:00 A | 2334, 2336FS+1d | 100% |  |  |  | start no earlier than 2026-08-26 09:00 | Шуранов Ю | 2h | 2h |
| 2338 | 7.3.6 | контроль сроков ремонта |  | 15min | 2026-10-13 09:00 | 2026-10-13 09:15 | 2337FS+20d |  |  | 107.56d |  | start no earlier than 2026-10-13 09:00 | Зорькин В | 0.25h |  |
| 2339 | 7.4 | заказать по комплекту воздушных фильтров для погрузчиков |  | 1h | 2026-08-18 09:00 A | 2026-08-18 10:00 A |  | 100% |  |  |  | start no earlier than 2026-08-18 09:00 | Шуранов Ю | 1h | 1h |
| 2340 | 7.5 | провкрить моточасы для проведения ТО |  | 1h | 2026-08-18 09:00 A | 2026-08-18 10:00 A |  | 100% |  |  |  | start no earlier than 2026-08-18 09:00 | Шуранов Ю | 1h | 1h |
| 2341 | 7.6 | не заводиться trf погрузчик, посмотреть подачу топлива |  | 1h | 2026-05-25 08:00 A | 2026-05-25 10:00 A |  | 100% |  |  |  | start no earlier than 2026-05-25 08:00 | Тимофеев В; Шуранов Ю | 2h | 2h |
| 2342 | 7.7 | ТО карбюратора ТРФ организовать |  | 1h | 2026-05-27 09:00 A | 2026-05-27 10:00 A |  | 100% |  |  |  | start no earlier than 2026-05-27 09:00 | Шуранов Ю | 1h | 1h |
| 2343 | 7.8 | ренгулировка ремня погрузчик желтый №209490 контроль |  | 1h | 2026-05-14 09:00 A | 2026-05-14 10:00 A |  | 100% |  |  |  | start no earlier than 2026-05-14 09:00 | Шуранов Ю | 1h | 1h |
| 2344 | 7.9 | ремонт генераторов -найти фирму |  | 1d? | 2026-05-07 09:00 A | 2026-05-07 18:00 A |  | 100% |  |  |  | start no earlier than 2026-05-07 09:00 | Шуранов Ю | 8h | 8h |
| 2345 | 7.10 | греется мотор сменный погрузчик (вероятно помпа). Орг визит |  | 15min | 2026-04-27 09:00 A | 2026-04-27 09:15 A |  | 100% |  |  |  | start no earlier than 2026-04-27 08:00 | Шуранов Ю | 0.25h | 0.25h |
| 2346 | 7.11 | установить вентиляторы на погрузчики |  | 2h | 2026-04-27 08:00 A | 2026-04-27 11:00 A |  | 100% |  |  |  | start no earlier than 2026-04-27 08:00 | Тимофеев В | 2h | 2h |
| 2347 | 7.12 | заменить шланги гидравлики погрузчик ТРФ |  | 1d? | 2026-04-21 09:00 A | 2026-04-21 18:00 A |  | 100% |  |  |  | start no earlier than 2026-04-21 09:00 |  |  |  |
| 2348 | 7.13 | пригласить тракресурс |  | 1h | 2026-04-21 09:00 A | 2026-04-21 10:00 A |  | 100% |  |  |  | start no earlier than 2026-04-21 09:00 | Шуранов Ю | 1h | 1h |
| 2349 | 7.14 | проварить ковш трактора в слесарке |  | 4h | 2026-03-24 08:00 A | 2026-03-24 13:00 A |  | 100% |  |  |  | start no earlier than 2026-03-24 08:00 | Бобренок В | 4h | 4h |
| 2350 | 7.15 | контроль доставки / приемка погрузчи коматсу |  | 1h | 2026-03-13 09:00 A | 2026-03-13 10:00 A |  | 100% |  |  |  | start no earlier than 2026-03-13 09:00 | Шуранов Ю | 1h | 1h |
| 2351 | 7.16 | ремонт штабелер 5 цех ролик и опрное колесо. Контроль |  | 30min | 2026-03-13 09:00 A | 2026-03-13 09:30 A |  | 100% |  |  |  | start no earlier than 2026-03-13 09:00 | Шуранов Ю | 0.5h | 0.5h |
| 2352 | 7.17 | ремонт ковш трактор |  | 6h | 2026-03-03 09:00 A | 2026-03-03 16:00 A |  | 100% |  |  |  | start no earlier than 2026-03-03 08:00 | Некрасов А; Труфанов А | 12h | 12h |

| ID | WBS | Task | Type | Duration | Start | Finish | Predecessors | Complete | Remaining | Total slack | Free slack | Constraint | Resources | Work | Actual work |
| --- | --- | --- | --- | --- | --- | --- | --- | --- | --- | --- | --- | --- | --- | --- | --- |
| 2353 | 7.18 | **ремонт цепи желтый вилочный + ручник** |  | 0.16d | 2025-07-28 09:00 A | 2025-07-28 10:15 A |  | 100% |  |  |  |  |  | 1.25h | 1.25h |
| 2354 | 7.18.1 | контроль даты визита |  | 15min | 2025-07-28 09:00 A | 2025-07-28 09:15 A |  | 100% |  |  |  | start no earlier than 2025-07-28 09:00 | Шуранов Ю | 0.25h | 0.25h |
| 2355 | 7.18.2 | ремонт контроль \принять работы |  | 1h | 2025-07-28 09:15 A | 2025-07-28 10:15 A | 2354 | 100% |  |  |  | start no earlier than 2025-07-23 09:00 | Шуранов Ю | 1h | 1h |
| 2356 | 7.19 | реморнт педаль газ на 3d принтере |  | 1h | 2025-07-23 09:00 A | 2025-07-23 10:00 A |  | 100% |  |  |  | start no earlier than 2025-07-23 09:00 | Шуранов Ю | 1h | 1h |
| 2357 | 7.20 | реморнт педаль газ на 3d принтере |  | 1h | 2026-09-01 09:00 | 2026-09-01 10:00 |  |  |  | 145.47d |  | start no earlier than 2026-09-01 09:00 | Домоводов К | 1h |  |
| 2358 | 7.21 | ТО штабелеры кайтымовская орг |  | 1h | 2025-07-23 09:00 A | 2025-07-23 10:00 A |  | 100% |  |  |  | start no earlier than 2025-07-23 09:00 | Шуранов Ю | 1h | 1h |
| 2359 | 7.22 | заявка доводчик двери желт коматсу |  | 15min | 2024-05-14 09:00 A | 2024-05-14 09:15 A |  | 100% |  |  |  | start no earlier than 2024-05-14 09:00 | Шуранов Ю | 0.25h | 0.25h |
| 2360 | 7.23 | **ошибка 02а22 штабелер PS16N 414** |  | 0.12d | 2024-05-14 09:00 A | 2024-05-14 10:00 A |  | 100% |  |  |  |  |  | 1h | 1h |
| 2361 | 7.23.1 | составить рекламацию / вызов специалистов |  | 1h | 2024-05-14 09:00 A | 2024-05-14 10:00 A |  | 100% |  |  |  | start no earlier than 2024-05-14 09:00 | Шуранов Ю | 1h | 1h |
| 2362 | 7.24 | **неисправна кнопка стоп штабелер 5 цех** |  | 0.19d | 2024-05-14 09:00 A | 2024-05-14 10:30 A |  | 100% |  |  |  |  |  | 1.5h | 1.5h |
| 2363 | 7.24.1 | орг работы по замене калеса штабелера |  | 1h | 2024-05-14 09:00 A | 2024-05-14 10:00 A |  | 100% |  |  |  | start no earlier than 2024-05-14 09:00 | Шуранов Ю | 1h | 1h |
| 2364 | 7.24.2 | орг забор штабелера на ремонт гидроциондра. Договор с сервисной компанией о дате, обменть штабелер с 2 цеха |  | 30min | 2024-05-14 10:00 A | 2024-05-14 10:30 A | 2363 | 100% |  |  |  | start no earlier than 2024-05-14 09:00 | Шуранов Ю | 0.5h | 0.5h |
| 2365 | 7.25 | **ремонт стеклоочиститель вилочного** |  | 0.5d | 2024-05-14 09:00 A | 2024-05-14 13:00 A |  | 100% |  |  |  |  |  | 5h | 5h |
| 2366 | 7.25.1 | осмотр механизма чтто сломалось |  | 4h | 2024-05-14 09:00 A | 2024-05-14 13:00 A |  | 100% |  |  |  | start no earlier than 2024-05-14 09:00 | Шуранов Ю | 4h | 4h |
| 2367 | 7.25.2 | заявка на покупку стеклоочист |  | 1h | 2024-05-14 09:00 A | 2024-05-14 10:00 A |  | 100% |  |  |  | start no earlier than 2024-05-14 09:00 | Шуранов Ю | 1h | 1h |
| 2368 | 7.26 | купить ремень на генератор |  | 2h | 2024-05-14 09:00 A | 2024-05-14 11:00 A |  | 100% |  |  |  | start no earlier than 2024-05-14 09:00 | Шуранов Ю | 2h | 2h |
| 2369 | 8 | **Лаборатория** |  | 0.06d | 2026-04-20 09:00 A | 2026-04-20 09:30 A |  | 100% |  |  |  |  |  | 1h | 1h |
| 2370 | 8.1 | Отнести старый бульбулятор в архив |  | 30min | 2026-04-20 09:00 A | 2026-04-20 09:30 A |  | 100% |  |  |  | start no earlier than 2026-04-20 09:00 | Тимофеев В | 0.5h | 0.5h |
| 2371 | 8.2 | Отнести короб от нового бульбулятора тоже в архив |  | 30min | 2026-04-20 09:00 A | 2026-04-20 09:30 A |  | 100% |  |  |  | start no earlier than 2026-04-20 09:00 | Тимофеев В | 0.5h | 0.5h |
| 2372 | 9 | **слесарное помещение** |  | 102.27d? | 2026-06-11 09:00 A | 2026-10-20 11:10 |  | 88% | 12.62d? | 101.32d |  |  |  | 38.83h | 33.17h |
| 2373 | 9.1 | Дефектовка болера со склада упаковки, выяснить почему не работает с проверкой под водой, болер снят |  | 2h | 2026-10-20 09:00 | 2026-10-20 11:00 |  |  |  | 101.34d |  | start no earlier than 2026-10-20 09:00 | Бобренок В | 2h |  |
| 2374 | 9.2 | Заварить обруч от сеялки, лежит в слесарке |  | 1h | 2026-10-13 09:00 A | 2026-10-13 10:00 A |  | 100% |  |  |  | start no earlier than 2026-10-13 08:00 | Бобренок В | 1h | 1h |
| 2375 | 9.3 | Собрать насосы НШГ какие можно и какие есть в слесарке. Сообщить по количеству Б/У насосов, новых и количество ремкомплекта |  | 2h | 2026-10-14 09:00 A | 2026-10-14 11:00 A |  | 100% |  |  |  | start no earlier than 2026-10-14 08:00 | Бобренок В | 2h | 2h |
| 2376 | 9.4 | **Ремонт двигателя от поломоечной машинки** |  | 6.27d | 2026-10-13 09:00 A | 2026-10-20 11:10 |  | 35% | 4.08d | 101.32d |  |  |  | 3.33h | 1.17h |
| 2377 | 9.4.1 | Заявка на подшипник |  | 10min | 2026-10-13 09:00 A | 2026-10-13 09:10 A |  | 100% |  |  |  | start no earlier than 2026-10-13 09:00 | Зорькин В | 0.17h | 0.17h |
| 2378 | 9.4.2 | контроль |  | 10min | 2026-10-20 09:00 | 2026-10-20 09:10 | 2377 |  |  | 101.32d | 0d | start no earlier than 2026-10-20 09:00 | Зорькин В | 0.17h |  |
| 2379 | 9.4.3 | Сборка двигателя обратно |  | 2h | 2026-10-20 09:10 | 2026-10-20 11:10 | 2378 |  |  | 101.32d |  | start no earlier than 2026-10-20 09:00 | Бобренок В | 2h |  |
| 2380 | 9.4.4 | Снять прикипевшую часть подшипника с вала насоса поломоечной машинки. |  | 1h | 2026-10-13 09:00 A | 2026-10-13 10:00 A | 2379 | 100% |  |  |  | start no earlier than 2026-10-13 08:00 | Бобренок В | 1h | 1h |
| 2381 | 9.5 | Доделать электрод | manual | 2h | 2026-10-11 09:00 A | 2026-10-11 11:00 A | 2382 | 100% |  |  |  |  | Бобренок В | 2h | 2h |
| 2382 | 9.6 | Разбор полок на большом стеллаже, наведенеие порядка | manual | 3h | 2026-10-10 09:00 A | 2026-10-10 12:00 A |  | 100% |  |  |  | start no earlier than 2026-10-10 09:00 | Бундин В | 3h | 3h |
| 2383 | 9.7 | Ремонт электродов парогенератора, один из электродов травит, пересобрать |  | 3h | 2026-10-05 09:00 A | 2026-10-05 12:00 A |  | 100% |  |  |  | start no earlier than 2026-10-05 09:00 | Бобренок В | 3h | 3h |

| ID | WBS | Task | Type | Duration | Start | Finish | Predecessors | Complete | Remaining | Total slack | Free slack | Constraint | Resources | Work | Actual work |
| --- | --- | --- | --- | --- | --- | --- | --- | --- | --- | --- | --- | --- | --- | --- | --- |
| 2384 | 9.8 | **уборка и сортировка. Приготовить, дневные проверят и продолжат** |  | 3.25d | 2026-09-22 09:00 A | 2026-09-25 11:00 A |  | 100% |  |  |  |  |  | 9h | 9h |
| 2385 | 9.8.1 | освободить стеллаж для оперативного хранения с ФИО |  | 1h | 2026-09-22 16:00 A | 2026-09-22 17:00 A | 2388 | 100% |  |  |  | start no earlier than 2026-09-22 09:00 | Макаревич А | 1h | 1h |
| 2386 | 9.8.2 | куча №1 - не годное на выброс |  | 2h | 2026-09-22 09:00 A | 2026-09-22 11:00 A |  | 100% |  |  |  | start no earlier than 2026-09-22 09:00 | Макаревич А | 2h | 2h |
| 2387 | 9.8.3 | куча №2 - годное, но хранить нужно на дальних складах |  | 2h | 2026-09-22 11:00 A | 2026-09-22 13:00 A | 2386 | 100% |  |  |  | start no earlier than 2026-09-21 09:00 | Макаревич А | 2h | 2h |
| 2388 | 9.8.4 | куча №3 - не понятно где хранить. |  | 2h | 2026-09-22 14:00 A | 2026-09-22 16:00 A | 2387 | 100% |  |  |  | start no earlier than 2026-09-18 08:00 | Макаревич А | 2h | 2h |
| 2389 | 9.8.5 | сортировка и перемещение мусор / металлолм/ дальние стеллажи |  | 2h | 2026-09-25 09:00 A | 2026-09-25 11:00 A |  | 100% |  |  |  | start no earlier than 2026-09-25 09:00 | Бундин В | 2h | 2h |
| 2390 | 9.9 | отвезти паллет возле слесарки в синий | manual | 1h | 2026-08-30 09:00 A | 2026-08-30 10:00 A |  | 100% |  |  |  | start no earlier than 2026-08-30 09:00 | Бундин В | 1h | 1h |
| 2391 | 9.10 | заварить хомут от деко 5 ц. |  | 2h | 2026-07-02 09:00 A | 2026-07-02 11:00 A |  | 100% |  |  |  | start no earlier than 2026-07-02 09:00 | Тимофеев В | 2h | 2h |
| 2392 | 9.11 | доставить временно наш компрессор на 3 склад для обдува погрузчиков | manual | 1h | 2026-06-29 09:00 A | 2026-06-29 10:00 A |  | 100% |  |  |  | start no earlier than 2026-06-29 09:00 | Тимофеев В | 1h | 1h |
| 2393 | 9.12 | ремонт 2-х ручных запайщиков- запчасти на складе (нагревательные блоки, тены) | manual | 2h | 2026-06-27 09:00 A | 2026-06-27 11:00 A |  | 100% |  |  |  | start no earlier than 2026-06-27 09:00 | Дедов В | 2h | 2h |
| 2394 | 9.13 | оставляем порядок после своей смены в слесарке |  | 0.5h | 2026-06-12 09:00 | 2026-06-12 09:30 |  |  |  | 202.53d |  | start no earlier than 2026-06-12 09:00 | Дедов В; Бобренок В; Бундин В | 1.5h |  |
| 2395 | 9.14 | Проверка напольных весов, почему не работают, возможно отошел контакт |  | 2h | 2026-07-24 09:00 A | 2026-07-24 11:00 A |  | 100% |  |  |  | start no earlier than 2026-07-24 09:00 | Бундин В | 2h | 2h |
| 2396 | 9.15 | уборка |  | 0.25d? | 2026-06-11 09:00 A | 2026-06-11 11:00 A |  | 100% |  |  |  |  | Труфанов А | 2h | 2h |
| 2397 | 9.16 | проверить весы настольные (показывают вес больше, если получится калибровать) |  | 2h | 2026-06-11 09:00 A | 2026-06-11 11:00 A |  | 100% |  |  |  | start no earlier than 2026-06-11 09:00 | Дедов В | 2h | 2h |
| 2398 | 10 | **ЗИП ремонт** |  | 654.25d? | 2024-05-09 09:00 A | 2026-10-29 11:00 |  | 53% | 305.52d? | 94.34d |  |  |  | 841.42h | 399.33h |
| 2399 | 10.1 | Восстановление платы от пробника, зачистка контактов, где погоревшие пины соединение через внешний клемник |  | 3h | 2026-10-02 09:00 | 2026-10-02 12:00 |  |  |  | 115.22d |  | start no earlier than 2026-10-02 08:00 | Дедов В | 3h |  |
| 2400 | 10.2 | **ремонт блоков управления датерами** |  | 0.38d | 2026-10-02 09:00 | 2026-10-02 12:00 |  |  |  | 115.22d |  |  |  | 3h |  |
| 2401 | 10.2.1 | составить схему подключения - мотор / датчик / тен / -- первые компоненты на плате блока (основной упор на эту задачу) Продолжаем делать |  | 3h | 2026-10-02 09:00 | 2026-10-02 12:00 |  |  |  | 115.22d |  | start no earlier than 2026-10-02 09:00 | Дедов В | 3h |  |
| 2403 | 10.3 | **Собрать редуктор питателя, который разобранный на верстаке** |  | 7.09d | 2026-09-28 09:00 A | 2026-10-06 09:45 |  | 73% | 1.93d | 112.5d |  |  |  | 2.75h | 2h |
| 2404 | 10.3.1 | отпраитвь на перемонтку |  | 15min | 2026-09-28 09:00 | 2026-09-28 09:15 |  |  |  | 112.5d | 0d | start no earlier than 2026-09-28 09:00 | Зорькин В | 0.25h |  |
| 2405 | 10.3.2 | контроль |  | 15min | 2026-10-04 09:15 | 2026-10-04 09:30 | 2404FS+5d |  |  | 112.5d | 0d | start no earlier than 2026-09-25 08:00 | Зорькин В | 0.25h |  |
| 2406 | 10.3.3 | орг забрать |  | 15min | 2026-10-06 09:30 | 2026-10-06 09:45 | 2405FS+2d |  |  | 112.5d |  | start no earlier than 2026-09-25 08:00 | Зорькин В | 0.25h |  |
| 2407 | 10.3.4 | сборка |  | 2h | 2026-09-29 09:00 A | 2026-09-29 11:00 A | 2406FS+1d | 100% |  |  |  | start no earlier than 2026-09-25 08:00 | Бундин В | 2h | 2h |
| 2408 | 10.4 | **Дефектовка двигателя от питателя прекондиционера/ прозвонить (возможно подготовить для сдачи на перемотку)** |  | 8.25d | 2026-09-04 09:00 A | 2026-09-13 11:00 |  | 50% | 4.12d | 134.34d |  |  |  | 4h | 2h |
| 2409 | 10.4.1 | разбрка тест |  | 1h | 2026-09-04 09:00 A | 2026-09-04 10:00 A |  | 100% |  |  |  | start no earlier than 2026-09-04 09:00 | Бобренок В | 1h | 1h |
| 2410 | 10.4.2 | тест 2 с редуктором |  | 1h | 2026-09-08 09:00 A | 2026-09-08 10:00 A |  | 100% |  |  |  | start no earlier than 2026-09-08 08:00 | Тимофеев В | 1h | 1h |
| 2411 | 10.4.3 | разборка ревизия |  | 2h | 2026-09-13 09:00 | 2026-09-13 11:00 |  |  |  | 134.34d |  | start no earlier than 2026-09-13 09:00 | Макаревич А | 2h |  |

| ID | WBS | Task | Type | Duration | Start | Finish | Predecessors | Complete | Remaining | Actual start | Actual finish | Total slack | Free slack | Constraint | Resources | Work | Actual work |
| --- | --- | --- | --- | --- | --- | --- | --- | --- | --- | --- | --- | --- | --- | --- | --- | --- | --- |
| 2412 | 10.5 | **ремонт редутор печи №?** |  | 26.31d | 2026-09-05 09:00 A | 2026-10-02 11:30 |  | 52% | 12.53d |  |  | 115.28d |  |  |  | 5.25h | 2.75h |
| 2413 | 10.5.1 | дефектовка редуктора печи 2 цех, лежит в слесарке |  | 2h | 2026-09-05 09:00 A | 2026-09-05 11:00 A |  | 100% |  |  |  |  |  | start no earlier than 2026-09-05 09:00 | Макаревич А | 2h | 2h |
| 2414 | 10.5.2 | возможно ли установить тавотницу на подшипник червяка? |  | 15min | 2026-09-10 09:00 A | 2026-09-10 09:15 A |  | 100% |  |  |  |  |  | start no earlier than 2026-09-10 09:00 | Тимофеев В | 0.25h | 0.25h |
| 2415 | 10.5.3 | заказ шестерни червя в ЗИП - отправить курьера |  | 15min | 2026-09-09 09:00 A | 2026-09-09 09:15 A | 2413 | 100% |  |  |  |  |  | start no earlier than 2026-09-09 09:00 | Зорькин В | 0.25h | 0.25h |
| 2416 | 10.5.4 | контроль изг шетесиерен |  | 15min | 2026-09-19 09:15 A | 2026-09-19 09:30 A | 2415FS+10d | 100% |  |  |  |  |  | start no earlier than 2026-09-08 08:00 | Зорькин В | 0.25h | 0.25h |
| 2417 | 10.5.5 | заказ шестерни червя в ЗИП - отправить курьера |  | 15min | 2026-09-21 09:00 | 2026-09-21 09:15 | 2413 |  |  |  |  | 115.28d | 0d | start no earlier than 2026-09-21 09:00 | Зорькин В | 0.25h |  |
| 2418 | 10.5.6 | контроль изг шетесиерен |  | 15min | 2026-10-01 09:15 | 2026-10-01 09:30 | 2417FS+10d |  |  |  |  | 115.28d | 0d | start no earlier than 2026-09-08 08:00 | Зорькин В | 0.25h |  |
| 2419 | 10.5.7 | сборка редутор венец |  | 2h | 2026-10-02 09:30 | 2026-10-02 11:30 | 2416FS+1d, 2418FS+1d |  |  |  |  | 115.28d |  | start no earlier than 2026-09-20 09:00 | Макаревич А | 2h |  |
| 2420 | 10.6 | ремонт оборотные сетки-поддоны от печи от 2ц |  | 2h | 2026-09-13 09:00 | 2026-09-13 11:00 |  |  |  |  |  | 134.34d |  | start no earlier than 2026-09-13 09:00 | Макаревич А | 2h |  |
| 2421 | 10.7 | подготовить электродную группу для 2 цеха |  | 3h | 2026-08-25 09:00 A | 2026-08-25 12:00 A |  | 100% |  |  |  |  |  | start no earlier than 2026-08-25 08:00 | Бундин В | 3h | 3h |
| 2422 | 10.8 | пепенос трубы нерж с 3ц на синий склад |  | 1h | 2026-08-24 09:00 | 2026-08-24 10:00 |  |  |  |  |  | 151.47d |  | start no earlier than 2026-08-24 09:00 | Некрасов А; Тимофеев В | 2h |  |
| 2423 | 10.9 | ремонт электрод парогенертора для 2ц |  | 4h | 2026-08-18 09:00 A | 2026-08-18 13:00 A |  | 100% |  |  |  |  |  | start no earlier than 2026-08-18 09:00 | Бобренок В | 4h | 4h |
| 2424 | 10.10 | перевоз батареи свинец от погрузчика на синий склад |  | 30min | 2026-08-12 09:00 A | 2026-08-12 09:30 A |  | 100% |  |  |  |  |  | start no earlier than 2026-08-12 09:00 | Макаревич А | 0.5h | 0.5h |
| 2425 | 10.11 | **заточка ножей** |  | 6.03d | 2026-08-13 09:00 A | 2026-08-21 09:15 A |  | 100% |  |  |  |  |  |  |  | 0.5h | 0.5h |
| 2426 | 10.11.1 | разместить ЛТ70 курьеру, отметиь журнал |  | 15min | 2026-08-13 09:00 A | 2026-08-13 09:15 A |  | 100% |  |  |  |  |  | start no earlier than 2026-08-13 09:00 | Зорькин В | 0.25h | 0.25h |
| 2427 | 10.11.2 | контроль, орг забрать |  | 15min | 2026-08-21 09:00 A | 2026-08-21 09:15 A |  | 100% |  |  |  |  |  | start no earlier than 2026-08-21 09:00 | Шуранов Ю | 0.25h | 0.25h |
| 2428 | 10.12 | **ножевой узел для 1ц** |  | 0.03d | 2026-08-13 09:00 A | 2026-08-13 09:15 A |  | 100% |  |  |  |  |  |  |  | 0.25h | 0.25h |
| 2429 | 10.12.1 | контроль поставки |  | 15min | 2026-08-13 09:00 A | 2026-08-13 09:15 A |  | 100% |  |  |  |  |  | start no earlier than 2026-08-13 09:00 | Домоводов К | 0.25h | 0.25h |
| 2430 | 10.13 | подготовить электроды для парогенератора цех 1 |  | 4h | 2026-08-05 08:00 A | 2026-08-05 13:00 A |  | 100% |  |  |  |  |  | start no earlier than 2026-08-05 08:00 | Макаревич А | 4h | 4h |
| 2431 | 10.14 | восстановить голову насоса гидрализата (в слесарке) подписать | manual | 2h | 2026-08-01 09:00 A | 2026-08-01 11:00 A |  | 100% |  |  |  |  |  | start no earlier than 2026-08-01 09:00 | Бундин В | 2h | 2h |
| 2432 | 10.15 | **восстановить сетку спечи (она в слесарке)** |  | 1d? | 2026-08-14 09:00 | 2026-08-14 18:00 |  | 100% |  | 2026-08-03 09:00 | 2026-08-03 18:00 |  |  |  |  | 8h | 8h |
| 2433 | 10.15.1 | заказать сверла по нерж. М5 и М6 |  | 1d? | 2026-08-03 09:00 A | 2026-08-03 18:00 A |  | 100% |  |  |  |  |  | start no earlier than 2026-08-03 08:00 | Шуранов Ю | 8h | 8h |
| 2434 | 10.16 | подготовить антиэлектроды по аналогии с нашими (все на складе) | manual | 5h | 2026-08-01 09:00 A | 2026-08-01 15:00 A |  | 100% |  |  |  |  |  | start no earlier than 2026-08-01 09:00 | Бундин В | 5h | 5h |
| 2435 | 10.17 | подготовить электродную группу для парогенератора |  | 3h | 2026-06-12 09:00 A | 2026-06-12 12:00 A |  | 100% |  |  |  |  |  | start no earlier than 2026-06-12 09:00 | Бундин В | 3h | 3h |
| 2436 | 10.18 | собрать 2 стула для ИТР |  | 2h | 2026-06-07 09:00 A | 2026-06-08 11:00 A |  | 100% |  |  |  |  |  | start no earlier than 2026-06-07 09:00 | Бобренок В | 2h | 2h |

| ID | WBS | Task | Type | Duration | Start | Finish | Predecessors | Complete | Constraint | Resources | Work | Actual work |
| --- | --- | --- | --- | --- | --- | --- | --- | --- | --- | --- | --- | --- |
| 2437 | 10.19 | **покрасить швейлеры возле слесарки(грунтовка, затем серый цвет)** |  | 0.25d | 2026-06-12 09:00 A | 2026-06-12 11:00 A |  | 100% |  | Бобренок В | 4h | 4h |
| 2438 | 10.19.1 | болгаркой убрать сварочные сопли и покрасить |  | 2h | 2026-06-12 09:00 A | 2026-06-12 11:00 A |  | 100% | start no earlier than 2026-06-12 09:00 | Бундин В | 2h | 2h |
| 2439 | 10.20 | подготовить фильтры для кондиционеров, замена фильтр ткани. Находятся в слесарке | manual | 2h | 2026-06-14 09:00 A | 2026-06-14 11:00 A |  | 100% | start no earlier than 2026-06-14 09:00 | Бундин В | 2h | 2h |
| 2440 | 10.21 | **заявка на фильеры от 02.06 1ц и 2ц** |  | 7.19d | 2026-06-02 09:00 A | 2026-06-11 10:30 A |  | 100% |  |  | 4.5h | 4.5h |
| 2441 | 10.21.1 | подготовить чертежи по ТЗ |  | 2h | 2026-06-02 09:00 A | 2026-06-02 11:00 A |  | 100% | start no earlier than 2026-06-02 09:00 | Домоводов К | 2h | 2h |
| 2442 | 10.21.2 | **партия 1** |  | 6.19d | 2026-06-03 09:00 A | 2026-06-11 10:30 A |  | 100% |  |  | 1.5h | 1.5h |
| 2443 | 10.21.2.1 | разместить токарю заварка фильер + шлифвка |  | 30min | 2026-06-03 09:00 A | 2026-06-03 09:30 A |  | 100% | start no earlier than 2026-06-03 08:00 | Шуранов Ю | 0.5h | 0.5h |
| 2444 | 10.21.2.2 | забрать заваренные / разместить на изготовление дюз |  | 30min | 2026-06-07 09:30 A | 2026-06-08 09:30 A | 2443FS+4d | 100% | start no earlier than 2026-06-03 08:00 | Шуранов Ю | 0.5h | 0.5h |
| 2445 | 10.21.2.3 | забрать готовые |  | 30min | 2026-06-11 10:00 A | 2026-06-11 10:30 A | 2444FS+4d | 100% | start no earlier than 2026-06-03 08:00 | Шуранов Ю | 0.5h | 0.5h |
| 2446 | 10.21.3 | **партия 2** |  | 3.12d | 2026-06-04 09:00 A | 2026-06-09 10:00 A |  | 100% |  |  | 1h | 1h |
| 2447 | 10.21.3.1 | разместить готовые балванки на прожиг отверстий |  | 30min | 2026-06-04 09:00 A | 2026-06-04 09:30 A |  | 100% | start no earlier than 2026-06-04 09:00 | Шуранов Ю | 0.5h | 0.5h |
| 2448 | 10.21.3.2 | забрать готовые |  | 30min | 2026-06-09 09:30 A | 2026-06-09 10:00 A | 2447FS+5d | 100% | start no earlier than 2026-06-03 08:00 | Шуранов Ю | 0.5h | 0.5h |
| 2449 | 10.22 | **зип тенов на печь 70 и 85 + шестерни питатель 70** |  | 30.06d | 2026-05-28 09:00 A | 2026-07-09 09:30 A |  | 100% |  |  | 0.75h | 0.75h |
| 2450 | 10.22.1 | запрос Настя, получить счет |  | 15min | 2026-05-28 09:00 A | 2026-05-28 09:15 A |  | 100% | start no earlier than 2026-05-28 09:00 | Домоводов К | 0.25h | 0.25h |
| 2451 | 10.22.2 | оплата |  | 15min | 2026-06-04 09:00 A | 2026-06-04 09:15 A | 2450FS+2d | 100% | start no earlier than 2026-06-04 09:00 | Домоводов К | 0.25h | 0.25h |
| 2452 | 10.22.3 | контроль поставки |  | 15min | 2026-07-09 09:15 A | 2026-07-09 09:30 A | 2451FS+30d | 100% | start no earlier than 2026-05-27 08:00 | Зорькин В | 0.25h | 0.25h |
| 2453 | 10.23 | подготовка к инвентаризации |  | 3h | 2026-05-26 09:00 A | 2026-05-26 12:00 A |  | 100% | start no earlier than 2026-05-26 09:00 | Бундин В | 3h | 3h |
| 2454 | 10.24 | посчитать и записать какие и какое количество автоматов и контакторов есть в слесарке |  | 1h | 2026-05-23 09:00 A | 2026-05-25 10:00 A |  | 100% | start no earlier than 2026-05-23 09:00 | Макаревич А | 1h | 1h |
| 2455 | 10.25 | передать весы (малые в 1 цех, большие в 5 цех) со слесарки |  | 1h | 2026-05-22 09:00 A | 2026-05-22 10:00 A |  | 100% | start no earlier than 2026-05-22 09:00 | Макаревич А | 1h | 1h |
| 2456 | 10.26 | проверить работает или нет двигатель с накопительного стола цех 1- Валентин покажет. |  | 1h | 2026-05-19 08:00 A | 2026-05-19 10:00 A |  | 100% | start no earlier than 2026-05-19 08:00 | Дедов В | 1h | 1h |
| 2457 | 10.27 | наточить ножи для ц.2 |  | 1h | 2026-05-19 09:00 A | 2026-05-19 10:00 A |  | 100% | start no earlier than 2026-05-19 09:00 | Тимофеев В | 1h | 1h |
| 2458 | 10.28 | подготовка к инвентаризации (посчитать какие и метраж кабеля в слесарке и желтом нашей половине) |  | 2h | 2026-05-24 09:00 A | 2026-05-25 11:00 A |  | 100% | start no earlier than 2026-05-24 09:00 | Дедов В | 2h | 2h |
| 2459 | 10.29 | подготовить рабочее место в слесарке для работы на кровле Олега |  | 1h | 2026-05-15 09:00 A | 2026-05-15 10:00 A |  | 100% | start no earlier than 2026-05-15 09:00 | Некрасов А; Труфанов А; Тимофеев В; Макаревич А | 4h | 4h |
| 2460 | 10.30 | **ремонт инсекютер с 1ц в слесарке. Повесить в цехе, зафиксировать в журнал мастера** |  | 0.12d | 2026-05-19 09:00 A | 2026-05-19 10:00 A |  | 100% |  |  | 1h | 1h |
| 2461 | 10.30.1 | взять светильник "антимуха" у Луговских и повесить на входе в корридор между раздевалками |  | 1h | 2026-05-19 09:00 A | 2026-05-19 10:00 A |  | 100% | start no earlier than 2026-05-19 09:00 | Дедов В | 1h | 1h |

| ID | WBS | Task | Duration | Start | Finish | Predecessors | Complete | Total slack | Free slack | Constraint | Resources | Work | Actual work |
| --- | --- | --- | --- | --- | --- | --- | --- | --- | --- | --- | --- | --- | --- |
| 2462 | 10.31 | **орг ремонт мотор с вращаюбщего барабана 1ц** | 0.16d | 2026-09-01 09:00 | 2026-09-01 10:15 |  |  | 145.44d |  |  |  | 1.25h |  |
| 2463 | 10.31.1 | подписать шильдик. На веревочке картонка / пластик | 15min | 2026-09-01 09:00 | 2026-09-01 09:15 |  |  | 145.44d | 0d | start no earlier than 2026-09-01 09:00 | Шуранов Ю | 0.25h |  |
| 2464 | 10.31.2 | орг ремонт | 1h | 2026-09-01 09:15 | 2026-09-01 10:15 | 2463 |  | 145.44d |  | start no earlier than 2026-09-01 09:00 | Шуранов Ю | 1h |  |
| 2465 | 10.32 | получить на складе резинки на двери прекондиционеров и выдать цех 1 и 2 | 1h | 2026-05-11 09:00 A | 2026-05-11 10:00 A |  | 100% |  |  | start no earlier than 2026-05-11 09:00 |  |  |  |
| 2466 | 10.33 | подготовить электродную группу для 1 цеха | 3h | 2026-05-11 09:00 A | 2026-05-11 12:00 A |  | 100% |  |  | start no earlier than 2026-05-11 09:00 | Бундин В | 3h | 3h |
| 2467 | 10.34 | на емкость нерж сделать сгон и поплавок | 4h | 2026-05-09 09:00 A | 2026-05-11 13:00 A |  | 100% |  |  | start no earlier than 2026-05-09 09:00 | Макаревич А | 4h | 4h |
| 2468 | 10.35 | отвезти термоодеяло с слесарки в синий склад | 1h | 2026-05-11 09:00 A | 2026-05-11 10:00 A |  | 100% |  |  | start no earlier than 2026-05-11 09:00 | Бундин В | 1h | 1h |
| 2469 | 10.36 | приехали дроселя для светильников, восстановить не рабочие | 4h | 2026-05-12 09:00 A | 2026-05-12 13:00 A |  | 100% |  |  | start no earlier than 2026-05-12 09:00 | Бундин В | 4h | 4h |
| 2470 | 10.37 | **орг ремонт мотор с конв №2 1 линия 1ц** | 0.25d | 2026-09-01 09:00 | 2026-09-01 11:00 |  |  | 145.34d |  |  |  | 2h |  |
| 2471 | 10.37.1 | подписать шильдик | 60min | 2026-09-01 09:00 | 2026-09-01 10:00 |  |  | 145.34d | 0d | start no earlier than 2026-09-01 09:00 | Шуранов Ю | 1h |  |
| 2472 | 10.37.2 | орг ремонт | 1h | 2026-09-01 10:00 | 2026-09-01 11:00 | 2471 |  | 145.34d |  | start no earlier than 2026-05-14 09:00 | Шуранов Ю | 1h |  |
| 2473 | 10.38 | сборка редуктор с шлюз питателя (фото в чате 14.05) | 3h | 2026-08-31 09:00 A | 2026-08-31 12:00 A |  | 100% |  |  | start no earlier than 2026-09-02 09:00 | Тимофеев В | 3h | 3h |
| 2474 | 10.39 | **собрать мотор-редуктор прекондиционера в слесарке (сальники на складе в лотках снизу подписаны)** | 0.12d | 2026-06-15 09:00 A | 2026-06-15 10:00 A |  | 100% |  |  |  | Бундин В | 3h | 3h |
| 2475 | 10.39.1 | транспортировка в синий склад | 1h | 2026-06-15 09:00 A | 2026-06-15 10:00 A |  | 100% |  |  | start no earlier than 2026-06-15 09:00 | Тимофеев В; Некрасов А | 2h | 2h |
| 2476 | 10.40 | **вскрыть листогиб** | 4.5d | 2026-05-09 09:00 A | 2026-05-15 13:00 A |  | 100% |  |  |  |  | 11.17h | 11.17h |
| 2477 | 10.40.1 | проверить работу листогиба (попробовать загнуть нерж) | 1h | 2026-05-09 09:00 A | 2026-05-11 10:00 A |  | 100% |  |  | start no earlier than 2026-05-09 09:00 | Макаревич А | 1h | 1h |
| 2478 | 10.40.2 | как удлинить ручки, предложение | 5min | 2026-05-13 09:00 A | 2026-05-13 09:05 A |  | 100% |  |  | start no earlier than 2026-05-13 09:00 | Труфанов А | 0.08h | 0.08h |
| 2479 | 10.40.3 | куда крепить стационарно. Синий склад /контейнер. Предложения. | 5min | 2026-05-13 09:00 A | 2026-05-13 09:05 A |  | 100% |  |  | start no earlier than 2026-05-13 09:00 | Труфанов А | 0.08h | 0.08h |
| 2480 | 10.40.4 | изготовить раму для крепления к полу | 4h | 2026-05-15 09:00 A | 2026-05-15 13:00 A |  | 100% |  |  | start no earlier than 2026-05-15 09:00 | Тимофеев В; Макаревич А | 8h | 8h |
| 2481 | 10.40.5 | усилить ручки | 1h | 2026-05-15 09:00 A | 2026-05-15 10:00 A |  | 100% |  |  | start no earlier than 2026-05-15 09:00 | Тимофеев В; Макаревич А | 2h | 2h |
| 2482 | 10.41 | вывезти питатель на синий склад | 1h | 2026-05-05 09:00 A | 2026-05-05 10:00 A |  | 100% |  |  | start no earlier than 2026-05-05 09:00 | Тимофеев В | 1h | 1h |
| 2483 | 10.42 | транспортировка гильз и шнеков на синий склад (уложить по приходам из китая) | 3h | 2026-05-05 09:00 A | 2026-05-05 12:00 A |  | 100% |  |  | start no earlier than 2026-05-05 09:00 | Тимофеев В; Бобренок В; Шуранов Ю | 9h | 9h |
| 2484 | 10.43 | найти на синем складе комплектующие для инвентаризации с Алексеем | 3h | 2026-05-05 09:00 A | 2026-05-05 12:00 A |  | 100% |  |  | start no earlier than 2026-05-05 08:00 | Шуранов Ю | 3h | 3h |
| 2485 | 10.44 | посчитать все валы от транспортеров, занести в таблицу учета | 4h | 2026-05-11 09:00 A | 2026-05-11 13:00 A |  | 100% |  |  | start no earlier than 2026-05-09 09:00 | Шуранов Ю | 4h | 4h |
| 2486 | 10.45 | посчитать сколько валов для транспортеров Теко в слесарке | 1h | 2026-04-30 09:00 A | 2026-04-30 10:00 A |  | 100% |  |  | start no earlier than 2026-04-30 09:00 | Шуранов Ю | 1h | 1h |
| 2487 | 10.46 | уборка остатки металл в контейнер | 1h | 2026-04-29 09:00 A | 2026-04-29 10:00 A |  | 100% |  |  | start no earlier than 2026-04-29 09:00 | Некрасов А; Тимофеев В; Труфанов А; Бундин В | 4h | 4h |

| ID | WBS | Task | Type | Duration | Start | Finish | Predecessors | Complete | Remaining | Total slack | Constraint | Resources | Work | Actual work |
| --- | --- | --- | --- | --- | --- | --- | --- | --- | --- | --- | --- | --- | --- | --- |
| 2488 | 10.47 | **ЗИП на ПГ антиэлектрод** |  | 33d? | 2026-05-13 09:00 A | 2026-06-26 18:00 A |  | 100% |  |  |  |  | 9.5h | 9.5h |
| 2489 | 10.47.1 | поиск в продаже труба нерж ф205 (проверить у Тимофеева диамтр) |  | 1h | 2026-05-13 09:00 A | 2026-05-13 10:00 A |  | 100% |  |  | start no earlier than 2026-05-13 09:00 | Зорькин В | 1h | 1h |
| 2490 | 10.47.2 | заявка |  | 15min | 2026-05-13 10:00 A | 2026-05-13 10:15 A | 2489 | 100% |  |  | start no earlier than 2026-04-24 08:00 | Зорькин В | 0.25h | 0.25h |
| 2491 | 10.47.3 | контроль доставки. Карабанов размещает у свои |  | 15min | 2026-05-19 09:00 A | 2026-05-19 09:15 A | 2490FS+5d | 100% |  |  | start no earlier than 2026-05-19 09:00 | Зорькин В | 0.25h | 0.25h |
| 2492 | 10.47.4 | монтаж |  | 1d? | 2026-06-26 09:00 A | 2026-06-26 18:00 A | 2491FS+2d | 100% |  |  | start no earlier than 2026-06-26 09:00 | Тимофеев В | 8h | 8h |
| 2493 | 10.48 | **ремонт шуруповерт макита** |  | 40d | 2026-04-19 09:00 A | 2026-06-14 11:00 A |  | 100% |  |  |  |  | 5h | 5h |
| 2494 | 10.48.1 | разобрать шуруповерт макита, выяснить с редуктором проблема или нет | manual | 2h | 2026-04-19 09:00 A | 2026-04-19 11:00 A |  | 100% |  |  | start no earlier than 2026-04-19 09:00 | Дедов В | 2h | 2h |
| 2495 | 10.48.2 | отправить фидео запрос о ремонте в сервисн центр |  | 1h | 2026-04-20 09:00 A | 2026-04-20 10:00 A |  | 100% |  |  | start no earlier than 2026-04-20 08:00 | Зорькин В | 1h | 1h |
| 2496 | 10.48.3 | конртроль / решение о списании | milestone | 0d | 2026-04-27 09:00 A | 2026-04-27 09:00 A |  | 100% |  |  | start no earlier than 2026-04-27 09:00 | Зорькин В |  |  |
| 2497 | 10.48.4 | попробовать собрать шуроповерт, находится в слесарке | manual | 2h | 2026-06-14 09:00 A | 2026-06-14 11:00 A |  | 100% |  |  | start no earlier than 2026-06-14 09:00 | Бундин В | 2h | 2h |
| 2498 | 10.49 | взять винты пота м6х25 и перекрутить на сетке для печи | manual | 1h | 2026-04-20 09:00 A | 2026-04-20 10:00 A |  | 100% |  |  | start no earlier than 2026-04-20 09:00 | Тимофеев В | 1h | 1h |
| 2499 | 10.50 | **шестерня питателя LT85** |  | 7.01d | 2026-04-08 09:00 A | 2026-04-17 09:05 |  | 94% | 0.44d | 242.58d |  |  | 1.33h | 1.25h |
| 2500 | 10.50.1 | **1. заказ с китая** |  | 7.01d | 2026-04-08 09:00 A | 2026-04-17 09:05 |  | 75% | 1.75d | 242.58d |  |  | 0.33h | 0.25h |
| 2501 | 10.50.1.1 | запрос / контроль |  | 15min | 2026-04-08 09:00 A | 2026-04-08 09:15 A |  | 100% |  |  | start no earlier than 2026-04-08 09:00 | Шуранов Ю | 0.25h | 0.25h |
| 2502 | 10.50.1.2 | контроль |  | 5min | 2026-04-17 09:00 | 2026-04-17 09:05 |  |  |  | 242.58d | start no earlier than 2026-04-17 09:00 | Шуранов Ю | 0.08h |  |
| 2503 | 10.50.2 | **2. изготовление по образцу** |  | 5.03d | 2026-04-08 09:00 A | 2026-04-15 09:15 A |  | 100% |  |  |  |  | 1h | 1h |
| 2504 | 10.50.2.1 | выяснить возможносить изготвления |  | 30min | 2026-04-08 09:00 A | 2026-04-08 09:30 A |  | 100% |  |  | start no earlier than 2026-04-08 09:00 | Зорькин В | 0.5h | 0.5h |
| 2505 | 10.50.2.2 | отправить курьера |  | 15min | 2026-04-08 09:30 A | 2026-04-08 09:45 A | 2504 | 100% |  |  | start no earlier than 2026-04-06 09:00 | Зорькин В | 0.25h | 0.25h |
| 2506 | 10.50.2.3 | контроль |  | 15min | 2026-04-15 09:00 A | 2026-04-15 09:15 A | 2505 | 100% |  |  | start no earlier than 2026-04-15 09:00 | Зорькин В | 0.25h | 0.25h |
| 2507 | 10.51 | проверить наличие лент в ЗИП перед утилизаций б/у |  | 2h | 2026-03-31 09:00 A | 2026-03-31 11:00 A |  | 100% |  |  | start no earlier than 2026-03-31 08:00 | Зорькин В | 2h | 2h |
| 2508 | 10.52 | соединители лент траснспортеры линий - проверить остаток |  | 30min | 2026-08-31 09:00 | 2026-08-31 09:30 |  |  |  | 146.53d | start no earlier than 2026-08-31 09:00 | Зорькин В | 0.5h |  |
| 2509 | 10.53 | **освободить место на син склад / перенос в новый контейнер** |  | 1.5d | 2026-03-30 08:00 A | 2026-03-31 13:00 A |  | 100% |  |  |  |  | 38h | 38h |
| 2510 | 10.53.1 | перенести метал, норию в контейнер с синего склада |  | 4h | 2026-03-30 09:00 A | 2026-03-30 13:00 A |  | 100% |  |  | start no earlier than 2026-03-30 09:00 | Бобренок В; Некрасов А; Тимофеев В | 12h | 12h |
| 2511 | 10.53.2 | сборка стеллаж хранения металла |  | 4h | 2026-03-30 08:00 A | 2026-03-30 13:00 A |  | 100% |  |  | start no earlier than 2026-03-30 08:00 | Некрасов А; Труфанов А; Тимофеев В | 10h | 10h |
| 2512 | 10.53.3 | монтаж стеллаж хранения металла |  | 4h | 2026-03-31 09:00 A | 2026-03-31 13:00 A |  | 100% |  |  | start no earlier than 2026-03-31 09:00 | Некрасов А; Труфанов А | 8h | 8h |
| 2513 | 10.53.4 | загрузка мусор в трактор дерево, отход |  | 4h | 2026-03-31 09:00 A | 2026-03-31 13:00 A |  | 100% |  |  | start no earlier than 2026-03-31 08:00 | Некрасов А; Труфанов А | 8h | 8h |
| 2514 | 10.54 | заточка ножей 2ц орг |  | 30min | 2026-03-25 09:00 A | 2026-03-25 09:30 A |  | 100% |  |  | start no earlier than 2026-03-25 08:00 | Зорькин В | 0.5h | 0.5h |
| 2515 | 10.55 | ремонт водонагреватель орг |  | 1h | 2026-03-23 09:00 A | 2026-03-23 10:00 A |  | 100% |  |  | start no earlier than 2026-03-23 09:00 | Шуранов Ю | 1h | 1h |
| 2516 | 10.56 | ремонт парогенератор орг |  | 1h | 2026-03-23 09:00 A | 2026-03-23 10:00 A |  | 100% |  |  | start no earlier than 2026-03-23 09:00 | Шуранов Ю | 1h | 1h |

| ID | WBS | Task | Type | Duration | Start | Finish | Predecessors | Complete | Remaining | Total slack | Free slack | Constraint | Resources | Work | Actual work |
| --- | --- | --- | --- | --- | --- | --- | --- | --- | --- | --- | --- | --- | --- | --- | --- |
| 2517 | 10.57 | **стеллаж для организации хранения металла** |  | 11.5d | 2026-03-23 09:00 A | 2026-04-07 13:00 A |  | 100% |  |  |  |  |  | 84h | 84h |
| 2518 | 10.57.1 | составить эскиз / расчет заявка металл |  | 4h | 2026-03-23 09:00 A | 2026-03-23 13:00 A |  | 100% |  |  |  | start no earlier than 2026-03-23 09:00 | Зорькин В | 4h | 4h |
| 2519 | 10.57.2 | доставка |  | 10d | 2026-03-23 14:00 A | 2026-04-06 13:00 A | 2518 | 100% |  |  |  | start no earlier than 2026-03-20 08:00 | Карабанов | 80h | 80h |
| 2520 | 10.57.3 | сборка |  | 2d | 2026-04-03 14:00 A | 2026-04-07 13:00 A | 2519 | 100% |  |  |  | start no earlier than 2026-03-20 08:00 |  |  |  |
| 2521 | 10.58 | установить крыльчатку мотор-редуктор смесителя / перенос в контейнер |  | 30min | 2026-08-31 09:00 A | 2026-08-31 09:30 A |  | 100% |  |  |  | start no earlier than 2026-09-02 09:00 | Тимофеев В | 0.5h | 0.5h |
| 2522 | 10.59 | **изготовить ножевой узел для 2ц** |  | 10.02d | 2026-03-17 09:00 A | 2026-03-31 09:10 A |  | 100% |  |  |  |  |  | 80.33h | 80.33h |
| 2523 | 10.59.1 | получить счет |  | 10min | 2026-03-17 09:00 A | 2026-03-17 09:10 A |  | 100% |  |  |  | start no earlier than 2026-03-17 08:00 | Домоводов К | 0.17h | 0.17h |
| 2524 | 10.59.2 | изготовление |  | 10d | 2026-03-17 09:10 A | 2026-03-31 09:10 A | 2523 | 100% |  |  |  | start no earlier than 2026-03-17 08:00 | Фрезер ЧПУ | 80h | 80h |
| 2525 | 10.59.3 | контроль |  | 5min | 2026-03-28 09:10 A | 2026-03-30 09:05 A | 2524FS+1d | 100% |  |  |  | start no earlier than 2026-03-17 08:00 | Зорькин В | 0.08h | 0.08h |
| 2526 | 10.59.4 | орг доставка |  | 5min | 2026-03-28 09:15 A | 2026-03-30 09:05 A | 2525 | 100% |  |  |  | start no earlier than 2026-03-17 08:00 | Зорькин В | 0.08h | 0.08h |
| 2527 | 10.60 | сгоревшие двигатели унести в контенер в коробку |  | 1h | 2026-03-15 09:00 A | 2026-03-16 10:00 A |  | 100% |  |  |  | start no earlier than 2026-03-15 09:00 | Бобренок В | 1h | 1h |
| 2528 | 10.61 | ремонт головы насоса нгш57 гидродлизат 2шт |  | 2h | 2026-03-16 09:00 A | 2026-03-16 11:00 A |  | 100% |  |  |  | start no earlier than 2026-03-16 09:00 | Труфанов А | 2h | 2h |
| 2529 | 10.62 | изготовить ножевой узел для 2ц | milestone | 0d | 2026-03-16 09:00 A | 2026-03-16 09:00 A |  | 100% |  |  |  | start no earlier than 2026-03-16 09:00 | Домоводов К |  |  |
| 2530 | 10.63 | по всем цехам обход, проверка обратный клпан бойлеры / настройка температуры . Составить список под замену |  | 2h | 2026-09-01 09:00 | 2026-09-01 11:00 |  |  |  | 145.34d |  | start no earlier than 2026-09-01 09:00 | Дедов В | 2h |  |
| 2531 | 10.64 | **ремонт датчик расхода пара с линия 3** |  | 33.04d | 2026-09-01 09:00 A | 2026-10-06 09:20 |  |  | 33.04d | 112.55d |  |  |  | 0.92h |  |
| 2532 | 10.64.1 | заявка взип |  | 15min | 2026-09-01 09:00 | 2026-09-01 09:15 |  |  |  | 120.48d | 0d | start no earlier than 2026-09-01 09:00 | Шуранов Ю | 0.25h |  |
| 2533 | 10.64.2 | орг отправить в ремонт |  | 20min | 2026-09-01 09:15 | 2026-09-01 09:35 | 2532 |  |  | 120.48d | 7.93d | start no earlier than 2026-03-12 08:00 | Шуранов Ю | 0.33h |  |
| 2534 | 10.64.3 | контроль | milestone | 0d | 2026-09-22 09:35 A | 2026-09-22 09:35 A | 2533FS+20d | 100% |  |  |  | start no earlier than 2026-04-17 09:00 | Зорькин В |  |  |
| 2535 | 10.64.4 | контроль | milestone | 0d | 2026-09-30 09:00 | 2026-09-30 09:00 | 2533FS+20d |  |  | 112.55d | 0d | start no earlier than 2026-09-30 09:00 | Зорькин В |  |  |
| 2536 | 10.64.5 | орг забрать сремонта |  | 20min | 2026-10-06 09:00 | 2026-10-06 09:20 | 2534FS+5d, 2535FS+5d |  |  | 112.55d |  | start no earlier than 2026-03-12 08:00 | Шуранов Ю | 0.33h |  |
| 2537 | 10.65 | реставрация вал с охладителя. Полполнить расход ЗИП |  | 1h | 2026-09-01 09:00 | 2026-09-01 10:00 |  |  |  | 145.47d |  | start no earlier than 2026-09-01 09:00 | Шуранов Ю | 1h |  |
| 2538 | 10.66 | ремонт датчик наличия сырья / собрать из 2х один |  | 3h | 2026-09-01 09:00 | 2026-09-01 12:00 |  |  |  | 145.22d |  | start no earlier than 2026-09-01 09:00 | Дедов В | 3h |  |
| 2539 | 10.67 | **ремонт бойлер с 5ц гардероб** |  | 7.04d | 2026-03-13 09:00 A | 2026-03-24 09:20 |  | 57% | 3.02d | 260.55d |  |  |  | 0.58h | 0.33h |
| 2540 | 10.67.1 | орг отправить в ремонт |  | 15min | 2026-03-13 09:00 A | 2026-03-13 09:15 A |  | 100% |  |  |  | start no earlier than 2026-03-13 09:00 | Шуранов Ю | 0.25h | 0.25h |
| 2541 | 10.67.2 | контроль доставка / оплата |  | 5min | 2026-03-23 09:00 A | 2026-03-23 09:05 A | 2540FS+5d | 100% |  |  |  | start no earlier than 2026-03-23 09:00 | Шуранов Ю | 0.08h | 0.08h |
| 2542 | 10.67.3 | орг доставка |  | 15min | 2026-03-24 09:05 | 2026-03-24 09:20 | 2541FS+1d |  |  | 260.55d |  | start no earlier than 2026-03-12 08:00 | Шуранов Ю | 0.25h |  |
| 2543 | 10.68 | диагностика двигателей и редукторов в слесарке. Подробности Шуранов по тлф |  | 2h | 2026-09-01 09:00 A | 2026-09-01 11:00 A |  | 100% |  |  |  | start no earlier than 2026-09-02 09:00 | Бундин В | 2h | 2h |
| 2544 | 10.69 | которые в коробке с них снять крыльчатки |  | 2h | 2026-09-01 09:00 A | 2026-09-01 11:00 A | 2543 | 100% |  |  |  | start no earlier than 2026-03-06 08:00 | Бундин В | 2h | 2h |
| 2545 | 10.70 | ножевой узел 2ц заменаить подшипники. У мастера |  | 1h | 2026-03-04 08:00 A | 2026-03-04 10:00 A |  | 100% |  |  |  | start no earlier than 2026-03-04 08:00 | Дедов В | 1h | 1h |

| ID | WBS | Task | Duration | Start | Finish | Predecessors | Complete | Remaining | Total slack | Free slack | Constraint | Resources | Work | Actual work |
| --- | --- | --- | --- | --- | --- | --- | --- | --- | --- | --- | --- | --- | --- | --- |
| 2546 | 10.71 | **ремонт электродов ПГ в ЗИП** | 2.75d | 2026-03-08 09:00 A | 2026-03-11 16:00 A |  | 100% |  |  |  |  |  | 12h | 12h |
| 2547 | 10.71.1 | 2шт - шт | 6h | 2026-03-08 09:00 A | 2026-03-09 16:00 A |  | 100% |  |  |  | start no earlier than 2026-03-08 09:00 | Макаревич А | 6h | 6h |
| 2548 | 10.71.2 | 1шт = 2ц | 6h | 2026-03-11 09:00 A | 2026-03-11 16:00 A |  | 100% |  |  |  | start no earlier than 2026-03-11 09:00 | Макаревич А | 6h | 6h |
| 2549 | 10.72 | промер изношенных шнеков, подготовить таблицу и инструкцию для делегировать | 1h | 2026-03-03 09:00 A | 2026-03-03 10:00 A |  | 100% |  |  |  | start no earlier than 2026-03-03 09:00 | Зорькин В | 1h | 1h |
| 2550 | 10.73 | заказ нутромер утерянные детали | 30min | 2026-03-06 09:00 A | 2026-03-06 09:30 A |  | 100% |  |  |  | start no earlier than 2026-03-06 09:00 | Зорькин В | 0.5h | 0.5h |
| 2551 | 10.74 | **стопорнное кольцо для валов шнеков** | 0.09d | 2026-03-02 09:00 A | 2026-03-02 09:45 A |  | 100% |  |  |  |  |  | 0.75h | 0.75h |
| 2552 | 10.74.1 | заявка снабжение | 15min | 2026-03-02 09:00 A | 2026-03-02 09:15 A |  | 100% |  |  |  | start no earlier than 2026-03-02 09:00 | Зорькин В | 0.25h | 0.25h |
| 2553 | 10.74.2 | заявка токарь | 15min | 2026-03-02 09:15 A | 2026-03-02 09:30 A | 2552 | 100% |  |  |  | start no earlier than 2026-02-27 08:00 | Зорькин В | 0.25h | 0.25h |
| 2554 | 10.74.3 | заявка кита | 15min | 2026-03-02 09:30 A | 2026-03-02 09:45 A | 2553 | 100% |  |  |  | start no earlier than 2026-02-27 08:00 | Зорькин В | 0.25h | 0.25h |
| 2555 | 10.75 | **быстрая замена шнеков - кондуктор для хранения и перемещения подготвленного ствола** | 3.25d | 2026-10-26 09:00 | 2026-10-29 11:00 |  |  |  | 94.34d |  |  |  | 20h |  |
| 2556 | 10.75.1 | проект кондуктора и траверсы перемещения ствола штабелером | 2h | 2026-10-26 09:00 | 2026-10-26 11:00 |  |  |  | 94.34d | 0d | start no earlier than 2026-10-26 09:00 | Тимофеев В; Бундин В | 4h |  |
| 2557 | 10.75.2 | сборка | 2d | 2026-10-27 11:00 | 2026-10-29 11:00 | 2556FS+1d |  |  | 94.34d |  | start no earlier than 2026-04-16 09:00 | Бобренок В | 16h |  |
| 2558 | 10.76 | **заявка шкив на вал прекондиционер + разрезная вставка + спец шпильки** | 0.12d | 2025-08-04 09:00 | 2025-08-04 10:00 |  |  |  | 426.47d |  |  |  | 1h |  |
| 2559 | 10.76.1 | подбор шкив / заявка | 1h | 2025-08-04 09:00 | 2025-08-04 10:00 |  |  |  | 426.47d |  | start no earlier than 2025-08-04 09:00 | Зорькин В | 1h |  |
| 2560 | 10.77 | **ремонт вал прекондиционер** | 12.02d | 2025-07-31 09:00 A | 2025-08-18 09:10 |  | 86% | 1.72d | 416.57d |  |  |  | 1.17h | 1h |
| 2561 | 10.77.1 | подготовить к отправке очистить | 1h | 2025-07-31 09:00 A | 2025-07-31 10:00 A |  | 100% |  |  |  | start no earlier than 2025-07-31 09:00 | Пинчук А | 1h | 1h |
| 2562 | 10.77.2 | орг курьера / отправить | 5min | 2025-08-04 09:00 | 2025-08-04 09:05 | 2561 |  |  | 416.57d | 0d | start no earlier than 2025-08-04 09:00 | Зорькин В | 0.08h |  |
| 2563 | 10.77.3 | контроль / забрать | 5min | 2025-08-18 09:05 | 2025-08-18 09:10 | 2562FS+10d |  |  | 416.57d |  | start no earlier than 2025-07-31 09:00 | Зорькин В | 0.08h |  |
| 2564 | 10.78 | **ремонт вал в барабана жир 2л** | 152.01d | 2025-08-04 09:00 A | 2026-03-04 09:05 |  | 50% | 76.01d | 274.58d |  |  |  | 0.17h | 0.08h |
| 2565 | 10.78.1 | отправить на ремонт | 5min | 2025-08-04 09:00 | 2025-08-04 09:05 |  |  |  | 426.58d |  | start no earlier than 2025-08-04 09:00 | Зорькин В | 0.08h |  |
| 2566 | 10.78.2 | контроль забрать | 5min | 2026-03-04 09:00 A | 2026-03-04 09:05 A | 2565FS+10d | 100% |  |  |  | start no earlier than 2026-03-04 09:00 | Зорькин В | 0.08h | 0.08h |
| 2567 | 10.79 | **заявка эл мотор шибера в ЗИП** | 0.01d | 2025-02-19 09:00 | 2025-02-19 09:05 |  |  |  | 544.58d |  |  |  | 0.08h |  |
| 2568 | 10.79.1 | контроль | 5min | 2025-02-19 09:00 | 2025-02-19 09:05 |  |  |  | 544.58d |  | start no earlier than 2025-02-19 09:00 | Шуранов Ю | 0.08h |  |
| 2569 | 10.80 | составить таблицу ЗИП наличия редукторов / где используется | 4h | 2025-02-21 09:00 | 2025-02-21 13:00 |  |  |  | 542.09d |  | start no earlier than 2025-02-21 09:00 | Тимофеев В; Шуранов Ю | 8h |  |
| 2570 | 10.81 | составить таблицу соответсвия номеров подшипников - где используется | 4h | 2025-02-21 09:00 | 2025-02-21 13:00 |  |  |  | 542.09d |  | start no earlier than 2025-02-21 09:00 | Тимофеев В; Шуранов Ю | 8h |  |
| 2571 | 10.82 | ремонт болгарки замена кнопки | 1h | 2024-10-21 09:00 A | 2024-10-21 10:00 A |  | 100% |  |  |  | start no earlier than 2024-10-21 09:00 | Зорькин В | 1h | 1h |
| 2572 | 10.83 | сборка редуктор LT70 замена пружинные шайбы | 1d? | 2024-09-29 09:00 A | 2024-09-30 18:00 A |  | 100% |  |  |  | start no earlier than 2024-09-29 09:00 | Макаревич А | 8h | 8h |

| ID | WBS | Task | Duration | Start | Finish | Complete | Constraint | Resources | Work | Actual work |
| --- | --- | --- | --- | --- | --- | --- | --- | --- | --- | --- |
| 2573 | 10.84 | **прорверить наличие остатков** | 0.01d | 2024-09-25 08:00 A | 2024-09-25 09:05 A | 100% |  |  | 2h | 2h |
| 2574 | 10.84.1 | Манжет (армированная 2,2-75*100*10 ГОСТ 8752-79) | 5min | 2024-09-25 08:00 A | 2024-09-25 09:05 A | 100% | start no earlier than 2024-09-25 08:00 | Дедов В | 0.08h | 0.08h |
| 2575 | 10.84.2 | Манжет (армированная 1,2-80*105*10) | 5min | 2024-09-25 08:00 A | 2024-09-25 09:05 A | 100% | start no earlier than 2024-09-25 08:00 | Дедов В | 0.08h | 0.08h |
| 2576 | 10.84.3 | Манжет (армированная 2,2-80*105*10 ГОСТ 8752-79) | 5min | 2024-09-25 08:00 A | 2024-09-25 09:05 A | 100% | start no earlier than 2024-09-25 08:00 | Дедов В | 0.08h | 0.08h |
| 2577 | 10.84.4 | Манжет (армированная 2,2-55*80*10 ГОСТ 8752-79) | 5min | 2024-09-25 08:00 A | 2024-09-25 09:05 A | 100% | start no earlier than 2024-09-25 08:00 | Дедов В | 0.08h | 0.08h |
| 2578 | 10.84.5 | Масло (Для швейных машин) | 0.01d | 2024-09-25 08:00 A | 2024-09-25 09:05 A | 100% | start no earlier than 2024-09-25 08:00 | Дедов В | 0.08h | 0.08h |
| 2579 | 10.84.6 | Наконечник (ТМЛ 16-10-6 медный луженый) | 0.01d | 2024-09-25 08:00 A | 2024-09-25 09:05 A | 100% | start no earlier than 2024-09-25 08:00 | Дедов В | 0.08h | 0.08h |
| 2580 | 10.84.7 | Наконечник (ТМЛ 10-8-5 медный луженый) | 0.01d | 2024-09-25 08:00 A | 2024-09-25 09:05 A | 100% | start no earlier than 2024-09-25 08:00 | Дедов В | 0.08h | 0.08h |
| 2581 | 10.84.8 | Подшипник (56006-2RS (180106)SKF (30*5*10)) | 0.01d | 2024-09-25 08:00 A | 2024-09-25 09:05 A | 100% | start no earlier than 2024-09-25 08:00 | Дедов В | 0.08h | 0.08h |
| 2582 | 10.84.9 | Подшипник (51410/ART) | 0.01d | 2024-09-25 08:00 A | 2024-09-25 09:05 A | 100% | start no earlier than 2024-09-25 08:00 | Дедов В | 0.08h | 0.08h |
| 2583 | 10.84.10 | Подшипник (UCF 208 (40)) | 0.01d | 2024-09-25 08:00 A | 2024-09-25 09:05 A | 100% | start no earlier than 2024-09-25 08:00 | Дедов В | 0.08h | 0.08h |
| 2584 | 10.84.11 | Подшипник (6203.LLU/2ASU1/NTN) | 0.01d | 2024-09-25 08:00 A | 2024-09-25 09:05 A | 100% | start no earlier than 2024-09-25 08:00 | Дедов В | 0.08h | 0.08h |
| 2585 | 10.84.12 | Подшипник (22212(53512) SKF (60*110*28)) | 0.01d | 2024-09-25 08:00 A | 2024-09-25 09:05 A | 100% | start no earlier than 2024-09-25 08:00 | Дедов В | 0.08h | 0.08h |
| 2586 | 10.84.13 | Подшипник (UC 204 (480204) (20х47х17/31)) | 0.01d | 2024-09-25 08:00 A | 2024-09-25 09:05 A | 100% | start no earlier than 2024-09-25 08:00 | Дедов В | 0.08h | 0.08h |
| 2587 | 10.84.14 | Подшипник (6906-2RS (30*47*9)) | 0.01d | 2024-09-25 08:00 A | 2024-09-25 09:05 A | 100% | start no earlier than 2024-09-25 08:00 | Дедов В | 0.08h | 0.08h |
| 2588 | 10.84.15 | Подшипник (6003-2RS (180103) (17*35*10)) | 0.01d | 2024-09-25 08:00 A | 2024-09-25 09:05 A | 100% | start no earlier than 2024-09-25 08:00 | Дедов В | 0.08h | 0.08h |
| 2589 | 10.84.16 | Подшипник (6203-2RS (180203) (17*40*12)) | 0.01d | 2024-09-25 08:00 A | 2024-09-25 09:05 A | 100% | start no earlier than 2024-09-25 08:00 | Дедов В | 0.08h | 0.08h |
| 2590 | 10.84.17 | Подшипник (6002 2RS, SKF (180102, 15*32*9)) | 0.01d | 2024-09-25 08:00 A | 2024-09-25 09:05 A | 100% | start no earlier than 2024-09-25 08:00 | Дедов В | 0.08h | 0.08h |
| 2591 | 10.84.18 | Провод ПЩ-4 | 0.01d | 2024-09-25 08:00 A | 2024-09-25 09:05 A | 100% | start no earlier than 2024-09-25 08:00 | Дедов В | 0.08h | 0.08h |
| 2592 | 10.84.19 | Ремень клиновый А-1400 | 0.01d | 2024-09-25 08:00 A | 2024-09-25 09:05 A | 100% | start no earlier than 2024-09-25 08:00 | Дедов В | 0.08h | 0.08h |
| 2593 | 10.84.20 | Ремень клиновый В (Б)-1320 | 0.01d | 2024-09-25 08:00 A | 2024-09-25 09:05 A | 100% | start no earlier than 2024-09-25 08:00 | Дедов В | 0.08h | 0.08h |
| 2594 | 10.84.21 | Реле (тепловое РТИ-3353 23-32А) | 0.01d | 2024-09-25 08:00 A | 2024-09-25 09:05 A | 100% | start no earlier than 2024-09-25 08:00 | Дедов В | 0.08h | 0.08h |
| 2595 | 10.84.22 | Шланг (для дозирующих насосов черного цвета 6,4х9,6 мм) | 0.01d | 2024-09-25 08:00 A | 2024-09-25 09:05 A | 100% | start no earlier than 2024-09-25 08:00 | Дедов В | 0.08h | 0.08h |
| 2596 | 10.84.23 | Труба гофрированная (ПВХ 25мм с протяжкой легкая серая) | 0.01d | 2024-09-25 08:00 A | 2024-09-25 09:05 A | 100% | start no earlier than 2024-09-25 08:00 | Дедов В | 0.08h | 0.08h |
| 2597 | 10.84.24 | Шпонка призматическая (DIN 6885 A 18х11х 90мм) | 0.01d | 2024-09-25 08:00 A | 2024-09-25 09:05 A | 100% | start no earlier than 2024-09-25 08:00 | Дедов В | 0.08h | 0.08h |

| ID | WBS | Task | Duration | Start | Finish | Predecessors | Complete | Remaining | Total slack | Free slack | Constraint | Resources | Work | Actual work |
| --- | --- | --- | --- | --- | --- | --- | --- | --- | --- | --- | --- | --- | --- | --- |
| 2598 | 10.85 | **прорверить остатки подшипников** | 0.01d | 2024-09-10 08:00 A | 2024-09-10 09:05 A |  | 100% |  |  |  |  |  | 1.17h | 1.17h |
| 2599 | 10.85.1 | 180101АС17/6 ГПЗ | 5min | 2024-09-10 08:00 A | 2024-09-10 09:05 A |  | 100% |  |  |  | start no earlier than 2024-09-10 08:00 | Дедов В | 0.08h | 0.08h |
| 2600 | 10.85.2 | 180202 (6202 2RS) (15*35*11) SKF | 0.01d | 2024-09-10 08:00 A | 2024-09-10 09:05 A |  | 100% |  |  |  | start no earlier than 2024-09-10 08:00 | Дедов В | 0.08h | 0.08h |
| 2601 | 10.85.3 | 180206 (6206 2RS) (30*62*16) HIKI | 0.01d | 2024-09-10 08:00 A | 2024-09-10 09:05 A |  | 100% |  |  |  | start no earlier than 2024-09-10 08:00 | Дедов В | 0.08h | 0.08h |
| 2602 | 10.85.4 | 22212.EAW33C3 / SNR | 0.01d | 2024-09-10 08:00 A | 2024-09-10 09:05 A |  | 100% |  |  |  | start no earlier than 2024-09-10 08:00 | Дедов В | 0.08h | 0.08h |
| 2603 | 10.85.5 | 51407/NEUTR | 0.01d | 2024-09-10 08:00 A | 2024-09-10 09:05 A |  | 100% |  |  |  | start no earlier than 2024-09-10 08:00 | Дедов В | 0.08h | 0.08h |
| 2604 | 10.85.6 | 6001 ZZ.CM | 0.01d | 2024-09-10 08:00 A | 2024-09-10 09:05 A |  | 100% |  |  |  | start no earlier than 2024-09-10 08:00 | Дедов В | 0.08h | 0.08h |
| 2605 | 10.85.7 | 6201.VVC3/ITJ | 0.01d | 2024-09-10 08:00 A | 2024-09-10 09:05 A |  | 100% |  |  |  | start no earlier than 2024-09-10 08:00 | Дедов В | 0.08h | 0.08h |
| 2606 | 10.85.8 | 6205LLU (NTN) | 0.01d | 2024-09-10 08:00 A | 2024-09-10 09:05 A |  | 100% |  |  |  | start no earlier than 2024-09-10 08:00 | Дедов В | 0.08h | 0.08h |
| 2607 | 10.85.9 | 6206. VVC3/ITJ | 0.01d | 2024-09-10 08:00 A | 2024-09-10 09:05 A |  | 100% |  |  |  | start no earlier than 2024-09-10 08:00 | Дедов В | 0.08h | 0.08h |
| 2608 | 10.85.10 | 686-2RS/ART | 0.01d | 2024-09-10 08:00 A | 2024-09-10 09:05 A |  | 100% |  |  |  | start no earlier than 2024-09-10 08:00 | Дедов В | 0.08h | 0.08h |
| 2609 | 10.85.11 | 7512 (32212)(60*110*24) | 0.01d | 2024-09-10 08:00 A | 2024-09-10 09:05 A |  | 100% |  |  |  | start no earlier than 2024-09-10 08:00 | Дедов В | 0.08h | 0.08h |
| 2610 | 10.85.12 | HK1210/NEUTR | 0.01d | 2024-09-10 08:00 A | 2024-09-10 09:05 A |  | 100% |  |  |  | start no earlier than 2024-09-10 08:00 | Дедов В | 0.08h | 0.08h |
| 2611 | 10.85.13 | UC 205 Neutr | 0.01d | 2024-09-10 08:00 A | 2024-09-10 09:05 A |  | 100% |  |  |  | start no earlier than 2024-09-10 08:00 | Дедов В | 0.08h | 0.08h |
| 2612 | 10.85.14 | UCFC 210 ASAHI | 0.01d | 2024-09-10 08:00 A | 2024-09-10 09:05 A |  | 100% |  |  |  | start no earlier than 2024-09-10 08:00 | Дедов В | 0.08h | 0.08h |
| 2613 | 10.86 | **создать реестр документации на оборудование** | 2d? | 2024-09-10 09:00 | 2024-09-11 18:00 |  |  |  | 658.59d |  |  |  | 8h |  |
| 2614 | 10.86.1 | опись документации в наличии, сортировка | 1d? | 2024-09-10 09:00 | 2024-09-10 18:00 |  |  |  | 658.59d | 0d | start no earlier than 2024-09-10 09:00 | Зорькин В | 8h |  |
| 2615 | 10.86.2 | оформление реестра наличия документации | 1d? | 2024-09-11 09:00 | 2024-09-11 18:00 | 2614 |  |  | 658.59d |  | start no earlier than 2024-09-06 08:00 |  |  |  |
| 2616 | 10.87 | **ремонт двигатель с шлюз питатель** | 0.02d | 2024-08-09 09:00 | 2024-08-09 09:10 |  |  |  | 682.57d |  |  |  | 0.17h |  |
| 2617 | 10.87.1 | контроль / орг курьер - | 10min | 2024-08-09 09:00 | 2024-08-09 09:10 |  |  |  | 682.57d |  | start no earlier than 2024-08-09 09:00 | Шуранов Ю | 0.17h |  |
| 2618 | 10.88 | **организовать хранение зап. частей для производства в одном месте, создать склад и нести полную материальную ответственность** | 18d? | 2024-05-09 09:00 A | 2024-06-03 18:00 |  | 15% | 15.3d? | 730.59d |  |  |  | 272h | 24h |
| 2619 | 10.88.1 | монтаж забор / ворота | 3d | 2024-05-09 09:00 A | 2024-05-13 18:00 A |  | 100% |  |  |  | start no earlier than 2024-05-09 09:00 | Макаревич А | 24h | 24h |
| 2620 | 10.88.2 | монтаж ворота, забор | 1d? | 2024-05-14 09:00 | 2024-05-14 18:00 | 2619 |  |  | 730.59d | 0d | start no earlier than 2024-05-13 09:00 | Некрасов А; Черепанов И | 16h |  |
| 2621 | 10.88.3 | подготови доски для стеллажей на 3 складе | 1d? | 2024-05-20 09:00 | 2024-05-20 18:00 |  |  |  | 740.59d |  | start no earlier than 2024-05-18 09:00 | КИнжекул | 8h |  |
| 2622 | 10.88.4 | переместить стеллажи на 2 этаж ГП + сборка | 1d? | 2024-05-15 09:00 | 2024-05-15 18:00 | 2620 |  |  | 737.59d | 7d | start no earlier than 2024-05-08 08:00 | Некрасов А; Черепанов И | 16h |  |
| 2623 | 10.88.5 | составить список всех позиций за забором для учета | 2d | 2024-05-15 09:00 | 2024-05-16 18:00 | 2620 |  |  | 730.59d | 0d | start no earlier than 2024-05-14 09:00 | Шуранов Ю | 16h |  |
| 2624 | 10.88.6 | состаить список ЗИП склад 3 цех | 2d | 2024-05-17 09:00 | 2024-05-20 18:00 | 2623 |  |  | 730.59d | 0d | start no earlier than 2024-05-08 09:00 | Шуранов Ю | 16h |  |
| 2625 | 10.88.7 | состаить список ЗИП склад слесарное помещение | 2d | 2024-05-21 09:00 | 2024-05-22 18:00 | 2624 |  |  | 730.59d | 0d | start no earlier than 2024-05-14 09:00 | Шуранов Ю | 16h |  |
| 2626 | 10.88.8 | составить список ЗИП Контейнер | 2d | 2024-05-23 09:00 | 2024-05-24 18:00 | 2625 |  |  | 730.59d | 0d | start no earlier than 2024-05-14 09:00 | Шуранов Ю | 16h |  |
| 2627 | 10.88.9 | перемещение ЗИП с 3 цеха на 2 этаж ГП | 2d | 2024-05-27 09:00 | 2024-05-28 18:00 | 2622, 2626 |  |  | 730.59d | 0d | start no earlier than 2024-05-14 09:00 | Шуранов Ю; Некрасов А; Черепанов И | 48h |  |
| 2628 | 10.88.10 | перемещение ЗИП с контейнера на 2 этаж ГП | 2d | 2024-05-29 09:00 | 2024-05-30 18:00 | 2627 |  |  | 730.59d | 0d | start no earlier than 2024-05-14 09:00 | Шуранов Ю; Некрасов А; Черепанов И | 48h |  |
| 2629 | 10.88.11 | перемещение ЗИП с слесарного помещения на 2 этаж ГП | 2d | 2024-05-31 09:00 | 2024-06-03 18:00 | 2628 |  |  | 730.59d |  | start no earlier than 2024-05-14 09:00 | Шуранов Ю; Некрасов А; Черепанов И | 48h |  |

| ID | WBS | Task | Type | Duration | Start | Finish | Predecessors | Complete | Remaining | Actual start | Total slack | Free slack | Constraint | Resources | Work | Actual work |
| --- | --- | --- | --- | --- | --- | --- | --- | --- | --- | --- | --- | --- | --- | --- | --- | --- |
| 2630 | 10.89 | **клапан эл магнитный для парогенератора на подачу воды** |  | 0.06d | 2025-01-16 09:00 | 2025-01-16 09:30 |  |  |  |  | 568.53d |  |  |  | 0.5h |  |
| 2631 | 10.89.1 | контролль остатков, заявка на катушку |  | 30min | 2025-01-16 09:00 | 2025-01-16 09:30 |  |  |  |  | 568.53d |  | start no earlier than 2025-01-16 09:00 | Шуранов Ю | 0.5h |  |
| 2632 | 10.90 | **вал с конвейера №1 разместить на ремонт** |  | 15.06d | 2024-05-14 09:00 | 2024-06-04 09:30 |  |  |  |  | 730.53d |  |  |  | 120.5h |  |
| 2633 | 10.90.1 | орг курьера |  | 15min | 2024-05-14 09:00 | 2024-05-14 09:15 |  |  |  |  | 730.53d | 0d | start no earlier than 2024-05-14 09:00 | Шуранов Ю | 0.25h |  |
| 2634 | 10.90.2 | ремонт |  | 15d | 2024-05-14 09:15 | 2024-06-04 09:15 | 2633 |  |  |  | 730.53d | 0d | start no earlier than 2024-05-08 08:00 | Подрядчик | 120h |  |
| 2635 | 10.90.3 | контроль, орг курьера забрать |  | 15min | 2024-06-04 09:15 | 2024-06-04 09:30 | 2634 |  |  |  | 730.53d |  | start no earlier than 2024-05-14 09:00 | Шуранов Ю | 0.25h |  |
| 2636 | 10.91 | подшипник LMK20.UU/FBJ или NEUTR - 4шт ТЕКО после замены |  | 10min | 2024-05-14 09:00 | 2024-05-14 09:10 |  |  |  |  | 745.57d |  | start no earlier than 2024-05-14 09:00 | Шуранов Ю | 0.17h |  |
| 2637 | 10.92 | UC204 подшипники |  | 10min | 2024-05-14 09:00 | 2024-05-14 09:10 |  |  |  |  | 745.57d |  | start no earlier than 2024-05-14 09:00 | Шуранов Ю | 0.17h |  |
| 2638 | 10.93 | сетка на дробилку 37квт 5 цех 0,5мм и 0,7 мм - заявка ЕВРОМЕД |  | 1h | 2024-05-14 09:00 | 2024-05-14 10:00 |  |  |  |  | 745.47d |  | start no earlier than 2024-05-14 09:00 | Шуранов Ю | 1h |  |
| 2639 | 11 | **ЗИП заказ (заявки)** |  | 41.03d | 2026-09-04 09:00 A | 2026-10-20 09:15 |  | 50% | 20.52d |  | 101.56d |  |  |  | 0.83h | 0.42h |
| 2640 | 11.1 | втулка на шланг РВД для датчика давления |  | 15min | 2026-10-20 09:00 | 2026-10-20 09:15 |  |  |  |  | 101.56d |  | start no earlier than 2026-10-20 09:00 | Зорькин В | 0.25h |  |
| 2641 | 11.2 | контактор для тельфера 5ц 24 переменка |  | 15min | 2026-09-04 09:00 A | 2026-09-04 09:15 A |  | 100% |  |  |  |  | start no earlier than 2026-09-04 09:00 | Зорькин В | 0.25h | 0.25h |
| 2642 | 11.3 | Наконечники штырьевые для сборки схем (получить инфу у Тимофеева) |  | 10min | 2026-09-09 09:00 | 2026-09-09 09:10 |  |  |  |  | 138.57d |  | start no earlier than 2026-09-09 09:00 | Зорькин В | 0.17h |  |
| 2643 | 11.4 | Газ в слесарку, закончился |  | 10min | 2026-09-07 09:00 A | 2026-09-07 09:10 A |  | 100% |  |  |  |  | start no earlier than 2026-09-07 09:00 | Зорькин В | 0.17h | 0.17h |
| 2644 | 12 | **ТО** |  | 772.25d? | 2023-12-28 09:00 A | 2026-12-01 11:00 |  | 45% | 424.62d? |  | 71.34d |  |  |  | 31032.4h | 17197h |
| 2645 | 12.1 | Замена валов линия 1 гильзы вход и выход |  | 3h | 2026-10-14 09:00 | 2026-10-14 12:00 |  |  |  |  | 106.22d |  | start no earlier than 2026-10-14 09:00 | Макаревич А; Труфанов А | 6h |  |
| 2646 | 12.2 | Замена валов линия 2 гильзы вход и выход |  | 3h | 2026-10-14 09:00 | 2026-10-14 12:00 |  |  |  |  | 106.22d |  | start no earlier than 2026-10-14 09:00 | Макаревич А; Труфанов А | 6h |  |
| 2647 | 12.3 | **1 цех** |  | 134.25d? | 2024-04-04 09:00 | 2024-10-09 11:00 |  | 61% | 52.05d? | 2023-12-28 09:00 |  |  |  |  | 5961.25h | 812.17h |
| 2648 | 12.3.1 | **Разобрать улитки с охладителя 2 линия, 4 улитки на печах и улитки циклонов - замена подшипников, каких нет сообщить** |  | 16.25d | 2026-09-07 09:00 A | 2026-09-23 11:00 |  | 95% | 0.79d |  | 124.34d |  |  |  | 22.5h | 21.5h |
| 2649 | 12.3.1.1 | очистка моторов шлюз питателей циклонов от пыли |  | 30min | 2026-09-11 09:00 A | 2026-09-11 09:30 A |  | 100% |  |  |  |  | start no earlier than 2026-09-11 08:00 | Бобренок В | 0.5h | 0.5h |
| 2650 | 12.3.1.2 | очистка центрального вала от налипей грязи через смотровое окно |  | 1h | 2026-09-11 09:00 A | 2026-09-11 10:00 A |  | 100% |  |  |  |  | start no earlier than 2026-09-11 08:00 | Бобренок В | 1h | 1h |
| 2651 | 12.3.1.3 | монтаж шильдиков на которые починил |  | 1h | 2026-09-15 09:00 | 2026-09-15 10:00 |  |  |  |  | 132.47d |  | start no earlier than 2026-09-15 09:00 | Бундин В | 1h |  |
| 2652 | 12.3.1.4 | вентилятор охладителя | manual | 4h | 2026-09-07 09:00 A | 2026-09-07 13:00 A |  | 100% |  |  |  |  |  | Бундин В | 4h | 4h |
| 2653 | 12.3.1.5 | линия 1 вентилятор печи 1 |  | 4h | 2026-09-08 09:00 A | 2026-09-08 13:00 A |  | 100% |  |  |  |  | start no earlier than 2026-09-08 09:00 | Бундин В | 4h | 4h |
| 2654 | 12.3.1.6 | линия 1 вентилятор печи 2 | manual | 4h | 2026-09-09 09:00 A | 2026-09-09 13:00 A |  | 100% |  |  |  |  |  | Бундин В | 4h | 4h |
| 2655 | 12.3.1.7 | линия 2 вентилятор циклона 1 | manual | 4h | 2026-09-09 14:00 A | 2026-09-09 18:00 A | 2654 | 100% |  |  |  |  |  | Бундин В | 4h | 4h |
| 2656 | 12.3.1.8 | линия 2 вентилятор циклона 2 | manual | 2h | 2026-09-23 09:00 A | 2026-09-23 11:00 A | 2655 | 100% |  |  |  |  |  | Бундин В; Некрасов А | 4h | 4h |
| 2657 | 12.3.2 | ТО ШУ печи №1 (замена кабеля, наконечников…) |  | 1h | 2026-08-27 09:00 A | 2026-08-27 10:00 A |  | 100% |  |  |  |  | start no earlier than 2026-08-27 09:00 | Тимофеев В | 1h | 1h |

| ID | WBS | Task | Duration | Start | Finish | Complete | Remaining | Total slack | Constraint | Resources | Work | Actual work |
| --- | --- | --- | --- | --- | --- | --- | --- | --- | --- | --- | --- | --- |
| 2658 | 12.3.3 | **приточная вентиляция** | 168.12d | 2026-03-04 09:00 A | 2026-10-14 10:00 | 75% | 42.03d | 106.47d |  |  | 4h | 3h |
| 2659 | 12.3.3.1 | замена оба фильтра | 1h | 2026-03-04 09:00 A | 2026-03-04 10:00 A | 100% |  |  | start no earlier than 2026-03-04 08:00 | Труфанов А | 1h | 1h |
| 2660 | 12.3.3.2 | замена фильтра | 1h | 2026-04-15 09:00 A | 2026-04-15 10:00 A | 100% |  |  | start no earlier than 2026-04-15 09:00 | Труфанов А | 1h | 1h |
| 2661 | 12.3.3.3 | Замена фильтра | 1h | 2026-07-29 09:00 A | 2026-07-29 10:00 A | 100% |  |  | start no earlier than 2026-07-29 08:00 | Бундин В | 1h | 1h |
| 2662 | 12.3.3.4 | Проверка фильтра, по необходимости замена | 1h | 2026-10-14 09:00 | 2026-10-14 10:00 |  |  | 106.47d | start no earlier than 2026-10-14 09:00 | Дедов В | 1h |  |
| 2663 | 12.3.4 | **техническая вода** | 158.02d | 2026-03-11 09:00 A | 2026-10-07 09:10 | 89% | 17.56d | 111.57d |  |  | 1.5h | 1.33h |
| 2664 | 12.3.4.1 | проверка гидроаккумулятора | 10min | 2026-03-11 09:00 A | 2026-03-11 09:10 A | 100% |  |  | start no earlier than 2026-03-11 09:00 | Некрасов А | 0.17h | 0.17h |
| 2665 | 12.3.4.2 | замена фильтров | 10min | 2026-03-11 09:00 A | 2026-03-11 09:10 A | 100% |  |  | start no earlier than 2026-03-11 09:00 | Некрасов А | 0.17h | 0.17h |
| 2666 | 12.3.4.3 | замена фильтров | 30min | 2026-05-27 09:00 A | 2026-05-27 09:30 A | 100% |  |  | start no earlier than 2026-03-11 09:00 | Бундин В | 0.5h | 0.5h |
| 2667 | 12.3.4.4 | замена фильтров | 30min | 2026-03-12 09:00 A | 2026-03-12 09:30 A | 100% |  |  | start no earlier than 2026-03-12 09:00 | Бобренок В | 0.5h | 0.5h |
| 2668 | 12.3.4.5 | проверка гидроаккумулятора | 10min | 2026-10-07 09:00 | 2026-10-07 09:10 |  |  | 111.57d | start no earlier than 2026-10-07 09:00 | Тимофеев В | 0.17h |  |
| 2669 | 12.3.5 | **линия 1** | 157.12d? | 2026-03-18 09:00 A | 2026-10-13 10:00 | 96% | 6.04d? | 107.47d |  |  | 28h | 27h |
| 2670 | 12.3.5.1 | **питатель экструдера** | 147.06d? | 2026-03-18 09:00 A | 2026-09-30 09:30 A | 100% |  |  |  |  | 11h | 11h |
| 2671 | 12.3.5.1.1 | замена подшипники | 1d? | 2026-04-08 09:00 A | 2026-04-08 18:00 A | 100% |  |  | start no earlier than 2026-04-08 09:00 | Тимофеев В | 8h | 8h |
| 2672 | 12.3.5.1.2 | контроль палстик втулки | 1h | 2026-05-13 09:00 A | 2026-05-13 10:00 A | 100% |  |  | start no earlier than 2026-05-13 09:00 | Бобренок В | 1h | 1h |
| 2673 | 12.3.5.1.3 | контроль шестерен привода, редуктора | 10min | 2026-03-18 09:00 A | 2026-03-18 09:10 A | 100% |  |  | start no earlier than 2026-03-18 09:00 | Труфанов А | 0.17h | 0.17h |
| 2674 | 12.3.5.1.4 | контроль состояние пластик втулки | 30min | 2026-06-02 09:00 A | 2026-06-02 09:30 A | 100% |  |  | start no earlier than 2026-06-02 09:00 | Некрасов А | 0.5h | 0.5h |
| 2675 | 12.3.5.1.5 | Ревизия питателя | 20min | 2026-07-29 09:00 A | 2026-07-29 09:20 A | 100% |  |  | start no earlier than 2026-07-29 08:00 | Бундин В | 0.33h | 0.33h |
| 2676 | 12.3.5.1.6 | Ревизия питателя, контроль состояния подшипников/втулки/шестерен | 30min | 2026-09-23 09:00 A | 2026-09-23 09:30 A | 100% |  |  | start no earlier than 2026-09-23 09:00 | Некрасов А | 0.5h | 0.5h |
| 2677 | 12.3.5.1.7 | Ревизия питателя, контроль состояния подшипников/втулки/шестерен/втулки | 30min | 2026-09-30 09:00 A | 2026-09-30 09:30 A | 100% |  |  | start no earlier than 2026-09-30 09:00 | Тимофеев В | 0.5h | 0.5h |
| 2678 | 12.3.5.2 | **прекондицинер экструдера** | 107.03d | 2026-05-13 09:00 A | 2026-09-30 09:15 A | 100% |  |  |  |  | 1h | 1h |
| 2679 | 12.3.5.2.1 | контроль привода, подшипников | 15min | 2026-05-13 09:00 A | 2026-05-13 09:15 A | 100% |  |  | start no earlier than 2026-05-13 09:00 | Бобренок В | 0.25h | 0.25h |
| 2680 | 12.3.5.2.2 | контроль привода, подшипников | 15min | 2026-07-29 09:00 A | 2026-07-29 09:15 A | 100% |  |  | start no earlier than 2026-07-29 08:00 | Труфанов А | 0.25h | 0.25h |
| 2681 | 12.3.5.2.3 | контроль привода, подшипников | 15min | 2026-09-23 09:00 A | 2026-09-23 09:15 A | 100% |  |  | start no earlier than 2026-09-23 09:00 | Некрасов А | 0.25h | 0.25h |
| 2682 | 12.3.5.2.4 | контроль привода, подшипников/при необходимости замена | 15min | 2026-09-30 09:00 A | 2026-09-30 09:15 A | 100% |  |  | start no earlier than 2026-09-30 09:00 | Тимофеев В | 0.25h | 0.25h |

| ID | WBS | Task | Duration | Start | Finish | Complete | Remaining | Total slack | Constraint | Resources | Work | Actual work |
| --- | --- | --- | --- | --- | --- | --- | --- | --- | --- | --- | --- | --- |
| 2683 | 12.3.5.3 | **парогенератор** | 142.12d | 2026-04-08 09:00 A | 2026-10-13 10:00 | 93% | 10.15d | 107.47d |  |  | 16h | 15h |
| 2684 | 12.3.5.3.1 | вскрытие электородов, чистка | 1h | 2026-05-13 09:00 A | 2026-05-13 10:00 A | 100% |  |  | start no earlier than 2026-05-13 09:00 | Бобренок В | 1h | 1h |
| 2685 | 12.3.5.3.2 | замена реле вкл насоса. (не вкл) | 2h | 2026-05-13 09:00 A | 2026-05-13 11:00 A | 100% |  |  | start no earlier than 2026-05-13 09:00 | Бобренок В | 2h | 2h |
| 2686 | 12.3.5.3.3 | замена гофротрубы / закрепить жестко | 2h | 2026-04-08 09:00 A | 2026-04-08 11:00 A | 100% |  |  | start no earlier than 2026-04-08 09:00 | Бобренок В | 2h | 2h |
| 2687 | 12.3.5.3.4 | чистка парогенератора, если нужно замена электродов | 2h | 2026-06-10 09:00 A | 2026-06-10 11:00 A | 100% |  |  | start no earlier than 2026-06-10 09:00 | Дедов В | 2h | 2h |
| 2688 | 12.3.5.3.5 | читска парогенератора, если нужно замена электродов | 2h | 2026-05-20 09:00 A | 2026-05-20 11:00 A | 100% |  |  | start no earlier than 2026-05-20 09:00 | Некрасов А | 2h | 2h |
| 2689 | 12.3.5.3.6 | читска парогенератора, если нужно замена электродов | 1h | 2026-06-02 09:00 A | 2026-06-02 10:00 A | 100% |  |  | start no earlier than 2026-06-02 09:00 | Тимофеев В | 1h | 1h |
| 2690 | 12.3.5.3.7 | вскрытие электородов, чистка | 1h | 2026-08-12 09:00 A | 2026-08-12 10:00 A | 100% |  |  | start no earlier than 2026-08-12 09:00 | Некрасов А | 1h | 1h |
| 2691 | 12.3.5.3.8 | вскрытие электородов, чистка (при остановке линии на мойку, если не остановилась, передать по смене Бундину) | 1h | 2026-09-22 09:00 A | 2026-09-22 10:00 A | 100% |  |  | start no earlier than 2026-09-22 09:00 | Макаревич А; Бундин В | 2h | 2h |
| 2692 | 12.3.5.3.9 | вскрытие электородов, чистка (при остановке линии на мойку, если не остановилась, передать по смене Тимофееву) | 1h | 2026-09-29 09:00 A | 2026-09-29 10:00 A | 100% |  |  | start no earlier than 2026-09-29 09:00 | Бундин В; Тимофеев В | 2h | 2h |
| 2693 | 12.3.5.3.10 | Чистка парогенератора после остановки | 1h | 2026-10-13 09:00 | 2026-10-13 10:00 |  |  | 107.47d | start no earlier than 2026-10-13 08:00 | Бобренок В | 1h |  |
| 2694 | 12.3.6 | **редуктор экструдера и маслянная станция** | 440.06d | 2025-02-17 09:00 A | 2026-10-14 09:30 | 50% | 220.03d | 106.53d |  |  | 13.67h | 6.83h |
| 2695 | 12.3.6.1 | чистка фильтра | 30min | 2026-06-02 09:00 A | 2026-06-02 09:30 A | 100% |  |  | start no earlier than 2026-06-02 09:00 | Тимофеев В | 0.5h | 0.5h |
| 2696 | 12.3.6.2 | муфта редутор-мотор | 15min | 2026-03-11 09:00 A | 2026-03-11 09:15 A | 100% |  |  | start no earlier than 2026-03-11 09:00 | Тимофеев В | 0.25h | 0.25h |
| 2697 | 12.3.6.3 | чистка фильтра | 30min | 2026-07-16 09:00 A | 2026-07-16 09:30 A | 100% |  |  | start no earlier than 2026-07-16 09:00 | Бобренок В | 0.5h | 0.5h |
| 2698 | 12.3.6.4 | тэны и термпары шнеков- прортяжка | 30min | 2025-02-25 09:00 | 2025-02-25 09:30 |  |  | 540.53d | start no earlier than 2025-02-25 09:00 | Дедов В | 0.5h |  |
| 2699 | 12.3.6.5 | Чистка фильтра | 30min | 2026-07-29 08:00 A | 2026-07-29 09:30 A | 100% |  |  | start no earlier than 2026-07-29 08:00 | Тимофеев В | 0.5h | 0.5h |
| 2700 | 12.3.6.6 | тэны и термпоры шнеков- прортяжка | 30min | 2026-09-23 09:00 A | 2026-09-23 09:30 A | 100% |  |  | start no earlier than 2026-09-23 09:00 | Некрасов А | 0.5h | 0.5h |
| 2701 | 12.3.6.7 | Чистка фильтра | 30min | 2026-09-23 09:00 A | 2026-09-23 09:30 A | 100% |  |  | start no earlier than 2026-09-23 09:00 | Бундин В | 0.5h | 0.5h |
| 2702 | 12.3.6.8 | Чистка фильтра/тэны и термопары шнеков - протяжка | 30min | 2026-09-30 09:00 A | 2026-09-30 09:30 A | 100% |  |  | start no earlier than 2026-09-30 09:00 | Тимофеев В | 0.5h | 0.5h |
| 2703 | 12.3.6.9 | Чистка фильтра | 30min | 2026-10-14 09:00 | 2026-10-14 09:30 |  |  | 106.53d | start no earlier than 2026-10-14 09:00 | Макаревич А | 0.5h |  |
| 2704 | 12.3.6.10 | **шкаф управления экструдером** | 144.03d | 2026-03-31 09:00 A | 2026-10-07 09:15 | 86% | 20.58d | 111.56d |  |  | 1.75h | 1.5h |
| 2705 | 12.3.6.10.1 | протяжка контактов | 30min | 2026-03-31 09:00 A | 2026-03-31 09:30 A | 100% |  |  | start no earlier than 2026-03-11 09:00 | Некрасов А | 0.5h | 0.5h |
| 2706 | 12.3.6.10.2 | частотные привода экструдера, ножей, питателя - продувка | 30min | 2026-05-27 09:00 A | 2026-05-27 09:30 A | 100% |  |  | start no earlier than 2026-05-27 09:00 | Бундин В | 0.5h | 0.5h |
| 2707 | 12.3.6.10.3 | частотные привода экструдера, ножей, питателя - продувка | 15min | 2026-07-29 09:00 A | 2026-07-29 09:15 A | 100% |  |  | start no earlier than 2026-07-29 08:00 | Труфанов А | 0.25h | 0.25h |
| 2708 | 12.3.6.10.4 | частотные привода экструдера, ножей, питателя - продувка | 15min | 2026-09-23 09:00 A | 2026-09-23 09:15 A | 100% |  |  | start no earlier than 2026-09-23 09:00 | Некрасов А | 0.25h | 0.25h |
| 2709 | 12.3.6.10.5 | частотные привода экструдера, ножей, питателя - продувка | 15min | 2026-10-07 09:00 | 2026-10-07 09:15 |  |  | 111.56d | start no earlier than 2026-10-07 09:00 | Тимофеев В | 0.25h |  |

| ID | WBS | Task | Duration | Start | Finish | Complete | Remaining | Total slack | Constraint | Resources | Work | Actual work |
| --- | --- | --- | --- | --- | --- | --- | --- | --- | --- | --- | --- | --- |
| 2710 | 12.3.6.11 | **блок тэнов сушки** | 108.03d | 2026-05-20 09:00 A | 2026-10-07 09:15 | 71% | 30.87d | 111.56d |  |  | 1.75h | 1.25h |
| 2711 | 12.3.6.11.1 | ревизия, замена отгоревших жил, проверка токов | 1h | 2026-05-20 09:00 A | 2026-05-20 10:00 A | 100% |  |  | start no earlier than 2026-05-20 09:00 | Некрасов А | 1h | 1h |
| 2712 | 12.3.6.11.2 | ревизия/ проверка токов | 15min | 2026-08-26 09:00 | 2026-08-26 09:15 |  |  | 149.56d | start no earlier than 2026-08-26 09:00 | Некрасов А | 0.25h |  |
| 2713 | 12.3.6.11.3 | ревизия/ проверка токов | 15min | 2026-09-23 09:00 A | 2026-09-23 09:15 A | 100% |  |  | start no earlier than 2026-09-23 09:00 | Труфанов А | 0.25h | 0.25h |
| 2714 | 12.3.6.11.4 | ревизия/ проверка токов | 15min | 2026-10-07 09:00 | 2026-10-07 09:15 |  |  | 111.56d | start no earlier than 2026-10-07 09:00 | Тимофеев В | 0.25h |  |
| 2715 | 12.3.6.12 | **шкаф управления тэнами сушки** | 68.5d | 2026-06-10 09:00 A | 2026-09-11 13:00 | 11% | 61.29d | 136.09d |  |  | 4.75h | 0.5h |
| 2716 | 12.3.6.12.1 | протяжка контактов | 15min | 2026-06-10 09:00 | 2026-06-10 09:15 |  |  | 204.56d | start no earlier than 2026-06-10 09:00 | Дедов В | 0.25h |  |
| 2717 | 12.3.6.12.2 | замена неисправных жил | 4h | 2026-09-11 09:00 | 2026-09-11 13:00 |  |  | 136.09d | start no earlier than 2026-09-11 09:00 | Тимофеев В | 4h |  |
| 2718 | 12.3.6.12.3 | частотные привода экструдера, ножей, питателя - продувка | 30min | 2026-07-16 09:00 A | 2026-07-16 09:30 A | 100% |  |  | start no earlier than 2026-07-16 09:00 | Бобренок В | 0.5h | 0.5h |
| 2719 | 12.3.6.13 | конвейер №1 с печи в дрожировщик прорверка подшипники, реуктор | 30min | 2025-02-17 09:00 | 2025-02-17 09:30 |  |  | 546.53d | start no earlier than 2025-02-15 09:00 | Дедов В | 0.5h |  |
| 2720 | 12.3.6.14 | Осмотр, продувка, протяжка контактов | 20min | 2026-09-23 09:00 A | 2026-09-23 09:20 A | 100% |  |  | start no earlier than 2026-09-23 09:00 | Труфанов А | 0.33h | 0.33h |
| 2721 | 12.3.6.15 | Осмотр, продувка, протяжка контактов | 20min | 2026-10-07 09:00 | 2026-10-07 09:20 |  |  | 111.55d | start no earlier than 2026-10-07 09:00 | Тимофеев В | 0.33h |  |
| 2722 | 12.3.7 | **барабан смесительный дрожировка - прорверка подшипнки , реуктор** | 157.03d | 2026-03-04 08:00 A | 2026-09-30 09:15 A | 100% |  |  |  |  | 2.75h | 2.75h |
| 2723 | 12.3.7.1 | замена вал № 4 час | 2h | 2026-03-04 08:00 A | 2026-03-04 11:00 A | 100% |  |  | start no earlier than 2026-03-04 08:00 | Тимофеев В | 2h | 2h |
| 2724 | 12.3.7.2 | Дефектовка - проверить подачу, вибрации, посторонние шумы. | 15min | 2026-07-29 08:00 A | 2026-07-29 09:15 A | 100% |  |  | start no earlier than 2026-07-29 08:00 | Тимофеев В | 0.25h | 0.25h |
| 2725 | 12.3.7.3 | Дефектовка - проверить подачу, вибрации, посторонние шумы. | 15min | 2026-09-23 09:00 A | 2026-09-23 09:15 A | 100% |  |  | start no earlier than 2026-09-23 09:00 | Некрасов А | 0.25h | 0.25h |
| 2726 | 12.3.7.4 | Дефектовка - проверить подачу, вибрации, посторонние шумы/проверка фильтров/насосов/фитингов | 15min | 2026-09-30 09:00 A | 2026-09-30 09:15 A | 100% |  |  | start no earlier than 2026-09-30 09:00 | Тимофеев В | 0.25h | 0.25h |
| 2727 | 12.3.8 | **печь** | 644.12d | 2024-05-07 09:00 A | 2026-10-14 10:00 | 84% | 100.64d | 106.47d |  |  | 20h | 17.5h |
| 2728 | 12.3.8.1 | проверка состояния сетки, ремонт шплинтов | 2h | 2026-07-16 09:00 A | 2026-07-16 11:00 A | 100% |  |  | start no earlier than 2026-07-16 09:00 | Бобренок В; Некрасов А; Труфанов А | 6h | 6h |
| 2729 | 12.3.8.2 | укоротить звено привода | 1h | 2026-07-16 09:00 A | 2026-07-16 10:00 A | 100% |  |  | start no earlier than 2026-07-16 09:00 | Некрасов А | 1h | 1h |
| 2730 | 12.3.8.3 | вентиляторы обдува сушки | 2h | 2024-06-14 09:00 A | 2024-06-14 11:00 A | 100% |  |  | start no earlier than 2024-06-14 09:00 | ТО_2 | 2h | 2h |
| 2731 | 12.3.8.4 | пневотранспорт вентилятор | 2h | 2024-05-07 09:00 A | 2024-05-07 11:00 A | 100% |  |  | start no earlier than 2024-05-07 09:00 | ТО_1 | 2h | 2h |
| 2732 | 12.3.8.5 | пневотранспорт роторный питатель - проверка масла | 30min | 2025-02-17 09:00 A | 2025-02-17 09:30 A | 100% |  |  | start no earlier than 2025-02-16 09:00 | Черепанов И | 0.5h | 0.5h |
| 2733 | 12.3.8.6 | пневотранспорт роторный питатель - проверка масла | 30min | 2026-07-29 09:00 A | 2026-07-29 09:30 A | 100% |  |  | start no earlier than 2026-07-29 08:00 | Труфанов А | 0.5h | 0.5h |
| 2734 | 12.3.8.7 | привод сетки ПЕЧИ сушки - прорверка масла | 30min | 2025-02-17 09:00 A | 2025-02-17 09:30 A | 100% |  |  | start no earlier than 2025-02-16 09:00 | Черепанов И | 0.5h | 0.5h |
| 2735 | 12.3.8.8 | привод сетки ПЕЧИ сушки - прорверка масла | 30min | 2026-07-29 09:00 A | 2026-07-29 09:30 A | 100% |  |  | start no earlier than 2026-07-29 08:00 | Труфанов А | 0.5h | 0.5h |
| 2736 | 12.3.8.9 | дозатор сухой гидролизат - разборка, чистка, замена подшипников | 2h | 2026-08-18 09:00 A | 2026-08-18 11:00 A | 100% |  |  | start no earlier than 2026-08-18 09:00 | Бундин В | 2h | 2h |
| 2737 | 12.3.8.10 | Осмотр цепи и сетки | 1h | 2026-07-29 09:00 A | 2026-07-29 10:00 A | 100% |  |  | start no earlier than 2026-07-29 08:00 | Труфанов А | 1h | 1h |
| 2738 | 12.3.8.11 | Контроль состояния сетки/цепи | 30min | 2026-09-23 09:00 A | 2026-09-23 09:30 A | 100% |  |  | start no earlier than 2026-09-23 09:00 | Некрасов А | 0.5h | 0.5h |
| 2739 | 12.3.8.12 | Смазка цепи (при наличии на складе) | 1h | 2026-09-23 09:00 A | 2026-09-23 10:00 A | 100% |  |  | start no earlier than 2026-09-23 09:00 | Некрасов А | 1h | 1h |
| 2740 | 12.3.8.13 | Контроль состояния сетки/цепи | 1h | 2026-10-07 09:00 | 2026-10-07 10:00 |  |  | 111.47d | start no earlier than 2026-10-07 09:00 | Тимофеев В | 1h |  |
| 2741 | 12.3.8.14 | Проверка масла на приводе/осмотр | 30min | 2026-10-07 09:00 | 2026-10-07 09:30 |  |  | 111.53d | start no earlier than 2026-10-07 09:00 | Тимофеев В | 0.5h |  |
| 2742 | 12.3.8.15 | Контроль состояния сетки/цепи | 1h | 2026-10-14 09:00 | 2026-10-14 10:00 |  |  | 106.47d | start no earlier than 2026-10-14 09:00 | Макаревич А | 1h |  |

| ID | WBS | Task | Duration | Start | Finish | Complete | Remaining | Actual start | Total slack | Constraint | Resources | Work | Actual work |
| --- | --- | --- | --- | --- | --- | --- | --- | --- | --- | --- | --- | --- | --- |
| 2743 | 12.3.9 | **линия 2** | 0.25d? | 2023-12-29 09:00 | 2023-12-29 11:00 | 80% | 0.05d? | 2024-04-10 09:00 |  |  |  | 43.08h | 34.75h |
| 2744 | 12.3.9.1 | **питатель экструдера** | 158.06d | 2026-03-18 09:00 A | 2026-10-14 09:30 | 91% | 14.37d |  | 106.53d |  |  | 4.5h | 4h |
| 2745 | 12.3.9.1.1 | контроль состояние пластик втулки | 30min | 2026-06-02 09:00 A | 2026-06-02 09:30 A | 100% |  |  |  | start no earlier than 2026-06-02 09:00 | Некрасов А | 0.5h | 0.5h |
| 2746 | 12.3.9.1.2 | замена подшипники | 1h | 2026-04-08 09:00 A | 2026-04-08 10:00 A | 100% |  |  |  | start no earlier than 2026-04-08 09:00 |  |  |  |
| 2747 | 12.3.9.1.3 | замена шестеренок -взять у Веры на складе | 2h | 2026-05-20 09:00 A | 2026-05-20 11:00 A | 100% |  |  |  | start no earlier than 2026-05-20 09:00 | Бобренок В | 2h | 2h |
| 2748 | 12.3.9.1.4 | контроль пластик втулки | 30min | 2026-05-13 09:00 A | 2026-05-13 09:30 A | 100% |  |  |  | start no earlier than 2026-05-13 09:00 | Бобренок В | 0.5h | 0.5h |
| 2749 | 12.3.9.1.5 | контроль шестерен привода, редуктора | 10min | 2026-03-18 09:00 A | 2026-03-18 09:10 A | 100% |  |  |  | start no earlier than 2026-03-18 09:00 | Труфанов А | 0.17h | 0.17h |
| 2750 | 12.3.9.1.6 | Ревизия питателя | 20min | 2026-07-29 09:00 A | 2026-07-29 09:20 A | 100% |  |  |  | start no earlier than 2026-07-29 08:00 | Бундин В | 0.33h | 0.33h |
| 2751 | 12.3.9.1.7 | Ревизия питателя, контроль состояния подшипников/втулки/шестерен | 30min | 2026-09-23 09:00 A | 2026-09-23 09:30 A | 100% |  |  |  | start no earlier than 2026-09-23 09:00 | Бундин В | 0.5h | 0.5h |
| 2752 | 12.3.9.1.8 | Ревизия питателя, контроль состояния подшипников/втулки/шестерен | 30min | 2026-10-14 09:00 | 2026-10-14 09:30 |  |  |  | 106.53d | start no earlier than 2026-10-14 09:00 | Дедов В | 0.5h |  |
| 2753 | 12.3.9.2 | **прекондицинер экструдера** | 118.03d | 2026-05-13 09:00 A | 2026-10-14 09:15 | 75% | 29.51d |  | 106.56d |  |  | 1h | 0.75h |
| 2754 | 12.3.9.2.1 | контроль привода, подшипников | 15min | 2026-05-13 09:00 A | 2026-05-13 09:15 A | 100% |  |  |  | start no earlier than 2026-05-13 09:00 | Бобренок В | 0.25h | 0.25h |
| 2755 | 12.3.9.2.2 | контроль привода, подшипников | 15min | 2026-07-29 09:00 A | 2026-07-29 09:15 A | 100% |  |  |  | start no earlier than 2026-07-29 08:00 | Труфанов А | 0.25h | 0.25h |
| 2756 | 12.3.9.2.3 | контроль привода, подшипников | 15min | 2026-09-23 09:00 A | 2026-09-23 09:15 A | 100% |  |  |  | start no earlier than 2026-09-23 09:00 | Бундин В | 0.25h | 0.25h |
| 2757 | 12.3.9.2.4 | контроль привода, подшипников | 15min | 2026-10-14 09:00 | 2026-10-14 09:15 |  |  |  | 106.56d | start no earlier than 2026-10-14 09:00 | Дедов В | 0.25h |  |
| 2758 | 12.3.9.3 | **парогенератор** | 65.12d | 2026-05-13 09:00 A | 2026-08-12 10:00 A | 100% |  |  |  |  |  | 2h | 2h |
| 2759 | 12.3.9.3.1 | вскрытие электородов, чистка | 1h | 2026-05-13 09:00 A | 2026-05-13 10:00 A | 100% |  |  |  | start no earlier than 2026-05-13 09:00 | Бобренок В | 1h | 1h |
| 2760 | 12.3.9.3.2 | вскрытие электородов, чистка | 1h | 2026-08-12 09:00 A | 2026-08-12 10:00 A | 100% |  |  |  | start no earlier than 2026-08-12 09:00 | Некрасов А | 1h | 1h |
| 2761 | 12.3.9.4 | тэны и термпоры шнеков- прортяжка | 30min | 2024-04-10 09:00 | 2024-04-10 09:30 |  |  |  | 769.53d | start no earlier than 2024-04-10 09:00 | Черепанов И | 0.5h |  |
| 2762 | 12.3.9.5 | Чистка парогенератора | 1h | 2026-07-29 09:00 A | 2026-07-29 10:00 A | 100% |  |  |  | start no earlier than 2026-07-29 08:00 | Бундин В | 1h | 1h |
| 2763 | 12.3.9.6 | вскрытие электородов, чистка (при остановке линии на мойку, если не остановилась, передать по смене Бундину) | 1h | 2026-09-23 09:00 A | 2026-09-23 10:00 A | 100% |  |  |  | start no earlier than 2026-09-23 09:00 | Некрасов А | 1h | 1h |
| 2764 | 12.3.9.7 | вскрытие электородов, чистка (при остановке линии на мойку, если не остановилась, передать по смене Дедову) | 1h | 2026-09-29 09:00 A | 2026-09-29 10:00 A | 100% |  |  |  | start no earlier than 2026-09-29 08:00 | Бундин В; Дедов В | 2h | 2h |
| 2765 | 12.3.9.8 | Чистка парогенератора после остановки | 1h | 2026-10-13 09:00 | 2026-10-13 10:00 |  |  |  | 107.47d | start no earlier than 2026-10-13 08:00 | Бобренок В | 1h |  |
| 2766 | 12.3.9.9 | **шкаф управления экструдером** | 163.03d | 2026-03-11 09:00 A | 2026-10-14 09:15 | 88% | 20.38d |  | 106.56d |  |  | 2h | 1.75h |
| 2767 | 12.3.9.9.1 | протяжка контактов | 30min | 2026-03-11 09:00 A | 2026-03-11 09:30 A | 100% |  |  |  | start no earlier than 2026-03-11 09:00 | Некрасов А | 0.5h | 0.5h |
| 2768 | 12.3.9.9.2 | частотные привода экструдера, ножей, питателя - продувка | 30min | 2026-05-27 09:00 A | 2026-05-27 09:30 A | 100% |  |  |  | start no earlier than 2026-05-27 09:00 | Бундин В | 0.5h | 0.5h |
| 2769 | 12.3.9.9.3 | частотные привода экструдера, ножей, питателя - продувка | 15min | 2026-07-16 09:00 A | 2026-07-16 09:15 A | 100% |  |  |  | start no earlier than 2026-07-16 09:00 | Бобренок В | 0.25h | 0.25h |
| 2770 | 12.3.9.9.4 | частотные привода экструдера, ножей, питателя - продувка | 15min | 2026-07-29 09:00 A | 2026-07-29 09:15 A | 100% |  |  |  | start no earlier than 2026-07-29 08:00 | Труфанов А | 0.25h | 0.25h |
| 2771 | 12.3.9.9.5 | частотные привода экструдера, ножей, питателя - продувка | 15min | 2026-09-23 09:00 A | 2026-09-23 09:15 A | 100% |  |  |  | start no earlier than 2026-09-23 09:00 | Труфанов А | 0.25h | 0.25h |
| 2772 | 12.3.9.9.6 | частотные привода экструдера, ножей, питателя - продувка | 15min | 2026-10-14 09:00 | 2026-10-14 09:15 |  |  |  | 106.56d | start no earlier than 2026-10-14 09:00 | Дедов В | 0.25h |  |

| ID | WBS | Task | Duration | Start | Finish | Complete | Remaining | Total slack | Constraint | Resources | Work | Actual work |
| --- | --- | --- | --- | --- | --- | --- | --- | --- | --- | --- | --- | --- |
| 2773 | 12.3.9.10 | **редуктор экструдера и маслянная станция** | 113.06d | 2026-05-20 09:00 A | 2026-10-14 09:30 | 78% | 25.12d | 106.53d |  |  | 5.5h | 4.5h |
| 2774 | 12.3.9.10.1 | чистка фильтра | 30min | 2026-06-02 09:00 A | 2026-06-02 09:30 A | 100% |  |  | start no earlier than 2026-06-02 09:00 | Тимофеев В | 0.5h | 0.5h |
| 2775 | 12.3.9.10.2 | чистка фильтра | 30min | 2026-05-20 09:00 A | 2026-05-20 09:30 A | 100% |  |  | start no earlier than 2026-05-20 09:00 | Тимофеев В | 0.5h | 0.5h |
| 2776 | 12.3.9.10.3 | муфта редутор-мотор проверка состояния | 30min | 2026-05-27 09:00 A | 2026-05-27 09:30 A | 100% |  |  | start no earlier than 2026-05-27 09:00 | Тимофеев В | 0.5h | 0.5h |
| 2777 | 12.3.9.10.4 | чистка фильтра | 30min | 2026-07-16 09:00 A | 2026-07-16 09:30 A | 100% |  |  | start no earlier than 2026-07-16 09:00 | Бобренок В | 0.5h | 0.5h |
| 2778 | 12.3.9.10.5 | Чистка фильтра | 30min | 2026-07-29 08:00 A | 2026-07-29 09:30 A | 100% |  |  | start no earlier than 2026-07-29 08:00 | Тимофеев В | 0.5h | 0.5h |
| 2779 | 12.3.9.10.6 | Осмотр редуктор-двигатель, нехороший шум, проверить втулки МУВП/заменить | 1h | 2026-09-23 09:00 A | 2026-09-23 10:00 A | 100% |  |  | start no earlier than 2026-09-23 09:00 | Бундин В; Некрасов А | 2h | 2h |
| 2780 | 12.3.9.10.7 | Чистка фильтра/тэны и термопары шнеков - протяжка | 30min | 2026-10-14 09:00 | 2026-10-14 09:30 |  |  | 106.53d | start no earlier than 2026-10-14 09:00 | Дедов В | 0.5h |  |
| 2781 | 12.3.9.10.8 | Чистка фильтра/тэны и термопары шнеков - протяжка | 30min | 2026-10-14 09:00 | 2026-10-14 09:30 |  |  | 106.53d | start no earlier than 2026-10-14 09:00 | Труфанов А | 0.5h |  |
| 2782 | 12.3.9.11 | **блок тэнов сушки - протяжка** | 113.04d? | 2026-05-20 09:00 A | 2026-10-14 09:20 | 65% | 39.72d? | 106.55d |  |  | 12.33h | 8h |
| 2783 | 12.3.9.11.1 | ревизия, замена отгоревших жил, проверка токов | 3h | 2026-05-20 09:00 A | 2026-05-20 12:00 A | 100% |  |  | start no earlier than 2026-05-20 09:00 | Бобренок В | 3h | 3h |
| 2784 | 12.3.9.11.2 | ревизия, замена отгоревших жил, проверка токов | 4h? | 2026-09-11 09:00 | 2026-09-11 13:00 |  |  | 136.09d | start no earlier than 2026-09-11 09:00 | Тимофеев В | 4h |  |
| 2785 | 12.3.9.11.3 | Полное ТО шкафа управления, замена всех отгоревших жил/клемм, протяжка контактов | 5h | 2026-09-23 09:00 A | 2026-09-23 15:00 A | 100% |  |  | start no earlier than 2026-09-23 09:00 | Труфанов А | 5h | 5h |
| 2786 | 12.3.9.11.4 | Ревизия, проверка жил, проверка токов | 20min | 2026-10-14 09:00 | 2026-10-14 09:20 |  |  | 106.55d | start no earlier than 2026-10-14 09:00 | Дедов В | 0.33h |  |
| 2787 | 12.3.9.12 | **шкаф управления тэнами сушки** | 65.03d | 2026-05-20 09:00 A | 2026-08-19 09:15 | 83% | 10.84d | 154.56d |  |  | 1.5h | 1.25h |
| 2788 | 12.3.9.12.1 | протяжка контактов | 15min | 2026-05-20 09:00 A | 2026-05-20 09:15 A | 100% |  |  | start no earlier than 2026-05-20 09:00 | Бобренок В | 0.25h | 0.25h |
| 2789 | 12.3.9.12.2 | замена неисправных жил | 1h | 2026-05-20 09:00 A | 2026-05-20 10:00 A | 100% |  |  | start no earlier than 2026-05-20 09:00 | Бобренок В | 1h | 1h |
| 2790 | 12.3.9.12.3 | ревизия/ проверка токов | 15min | 2026-08-19 09:00 | 2026-08-19 09:15 |  |  | 154.56d | start no earlier than 2026-08-19 09:00 | Некрасов А | 0.25h |  |
| 2791 | 12.3.9.13 | конвейер №1 с печи в дрожировщик прорверка подшипники, реуктор | 30min | 2024-10-04 09:00 A | 2024-10-04 09:30 A | 100% |  |  | start no earlier than 2024-10-04 09:00 | Тимофеев В | 0.5h | 0.5h |
| 2792 | 12.3.9.14 | барабан смесительный дрожировка - прорверка подшипнки , реуктор | 30min | 2024-10-04 09:00 A | 2024-10-04 09:30 A | 100% |  |  | start no earlier than 2024-10-04 09:00 | Тимофеев В | 0.5h | 0.5h |
| 2793 | 12.3.9.15 | конвейер №2 с дрожировки в охладитель - проверка подшипники , редуктор | 30min | 2024-10-04 09:00 A | 2024-10-04 09:30 A | 100% |  |  | start no earlier than 2024-10-04 09:00 | Тимофеев В | 0.5h | 0.5h |
| 2794 | 12.3.9.16 | охладитель сеточный - смазка, натяжка цепи. Проверка редуктор | 1h | 2026-09-23 09:00 A | 2026-09-23 10:00 A | 100% |  |  | start no earlier than 2026-09-23 09:00 | Бундин В; Некрасов А | 2h | 2h |
| 2795 | 12.3.9.17 | вентиляторы обдува сушки | 2h | 2024-06-14 09:00 A | 2024-06-14 11:00 A | 100% |  |  | start no earlier than 2024-06-14 09:00 | ТО_2 | 2h | 2h |
| 2796 | 12.3.9.18 | дозатор сухой гидролизат - разборка, чистка, замена подшипников | 2h | 2026-08-20 09:00 A | 2026-08-20 11:00 A | 100% |  |  | start no earlier than 2026-08-20 09:00 | Макаревич А | 2h | 2h |
| 2797 | 12.3.9.19 | ревизия/ проверка токов/протяжка контактов | 15min | 2026-10-14 09:00 | 2026-10-14 09:15 |  |  | 106.56d | start no earlier than 2026-10-14 09:00 | Дедов В | 0.25h |  |

| ID | WBS | Task | Duration | Start | Finish | Complete | Remaining | Total slack | Constraint | Resources | Work | Actual work |
| --- | --- | --- | --- | --- | --- | --- | --- | --- | --- | --- | --- | --- |
| 2798 | 12.3.9.20 | **Насос гидролизата** | 85.06d | 2026-04-01 09:00 A | 2026-07-29 09:30 A | 100% |  |  |  |  | 1h | 1h |
| 2799 | 12.3.9.20.1 | Дефектовка - проверить подачу, вибрации, посторонние шумы. | 30min | 2026-04-01 09:00 A | 2026-04-01 09:30 A | 100% |  |  | start no earlier than 2026-04-01 09:00 | Тимофеев В | 0.5h | 0.5h |
| 2800 | 12.3.9.20.2 | Дефектовка - проверить подачу, вибрации, посторонние шумы. | 30min | 2026-07-29 08:00 A | 2026-07-29 09:30 A | 100% |  |  | start no earlier than 2026-07-29 08:00 | Тимофеев В | 0.5h | 0.5h |
| 2801 | 12.3.10 | **Квадропак** | 122.12d | 2026-04-22 09:00 A | 2026-09-30 10:00 A | 100% |  |  |  |  | 13.25h | 13.25h |
| 2802 | 12.3.10.1 | Установить дополнительные пружины на дозатор | 1h | 2026-09-30 09:00 A | 2026-09-30 10:00 A | 100% |  |  | start no earlier than 2026-09-30 09:00 | Труфанов А; Некрасов А | 2h | 2h |
| 2803 | 12.3.10.2 | проверить резьбу крепления встряхивателя №1, закрепить | 1h | 2026-06-02 09:00 A | 2026-06-02 10:00 A | 100% |  |  | start no earlier than 2026-06-02 09:00 | Макаревич А | 1h | 1h |
| 2804 | 12.3.10.3 | Замена резинки на воздушном редукторе находящемся под мультиголовой (весы) | 1h | 2026-04-22 09:00 A | 2026-04-22 10:00 A | 100% |  |  | start no earlier than 2026-04-22 09:00 | Бундин В | 1h | 1h |
| 2805 | 12.3.10.4 | ТО узла пайки. Чистка тен/ревизия термоизолятора пневморедуктора | 1h | 2026-05-27 09:00 A | 2026-05-27 10:00 A | 100% |  |  | start no earlier than 2026-05-27 09:00 | Тимофеев В | 1h | 1h |
| 2806 | 12.3.10.5 | ревизия привод встряхивателя | 30min | 2026-05-27 09:00 A | 2026-05-27 09:30 A | 100% |  |  | start no earlier than 2026-05-27 09:00 | Тимофеев В | 0.5h | 0.5h |
| 2807 | 12.3.10.6 | ревизия протяжки кинематики низ / верх | 30min | 2026-05-27 09:00 A | 2026-05-27 09:30 A | 100% |  |  | start no earlier than 2026-05-27 09:00 | Тимофеев В | 0.5h | 0.5h |
| 2808 | 12.3.10.7 | ревизия вакуумный насос | 15min | 2026-05-27 09:00 A | 2026-05-27 09:15 A | 100% |  |  | start no earlier than 2026-05-27 09:00 | Тимофеев В | 0.25h | 0.25h |
| 2809 | 12.3.10.8 | замена вал выход | 4h | 2026-06-15 09:00 A | 2026-06-15 13:00 A | 100% |  |  | start no earlier than 2026-06-15 09:00 | Тимофеев В | 4h | 4h |
| 2810 | 12.3.10.9 | проверить пневмоцилиндр на встряхивателе, если нужно заменить | 1h | 2026-05-20 09:00 A | 2026-05-20 10:00 A | 100% |  |  | start no earlier than 2026-05-20 09:00 | Некрасов А | 1h | 1h |
| 2811 | 12.3.10.10 | Закрепить, подровнять, слесарные работы которые требуются | 1h | 2026-09-30 09:00 A | 2026-09-30 10:00 A | 100% |  |  | start no earlier than 2026-09-30 09:00 | Труфанов А; Некрасов А | 2h | 2h |
| 2812 | 12.3.11 | **Парогенератор** | 6.25d | 2026-06-02 09:00 A | 2026-06-10 11:00 A | 100% |  |  |  |  | 3h | 3h |
| 2813 | 12.3.11.1 | читска парогенератора, если нужно замена электродов | 2h | 2026-06-10 09:00 A | 2026-06-10 11:00 A | 100% |  |  | start no earlier than 2026-06-10 09:00 | Дедов В | 2h | 2h |
| 2814 | 12.3.11.2 | читска парогенератора, если нужно замена электродов | 1h | 2026-06-02 09:00 A | 2026-06-02 10:00 A | 100% |  |  | start no earlier than 2026-06-02 09:00 | Тимофеев В | 1h | 1h |
| 2815 | 12.3.12 | **Дражжировка** | 37.03d | 2026-08-27 09:00 | 2026-10-07 09:15 |  |  |  |  |  | 2.67h |  |
| 2816 | 12.3.12.1 | Проверка подшипников на барабанах | 15min | 2026-08-27 09:00 | 2026-08-27 09:15 |  |  | 148.56d | start no earlier than 2026-08-27 09:00 | Тимофеев В | 0.25h |  |
| 2817 | 12.3.12.2 | Проверка фильтров | 10min | 2026-08-27 09:00 | 2026-08-27 09:10 |  |  | 148.57d | start no earlier than 2026-08-27 09:00 | Тимофеев В | 0.17h |  |
| 2818 | 12.3.12.3 | Ревизия насоса гидролизата | 2h | 2026-08-27 09:00 | 2026-08-27 11:00 |  |  | 148.34d | start no earlier than 2026-08-27 09:00 | Тимофеев В | 2h |  |
| 2819 | 12.3.12.4 | Дефектовка - проверить подачу, вибрации, посторонние шумы/проверка фильтров/насосов/фитингов | 15min | 2026-10-14 09:00 | 2026-10-14 09:15 |  |  | 106.56d | start no earlier than 2026-10-14 09:00 | Дедов В | 0.25h |  |
| 2820 | 12.3.13 | **жиротопка и насос перекачки жира** | 600.03d | 2024-04-10 09:00 A | 2026-07-29 09:15 | 25% | 450.02d | 169.56d |  |  | 1h | 0.25h |
| 2821 | 12.3.13.1 | блок тэнов -протяжка | 30min | 2024-04-10 09:00 | 2024-04-10 09:30 |  |  | 769.53d | start no earlier than 2024-04-10 08:00 | Тимофеев В | 0.5h |  |
| 2822 | 12.3.13.2 | насос, фильтр - осмотр, чистка | 15min | 2024-04-25 09:00 | 2024-04-25 09:15 |  |  | 758.56d | start no earlier than 2024-04-25 09:00 | Тимофеев В | 0.25h |  |
| 2823 | 12.3.13.3 | насос, фильтр - осмотр, чистка | 15min | 2026-07-29 09:00 A | 2026-07-29 09:15 A | 100% |  |  | start no earlier than 2026-07-29 08:00 | Труфанов А | 0.25h | 0.25h |

| ID | WBS | Task | Duration | Start | Finish | Complete | Remaining | Total slack | Constraint | Resources | Work | Actual work |
| --- | --- | --- | --- | --- | --- | --- | --- | --- | --- | --- | --- | --- |
| 2824 | 12.3.14 | **упаковщкики** | 441.25d | 2025-02-14 09:00 A | 2026-10-14 11:00 | 14% | 378.21d | 106.34d |  |  | 30h | 4h |
| 2825 | 12.3.14.1 | упаковщик ТЕКО 0,4кг | 2h | 2025-02-16 09:00 A | 2025-02-17 11:00 A | 100% |  |  | start no earlier than 2025-02-16 09:00 | Дедов В | 2h | 2h |
| 2826 | 12.3.14.2 | упаковщик ТЕКО 0,4кг | 2h | 2026-08-26 09:00 | 2026-08-26 11:00 |  |  | 149.34d | start no earlier than 2026-08-26 09:00 | Тимофеев В | 2h |  |
| 2827 | 12.3.14.3 | упаковщик НОТИС | 2h | 2025-02-17 09:00 | 2025-02-17 11:00 |  |  | 546.34d | start no earlier than 2025-02-16 09:00 | Дедов В | 2h |  |
| 2828 | 12.3.14.4 | упаковщик ТЕКО 1.5кг | 2h | 2025-02-17 09:00 | 2025-02-17 11:00 |  |  | 546.34d | start no earlier than 2025-02-16 09:00 | Дедов В | 2h |  |
| 2829 | 12.3.14.5 | упаковщик КВАДРОПАК | 2h | 2025-02-17 09:00 | 2025-02-17 11:00 |  |  | 546.34d | start no earlier than 2025-02-16 09:00 | Дедов В | 2h |  |
| 2830 | 12.3.14.6 | нория и вибробункер КВАДРОПАК | 2h | 2025-02-17 09:00 | 2025-02-17 11:00 |  |  | 546.34d | start no earlier than 2025-02-16 09:00 | Дедов В | 2h |  |
| 2831 | 12.3.14.7 | запайщик 1 | 2h | 2025-02-17 09:00 | 2025-02-17 11:00 |  |  | 546.34d | start no earlier than 2025-02-17 09:00 | Дедов В | 2h |  |
| 2832 | 12.3.14.8 | запайщик 2 | 2h | 2025-02-17 09:00 | 2025-02-17 11:00 |  |  | 546.34d | start no earlier than 2025-02-17 09:00 | Дедов В | 2h |  |
| 2833 | 12.3.14.9 | конвейер гп ТЕКО 1,5 | 2h | 2025-02-14 09:00 | 2025-02-14 11:00 |  |  | 547.34d | start no earlier than 2025-02-14 09:00 | Макаревич А | 2h |  |
| 2834 | 12.3.14.10 | конвейер гп ТЕКО 0,4 | 2h | 2025-02-14 09:00 | 2025-02-14 11:00 |  |  | 547.34d | start no earlier than 2025-02-14 09:00 | Макаревич А | 2h |  |
| 2835 | 12.3.14.11 | накопительный стол 1,5 | 2h | 2025-02-17 09:00 | 2025-02-17 11:00 |  |  | 546.34d | start no earlier than 2025-02-15 09:00 | Макаревич А | 2h |  |
| 2836 | 12.3.14.12 | накопительный стол 0,4 | 2h | 2025-02-17 09:00 | 2025-02-17 11:00 |  |  | 546.34d | start no earlier than 2025-02-15 09:00 | Макаревич А | 2h |  |
| 2837 | 12.3.14.13 | Осмотр всех упаковщиков/транспортеров/накопительных столов/ всех щитков оборудования | 2h | 2026-07-29 09:00 A | 2026-07-29 11:00 A | 100% |  |  | start no earlier than 2026-07-29 08:00 | Бундин В | 2h | 2h |
| 2838 | 12.3.14.14 | Осмотр всех упаковщиков/транспортеров/накопительных столов/ всех щитков оборудования | 2h | 2026-10-14 09:00 | 2026-10-14 11:00 |  |  | 106.34d | start no earlier than 2026-10-14 09:00 | Тимофеев В; Дедов В | 4h |  |
| 2839 | 12.3.15 | **электрооборудование** | 667.12d? | 2024-04-04 09:00 A | 2026-10-14 10:00 | 11% | 592.01d? | 106.47d |  | ТО | 5769.83h | 676h |
| 2840 | 12.3.15.1 | ВРУ1 | 15min | 2026-05-20 09:00 | 2026-05-20 09:15 |  |  | 219.56d | start no earlier than 2026-05-20 09:00 | ТО; Тимофеев В | 0.5h |  |
| 2841 | 12.3.15.2 | ВРУ2 | 15min | 2026-05-20 09:00 | 2026-05-20 09:15 |  |  | 219.56d | start no earlier than 2026-05-20 09:00 | ТО; Тимофеев В | 0.5h |  |
| 2842 | 12.3.15.3 | ЩР1 экструдер | 15min | 2026-05-20 09:00 | 2026-05-20 09:15 |  |  | 219.56d | start no earlier than 2026-05-20 09:00 | ТО; Тимофеев В | 0.5h |  |
| 2843 | 12.3.15.4 | ЩР2 упаковка №1 | 15min | 2026-05-20 09:00 | 2026-05-20 09:15 |  |  | 219.56d | start no earlier than 2026-05-20 09:00 | ТО; Тимофеев В | 0.5h |  |
| 2844 | 12.3.15.5 | ЩР3 упаковка №2 | 15min | 2026-05-20 09:00 | 2026-05-20 09:15 |  |  | 219.56d | start no earlier than 2026-05-20 09:00 | ТО; Тимофеев В | 0.5h |  |
| 2845 | 12.3.15.6 | ЩР жиротопка и зона жиров | 1h | 2026-05-20 09:00 | 2026-05-20 10:00 |  |  | 219.47d | start no earlier than 2026-05-20 09:00 | ТО; Некрасов А | 2h |  |
| 2846 | 12.3.15.7 | **Компрессор 1 цех** | 100.12d? | 2026-06-07 09:00 A | 2026-10-14 10:00 | 18% | 81.92d? | 106.47d |  | ТО | 756h | 112.4h |
| 2847 | 12.3.15.7.1 | продувка радиаторов осушителя и компрессора, слив конденсата | 1h | 2026-06-07 09:00 A | 2026-06-08 10:00 A | 100% |  |  | start no earlier than 2026-06-07 09:00 | Дедов В | 1h | 1h |
| 2848 | 12.3.15.7.2 | продувка радиаторов осушителя и компрессора, слив конденсата | 1h | 2026-10-14 09:00 | 2026-10-14 10:00 |  |  | 106.47d | start no earlier than 2026-10-14 09:00 | Дедов В | 1h |  |
| 2849 | 12.3.15.7.3 | продувка радиаторов осушителя и компрессора, слив конденсата | 1h | 2026-08-29 09:00 A | 2026-08-31 10:00 A | 100% |  |  | start no earlier than 2026-08-29 09:00 | Дедов В | 1h | 1h |
| 2850 | 12.3.15.7.4 | <Новая задача> | 1d? | 2026-08-28 09:00 | 2026-08-28 18:00 |  |  | 146.59d | start no earlier than 2026-08-28 08:00 |  |  |  |
| 2851 | 12.3.15.8 | осушитель 1 цех | 2h | 2024-04-04 09:00 | 2024-04-04 11:00 |  |  | 773.34d | start no earlier than 2023-12-28 09:00 | ТО | 2h |  |
| 2852 | 12.3.15.9 | осушитель 1 цех/слить конденсат | 30min | 2026-07-29 09:00 | 2026-07-29 09:30 |  |  | 169.53d | start no earlier than 2026-07-29 08:00 | Бундин В | 0.5h |  |
| 2853 | 12.3.15.10 | осушитель 1 цех/слить конденсат | 20min | 2026-10-14 09:00 | 2026-10-14 09:20 |  |  | 106.55d | start no earlier than 2026-10-14 09:00 | Дедов В | 0.33h |  |
| 2854 | 12.3.15.11 | бойлер 1 1 цех раковина | 2h | 2024-04-04 09:00 | 2024-04-04 11:00 |  |  | 773.34d | start no earlier than 2023-12-28 09:00 | ТО | 2h |  |
| 2855 | 12.3.15.12 | бойлер 2 1 цех раковина | 2h | 2024-04-04 09:00 | 2024-04-04 11:00 |  |  | 773.34d | start no earlier than 2023-12-28 09:00 | ТО | 2h |  |
| 2856 | 12.3.15.13 | бойлер 3 1 цех душ | 2h | 2024-04-04 09:00 | 2024-04-04 11:00 |  |  | 773.34d | start no earlier than 2023-12-28 09:00 | ТО | 2h |  |
| 2857 | 12.3.15.14 | насосная станция 1 цех | 2h | 2024-04-04 09:00 | 2024-04-04 11:00 |  |  | 773.34d | start no earlier than 2023-12-28 09:00 | ТО | 2h |  |
| 2858 | 12.3.15.15 | фильтр приточной вентиляции | 2h | 2024-04-04 09:00 | 2024-04-04 11:00 |  |  | 773.34d |  |  |  |  |
| 2859 | 12.3.15.16 | пульт управления вентиляцией, частототные приводы | 2h | 2024-04-04 09:00 | 2024-04-04 11:00 |  |  | 773.34d | start no earlier than 2023-12-28 09:00 | ТО | 2h |  |
| 2860 | 12.3.15.17 | кондиционер 1 продувка фильтров внутр / очистка наруж блок | 30min | 2026-06-02 09:00 A | 2026-06-02 09:30 A | 100% |  |  | start no earlier than 2026-06-02 09:00 | Некрасов А | 0.5h | 0.5h |
| 2861 | 12.3.15.18 | кондиционер 2 продувка фильтров внутр / очистка наруж блок | 30min | 2026-06-02 09:00 A | 2026-06-02 09:30 A | 100% |  |  | start no earlier than 2026-06-02 09:00 | Некрасов А | 0.5h | 0.5h |
| 2862 | 12.3.15.19 | кондиционер 3 продувка фильтров внутр / очистка наруж блок | 30min | 2026-06-02 09:00 A | 2026-06-02 09:30 A | 100% |  |  | start no earlier than 2026-06-02 09:00 | Некрасов А | 0.5h | 0.5h |
| 2863 | 12.3.15.20 | кондиционер 1 продувка фильтров внутр / очистка наруж блок (керхер взять у Мейхера) | 30min | 2026-06-10 09:00 | 2026-06-10 09:30 |  |  | 204.53d | start no earlier than 2026-06-10 09:00 | Некрасов А; Дедов В | 1h |  |
| 2864 | 12.3.15.21 | кондиционер 2 продувка фильтров внутр / очистка наруж блок (керхер взять у Мейхера) | 30min | 2026-06-10 09:00 | 2026-06-10 09:30 |  |  | 204.53d | start no earlier than 2026-06-10 09:00 | Некрасов А; Дедов В | 1h |  |
| 2865 | 12.3.15.22 | кондиционер 3 продувка фильтров внутр / очистка наруж блок (керхер взять у Мейхера) | 30min | 2026-06-10 09:00 | 2026-06-10 09:30 |  |  | 204.53d | start no earlier than 2026-06-10 09:00 | Некрасов А; Дедов В | 1h |  |
| 2866 | 12.3.16 | электроштабелер упаковка | 2h | 2023-12-28 09:00 | 2023-12-28 11:00 |  |  | 843.34d | start no earlier than 2023-12-28 09:00 | ТО | 2h |  |
| 2867 | 12.3.17 | электроштабелер навески | 2h | 2023-12-28 09:00 | 2023-12-28 11:00 |  |  | 843.34d | start no earlier than 2023-12-28 09:00 | ТО | 2h |  |

| ID | WBS | Task | Duration | Start | Finish | Complete | Remaining | Total slack | Constraint | Resources | Work | Actual work |
| --- | --- | --- | --- | --- | --- | --- | --- | --- | --- | --- | --- | --- |
| 2868 | 12.3.18 | **Квадропак** | 0.12d | 2026-10-07 09:00 | 2026-10-07 10:00 |  |  | 111.47d |  |  | 1h |  |
| 2869 | 12.3.18.1 | Смазка качающихся шарниров подачи пакета и сброса | 1h | 2026-10-07 09:00 | 2026-10-07 10:00 |  |  | 111.47d | start no earlier than 2026-10-07 09:00 | Тимофеев В | 1h |  |
| 2870 | 12.4 | **2 цех** | 772.25d? | 2023-12-28 09:00 A | 2026-12-01 11:00 | 67% | 258.53d? | 71.34d |  |  | 18555.2h | 15478.2h |
| 2871 | 12.4.1 | обдув пыли с вентиляции и балки кровли зона жир + экструдер + упаковка | 3h | 2026-08-20 09:00 A | 2026-08-20 12:00 A | 100% |  |  | start no earlier than 2026-08-20 09:00 | Некрасов А; Тимофеев В | 6h | 6h |
| 2872 | 12.4.2 | **прекондицинер экструдера** | 664.5d? | 2024-04-18 09:00 A | 2026-10-22 13:00 | 83% | 115.83d? | 99.09d |  |  | 31.25h | 22.5h |
| 2873 | 12.4.2.1 | замена заднего подшипника ведомый вал | 8h | 2026-05-26 09:00 A | 2026-05-26 18:00 A | 100% |  |  | start no earlier than 2026-05-26 09:00 | Тимофеев В | 8h | 8h |
| 2874 | 12.4.2.2 | замена подшипников | 1h | 2024-04-18 09:00 A | 2024-04-18 10:00 A | 100% |  |  | start no earlier than 2024-04-18 08:00 | Тимофеев В | 1h | 1h |
| 2875 | 12.4.2.3 | Ревизия масла редуктора | 30min | 2024-04-18 09:00 A | 2024-04-18 09:30 A | 100% |  |  | start no earlier than 2024-04-18 08:00 | Тимофеев В | 0.5h | 0.5h |
| 2876 | 12.4.2.4 | контроль крепления лопаток | 30min | 2026-05-21 09:00 A | 2026-05-21 09:30 A | 100% |  |  | start no earlier than 2026-03-05 09:00 | Тимофеев В | 0.5h | 0.5h |
| 2877 | 12.4.2.5 | шприцевание подшипников | 1h | 2026-05-21 08:00 A | 2026-05-21 10:00 A | 100% |  |  | start no earlier than 2026-05-21 08:00 | Тимофеев В | 1h | 1h |
| 2878 | 12.4.2.6 | Ревизия масла редуктора | 15min | 2026-07-21 09:00 A | 2026-07-21 09:15 A | 100% |  |  | start no earlier than 2026-07-21 09:00 | Труфанов А | 0.25h | 0.25h |
| 2879 | 12.4.2.7 | шприцевание подшипников | 30min | 2026-07-21 09:00 A | 2026-07-21 09:30 A | 100% |  |  | start no earlier than 2026-07-21 09:00 | Труфанов А | 0.5h | 0.5h |
| 2880 | 12.4.2.8 | Осмотр подшипников | 15min | 2026-07-30 09:00 A | 2026-07-30 09:15 A | 100% |  |  | start no earlier than 2026-07-30 09:00 | Тимофеев В | 0.25h | 0.25h |
| 2881 | 12.4.2.9 | Осмотр подшипников | 1d? | 2026-08-06 09:00 A | 2026-08-06 18:00 A | 100% |  |  | start no earlier than 2026-08-06 09:00 | Бундин В | 8h | 8h |
| 2882 | 12.4.2.10 | Осмотр подшипников / смазка / по необходимости замена | 1h | 2026-08-13 09:00 A | 2026-08-13 10:00 A | 100% |  |  | start no earlier than 2026-08-13 09:00 | Некрасов А | 1h | 1h |
| 2883 | 12.4.2.11 | Осмотр подшипников / смазка | 15min | 2026-08-20 09:00 A | 2026-08-20 09:15 A | 100% |  |  | start no earlier than 2026-08-20 09:00 | Некрасов А | 0.25h | 0.25h |
| 2884 | 12.4.2.12 | Замена водяного фильтра на прекондиционере/парогенератор | 15min | 2026-09-03 09:00 A | 2026-09-03 09:15 A | 100% |  |  | start no earlier than 2026-09-03 09:00 | Труфанов А | 0.25h | 0.25h |
| 2885 | 12.4.2.13 | Осмотр подшипников / смазка | 15min | 2026-09-17 09:00 A | 2026-09-17 09:15 A | 100% |  |  | start no earlier than 2026-09-17 09:00 | Некрасов А | 0.25h | 0.25h |
| 2886 | 12.4.2.14 | Осмотр подшипников / смазка | 15min | 2026-09-24 09:00 A | 2026-09-24 09:15 A | 100% |  |  | start no earlier than 2026-09-24 09:00 | Некрасов А | 0.25h | 0.25h |
| 2887 | 12.4.2.15 | Ревизия масла редуктора | 15min | 2026-09-24 09:00 A | 2026-09-24 09:15 A | 100% |  |  | start no earlier than 2026-09-24 09:00 | Некрасов А | 0.25h | 0.25h |
| 2888 | 12.4.2.16 | Ревизия масла редуктора/осмотр подшипников/ смазка при необходимости | 15min | 2026-09-29 09:00 A | 2026-09-29 09:15 A | 100% |  |  | start no earlier than 2026-09-29 08:00 | Бундин В | 0.25h | 0.25h |
| 2889 | 12.4.2.17 | Замена редуктора прекондиционера | 4h | 2026-10-22 09:00 | 2026-10-22 13:00 |  |  | 99.09d | start no earlier than 2026-10-22 09:00 | Труфанов А; Некрасов А | 8h |  |
| 2890 | 12.4.2.18 | Ревизия масла редуктора/осмотр подшипников/ смазка при необходимости | 15min | 2026-10-15 09:00 | 2026-10-15 09:15 |  |  | 105.56d | start no earlier than 2026-10-15 09:00 | Труфанов А | 0.25h |  |
| 2891 | 12.4.2.19 | Контроль крепления лопаток | 30min | 2026-10-15 09:00 | 2026-10-15 09:30 |  |  | 105.53d | start no earlier than 2026-10-15 09:00 | Труфанов А | 0.5h |  |

| ID | WBS | Task | Duration | Start | Finish | Predecessors | Complete | Remaining | Total slack | Constraint | Resources | Work | Actual work |
| --- | --- | --- | --- | --- | --- | --- | --- | --- | --- | --- | --- | --- | --- |
| 2892 | 12.4.3 | **парогенератор** | 657d | 2024-04-18 10:00 A | 2026-10-14 10:00 |  | 95% | 31.29d | 106.47d |  |  | 22.5h | 21.5h |
| 2893 | 12.4.3.1 | читска | 1h | 2024-04-18 10:00 A | 2024-04-18 11:00 A |  | 100% |  |  | start no earlier than 2024-04-18 08:00 | Тимофеев В | 1h | 1h |
| 2894 | 12.4.3.2 | замена гильзы | 1h | 2024-04-18 10:00 A | 2024-04-18 11:00 A |  | 100% |  |  | start no earlier than 2024-04-18 08:00 | Тимофеев В | 1h | 1h |
| 2895 | 12.4.3.3 | чистка | 2h | 2026-03-05 09:30 A | 2026-03-05 11:30 A |  | 100% |  |  | start no earlier than 2026-03-04 09:00 | Бундин В | 2h | 2h |
| 2896 | 12.4.3.4 | прорвеп срабатывания защитного клапана | 10min | 2026-03-05 09:30 A | 2026-03-05 09:40 A |  | 100% |  |  | start no earlier than 2024-10-03 09:00 | Бундин В | 0.17h | 0.17h |
| 2897 | 12.4.3.5 | читска | 1h | 2026-03-19 09:00 A | 2026-03-19 10:00 A |  | 100% |  |  | start no earlier than 2026-03-19 09:00 | Тимофеев В | 1h | 1h |
| 2898 | 12.4.3.6 | чистка | 1h | 2026-03-12 09:00 A | 2026-03-12 10:00 A |  | 100% |  |  | start no earlier than 2026-03-12 09:00 | Бундин В; Тимофеев В | 2h | 2h |
| 2899 | 12.4.3.7 | чистка | 1h | 2026-05-14 09:00 A | 2026-05-14 10:00 A |  | 100% |  |  | start no earlier than 2026-05-14 09:00 | Некрасов А | 1h | 1h |
| 2900 | 12.4.3.8 | чистка | 2h | 2026-07-14 09:00 A | 2026-07-14 11:00 A |  | 100% |  |  | start no earlier than 2026-07-14 09:00 | Некрасов А | 2h | 2h |
| 2901 | 12.4.3.9 | Чистка | 1h | 2026-07-30 09:00 A | 2026-07-30 10:00 A |  | 100% |  |  | start no earlier than 2026-07-30 09:00 | Бундин В | 1h | 1h |
| 2902 | 12.4.3.10 | Чистка | 1h | 2026-08-06 09:00 A | 2026-08-06 10:00 A |  | 100% |  |  | start no earlier than 2026-08-06 09:00 | Тимофеев В | 1h | 1h |
| 2903 | 12.4.3.11 | Чистка | 1h | 2026-08-13 09:00 A | 2026-08-13 10:00 A |  | 100% |  |  | start no earlier than 2026-08-13 09:00 | Некрасов А | 1h | 1h |
| 2904 | 12.4.3.12 | Чистка | 1h | 2026-08-19 09:00 A | 2026-08-19 10:00 A |  | 100% |  |  | start no earlier than 2026-08-19 09:00 | Некрасов А | 1h | 1h |
| 2905 | 12.4.3.13 | Чистка | 1h | 2026-09-02 08:00 A | 2026-09-02 10:00 A |  | 100% |  |  | start no earlier than 2026-09-02 08:00 | Бобренок В | 1h | 1h |
| 2906 | 12.4.3.14 | Убрать грязь с парогенератора, привести в порядок внешний вид, где что отлеплено, прилепить | 20min | 2026-09-03 09:00 A | 2026-09-03 09:20 A |  | 100% |  |  | start no earlier than 2026-09-03 09:00 | Тимофеев В | 0.33h | 0.33h |
| 2907 | 12.4.3.15 | Чистка | 1h | 2026-09-09 09:00 A | 2026-09-09 10:00 A |  | 100% |  |  | start no earlier than 2026-09-09 08:00 | Тимофеев В | 1h | 1h |
| 2908 | 12.4.3.16 | Чистка | 1h | 2026-09-17 09:00 A | 2026-09-17 10:00 A |  | 100% |  |  | start no earlier than 2026-09-17 09:00 | Тимофеев В | 1h | 1h |
| 2909 | 12.4.3.17 | Чистка | 1h | 2026-09-23 09:00 A | 2026-09-23 10:00 A |  | 100% |  |  | start no earlier than 2026-09-23 09:00 | Дедов В | 1h | 1h |
| 2910 | 12.4.3.18 | Чистка | 1h | 2026-09-29 09:00 A | 2026-09-29 10:00 A |  | 100% |  |  | start no earlier than 2026-09-29 08:00 |  |  |  |
| 2911 | 12.4.3.19 | Чистка как остановятся, если не получится, передать по смене труфанову | 1h | 2026-10-14 09:00 | 2026-10-14 10:00 |  |  |  | 106.47d | start no earlier than 2026-10-14 09:00 | Бобренок В | 1h |  |
| 2912 | 12.4.3.20 | Устранить травление пара между сбросником (клапан) и краном | 30min | 2026-10-08 09:00 A | 2026-10-08 09:30 A |  | 100% |  |  | start no earlier than 2026-10-08 09:00 | Труфанов А; Некрасов А | 1h | 1h |
| 2913 | 12.4.3.21 | Проверить гофротрубу на травление под площадкой, где стоит система из кранов/устранить/заменить | 1h | 2026-10-08 09:00 A | 2026-10-08 10:00 A |  | 100% |  |  | start no earlier than 2026-10-08 09:00 | Труфанов А; Некрасов А | 2h | 2h |
| 2914 | 12.4.4 | **привод сетки ПЕЧИ сушки** | 692.25d | 2024-04-18 08:00 A | 2026-12-01 11:00 |  | 74% | 183.24d | 71.34d |  |  | 13.33h | 8.33h |
| 2915 | 12.4.4.1 | прорверка масла редуктор / натяжка цепи/ ремень | 30min | 2024-04-18 08:00 A | 2024-04-18 09:30 A |  | 100% |  |  | start no earlier than 2024-04-18 08:00 | Тимофеев В | 0.5h | 0.5h |
| 2916 | 12.4.4.2 | прорверка масла редуктор / натяжка цепи/ ремень | 30min | 2026-03-05 09:00 A | 2026-03-05 09:30 A |  | 100% |  |  | start no earlier than 2026-03-05 09:00 | Тимофеев В | 0.5h | 0.5h |
| 2917 | 12.4.4.3 | прорверка масла редуктор / натяжка цепи/ ремень | 30min | 2026-03-19 09:00 A | 2026-03-19 09:30 A |  | 100% |  |  | start no earlier than 2026-03-19 09:00 | Тимофеев В | 0.5h | 0.5h |
| 2918 | 12.4.4.4 | прорверка масла редуктор / натяжка цепи/ ремень/осмотр сетки | 30min | 2026-07-14 09:00 A | 2026-07-14 09:30 A |  | 100% |  |  | start no earlier than 2026-07-14 09:00 | Труфанов А | 0.5h | 0.5h |
| 2919 | 12.4.4.5 | прорверка масла редуктор / натяжка цепи/ ремень/осмотр сетки | 30min | 2026-07-30 09:00 A | 2026-07-30 09:30 A |  | 100% |  |  | start no earlier than 2026-07-30 09:00 | Труфанов А | 0.5h | 0.5h |
| 2920 | 12.4.4.6 | прорверка масла редуктор / натяжка цепи/ ремень/осмотр сетки | 20min | 2026-08-13 09:00 A | 2026-08-13 09:20 A |  | 100% |  |  | start no earlier than 2026-08-13 09:00 | Некрасов А | 0.33h | 0.33h |
| 2921 | 12.4.4.7 | прорверка масла редуктор / натяжка цепи/ ремень/осмотр сетки | 20min | 2026-08-20 09:00 A | 2026-08-20 09:20 A |  | 100% |  |  | start no earlier than 2026-08-20 09:00 | Некрасов А | 0.33h | 0.33h |
| 2922 | 12.4.4.8 | прорверка масла редуктор / натяжка цепи/ ремень/осмотр сетки | 20min | 2026-08-20 09:00 A | 2026-08-20 09:20 A |  | 100% |  |  | start no earlier than 2026-08-20 09:00 | Некрасов А | 0.33h | 0.33h |
| 2923 | 12.4.4.9 | прорверка масла редуктор / натяжка цепи/ ремень/осмотр сетки | 20min | 2026-09-09 09:00 A | 2026-09-09 09:20 A |  | 100% |  |  | start no earlier than 2026-09-09 08:00 | Бобренок В | 0.33h | 0.33h |
| 2924 | 12.4.4.10 | ремонт шестерни привода - наварить | 1h | 2026-09-16 09:00 A | 2026-09-16 10:00 A |  | 100% |  |  | start no earlier than 2026-09-16 09:00 | Бундин В | 1h | 1h |
| 2925 | 12.4.4.11 | смазка цепей пищ смазкой | 1h | 2026-09-16 09:00 A | 2026-09-16 10:00 A |  | 100% |  |  | start no earlier than 2026-09-16 09:00 | Бобренок В | 1h | 1h |
| 2926 | 12.4.4.12 | Снятие шестерен привода (отнести домоводову) | 2h | 2026-09-17 09:00 A | 2026-09-17 11:00 A |  | 100% |  |  | start no earlier than 2026-09-17 09:00 | Труфанов А | 2h | 2h |
| 2927 | 12.4.4.13 | смазка цепей пищ смазкой по графику 3 мес | 1h | 2026-12-01 10:00 | 2026-12-01 11:00 | 2925FS+3mo |  |  | 71.34d | start no earlier than 2026-09-16 09:00 | Бобренок В | 1h |  |
| 2928 | 12.4.4.14 | прорверка масла редуктор / натяжка цепи/ ремень/осмотр сетки | 30min | 2026-10-08 09:00 A | 2026-10-08 09:30 A |  | 100% |  |  | start no earlier than 2026-10-08 09:00 | Дедов В | 0.5h | 0.5h |
| 2929 | 12.4.4.15 | Замена шестерен привода | 2h | 2026-10-15 09:00 | 2026-10-15 11:00 |  |  |  | 105.34d | start no earlier than 2026-10-15 09:00 | Труфанов А; Некрасов А | 4h |  |

| ID | WBS | Task | Duration | Start | Finish | Complete | Remaining | Total slack | Constraint | Resources | Work | Actual work |
| --- | --- | --- | --- | --- | --- | --- | --- | --- | --- | --- | --- | --- |
| 2930 | 12.4.5 | **блок тэнов сушки** | 658.12d | 2024-04-18 08:00 A | 2026-10-15 10:00 | 89% | 73.12d | 105.47d |  |  | 13h | 12h |
| 2931 | 12.4.5.1 | вскрыть все блоки | 1h | 2024-04-18 08:00 A | 2024-04-18 10:00 A | 100% |  |  | start no earlier than 2024-04-18 08:00 | Тимофеев В | 1h | 1h |
| 2932 | 12.4.5.2 | ревизия / замена критичных | 4h | 2024-04-18 09:00 A | 2024-04-18 13:00 A | 100% |  |  | start no earlier than 2024-04-18 08:00 | Некрасов А; Черепанов И | 8h | 8h |
| 2933 | 12.4.5.3 | ревизия | 1h | 2026-03-19 09:00 A | 2026-03-19 10:00 A | 100% |  |  | start no earlier than 2026-03-19 09:00 | Бундин В | 1h | 1h |
| 2934 | 12.4.5.4 | ревизия | 1h | 2026-05-14 09:00 A | 2026-05-14 10:00 A | 100% |  |  | start no earlier than 2026-05-14 09:00 | Труфанов А | 1h | 1h |
| 2935 | 12.4.5.5 | ревизия перемычек | 1h | 2026-08-13 09:00 A | 2026-08-13 10:00 A | 100% |  |  | start no earlier than 2026-08-13 09:00 | Некрасов А | 1h | 1h |
| 2936 | 12.4.5.6 | ревизия перемычек | 1h | 2026-10-15 09:00 | 2026-10-15 10:00 |  |  | 105.47d | start no earlier than 2026-10-15 09:00 | Дедов В | 1h |  |
| 2937 | 12.4.6 | **смеситель СМ-1500** | 168.02d | 2026-03-05 09:00 A | 2026-10-15 09:10 | 98% | 3.73d | 105.57d |  |  | 7.5h | 7.33h |
| 2938 | 12.4.6.1 | контроль масла | 15min | 2026-03-05 09:00 A | 2026-03-05 09:15 A | 100% |  |  | start no earlier than 2026-03-05 09:00 | Тимофеев В | 0.25h | 0.25h |
| 2939 | 12.4.6.2 | контроль масла | 15min | 2026-03-05 09:00 A | 2026-03-05 09:15 A | 100% |  |  | start no earlier than 2026-03-05 09:00 | Некрасов А | 0.25h | 0.25h |
| 2940 | 12.4.6.3 | замена сальника | 4h | 2026-04-16 09:00 A | 2026-04-16 13:00 A | 100% |  |  | start no earlier than 2026-04-16 09:00 | Тимофеев В | 4h | 4h |
| 2941 | 12.4.6.4 | контроль масла | 15min | 2026-07-30 09:00 A | 2026-07-30 09:15 A | 100% |  |  | start no earlier than 2026-07-30 09:00 | Тимофеев В | 0.25h | 0.25h |
| 2942 | 12.4.6.5 | ревизия подшипникой красного смесителя, просыпается мука со стороны редуктора | 1h | 2026-08-13 09:00 A | 2026-08-13 10:00 A | 100% |  |  | start no earlier than 2026-08-13 09:00 | Тимофеев В | 1h | 1h |
| 2943 | 12.4.6.6 | ревизия подшипникой красного смесителя, просыпается мука со стороны редуктора | 1h | 2026-08-27 09:00 A | 2026-08-27 10:00 A | 100% |  |  | start no earlier than 2026-08-27 09:00 | Тимофеев В | 1h | 1h |
| 2944 | 12.4.6.7 | контроль масла | 15min | 2026-09-03 09:00 A | 2026-09-03 09:15 A | 100% |  |  | start no earlier than 2026-09-03 09:00 | Тимофеев В | 0.25h | 0.25h |
| 2945 | 12.4.6.8 | контроль масла | 10min | 2026-09-09 09:00 A | 2026-09-09 09:10 A | 100% |  |  | start no earlier than 2026-09-09 08:00 | Бобренок В | 0.17h | 0.17h |
| 2946 | 12.4.6.9 | Осмотр подшипников/контроль масла | 10min | 2026-09-29 09:00 A | 2026-09-29 09:10 A | 100% |  |  | start no earlier than 2026-09-29 09:00 | Бундин В | 0.17h | 0.17h |
| 2947 | 12.4.6.10 | Осмотр подшипников/контроль масла | 10min | 2026-10-15 09:00 | 2026-10-15 09:10 |  |  | 105.57d | start no earlier than 2026-10-15 09:00 | Некрасов | 0.17h |  |
| 2948 | 12.4.7 | **нория 2 выгрузки смесителя** | 168.06d | 2026-03-05 09:00 A | 2026-10-15 09:30 | 96% | 6.68d | 105.53d |  | ТО | 70.58h | 67.52h |
| 2949 | 12.4.7.1 | смазка подшипников | 30min | 2026-03-05 09:00 A | 2026-03-05 09:30 A | 100% |  |  | start no earlier than 2026-03-05 09:00 | Бундин В | 0.5h | 0.5h |
| 2950 | 12.4.7.2 | Осмотр подшипников/смазка по необходимости | 30min | 2026-07-30 09:00 A | 2026-07-30 09:30 A | 100% |  |  | start no earlier than 2026-07-30 09:00 | Бундин В | 0.5h | 0.5h |
| 2951 | 12.4.7.3 | ревизия крепления редуктора | 15min | 2026-03-05 09:00 A | 2026-03-05 09:15 A | 100% |  |  | start no earlier than 2026-03-05 09:00 | Бундин В | 0.25h | 0.25h |
| 2952 | 12.4.7.4 | ревизия ленты, обрезать нитки | 4h | 2026-03-26 09:00 A | 2026-03-26 13:00 A | 100% |  |  | start no earlier than 2026-03-26 09:00 | Тимофеев В | 4h | 4h |
| 2953 | 12.4.7.5 | вскрыть для чистки | 10min | 2026-05-19 09:00 A | 2026-05-19 09:10 A | 100% |  |  | start no earlier than 2026-05-21 09:00 | Труфанов А | 0.17h | 0.17h |
| 2954 | 12.4.7.6 | Вскрыть, осмотреть ленту (держится на одном ковше, закрепили на доп болты) | 30min | 2026-09-03 09:00 A | 2026-09-03 09:30 A | 100% |  |  | start no earlier than 2026-09-03 09:00 | Тимофеев В | 0.5h | 0.5h |
| 2955 | 12.4.7.7 | вскрыть для чистки, осмотреть ленту, закрыить после чистки | 10min | 2026-08-13 09:00 A | 2026-08-13 09:10 A | 100% |  |  | start no earlier than 2026-08-13 09:00 | Труфанов А | 0.17h | 0.17h |
| 2956 | 12.4.7.8 | Ревизия ленты, контроль соединения | 30min | 2026-09-17 09:00 A | 2026-09-17 09:30 A | 100% |  |  | start no earlier than 2026-09-17 09:00 | Тимофеев В | 0.5h | 0.5h |
| 2957 | 12.4.7.9 | ремонт стыка ленты - ревитзия, ремонт продлить | 4h | 2026-09-24 09:00 A | 2026-09-24 13:00 A | 100% |  |  | start no earlier than 2026-09-24 09:00 | Тимофеев В; Бундин В | 8h | 8h |
| 2958 | 12.4.7.10 | Ревизия ленты, контроль соединения | 30min | 2026-10-08 09:00 A | 2026-10-08 09:30 A | 100% |  |  | start no earlier than 2026-10-08 09:00 | Труфанов А; Некрасов А | 1h | 1h |
| 2959 | 12.4.7.11 | Проверка мотор редуктора на верху, почему трясет/устранить | 1h | 2026-10-08 09:00 A | 2026-10-08 10:00 A | 100% |  |  | start no earlier than 2026-10-08 09:00 | Труфанов А; Некрасов А | 2h | 2h |
| 2960 | 12.4.7.12 | Ревизия ленты, контроль соединения | 30min | 2026-10-15 09:00 | 2026-10-15 09:30 |  |  | 105.53d | start no earlier than 2026-10-15 09:00 | Труфанов А; Некрасов А | 1h |  |

| ID | WBS | Task | Duration | Start | Finish | Complete | Remaining | Total slack | Constraint | Resources | Work | Actual work |
| --- | --- | --- | --- | --- | --- | --- | --- | --- | --- | --- | --- | --- |
| 2961 | 12.4.8 | **бункер-накопитель с шнековой разкгрузкой синий** | 118.01d | 2026-05-14 09:00 A | 2026-10-15 09:05 | 98% | 1.9d | 105.58d |  |  | 10.33h | 10.17h |
| 2962 | 12.4.8.1 | смазка подшипников, ревизия редуктора (нужно разбирать все для смазки). Задний | 4h | 2026-05-14 09:00 A | 2026-05-14 13:00 A | 100% |  |  | start no earlier than 2026-05-14 09:00 | Тимофеев В | 4h | 4h |
| 2963 | 12.4.8.2 | смазка подшипников, ревизия редуктора (нужно разбирать все для смазки). Передний | 4h | 2026-05-28 09:00 A | 2026-05-28 13:00 A | 100% |  |  | start no earlier than 2026-05-28 09:00 | Бундин В | 4h | 4h |
| 2964 | 12.4.8.3 | Осмотр редуктора со стороны мойки, скрипит | 1h | 2026-08-13 09:00 A | 2026-08-13 10:00 A | 100% |  |  | start no earlier than 2026-08-13 09:00 | Тимофеев В | 1h | 1h |
| 2965 | 12.4.8.4 | Осмотр | 5min | 2026-09-03 09:00 A | 2026-09-03 09:05 A | 100% |  |  | start no earlier than 2026-09-03 09:00 | Тимофеев В | 0.08h | 0.08h |
| 2966 | 12.4.8.5 | перенос датчика / доработать лопатки - что бы останавливался раньше, без спресовывания шнеком | 1h | 2026-09-24 09:00 A | 2026-09-24 10:00 A | 100% |  |  | start no earlier than 2026-09-24 09:00 | Труфанов А | 1h | 1h |
| 2967 | 12.4.8.6 | Осмотр | 5min | 2026-09-24 09:00 A | 2026-09-24 09:05 A | 100% |  |  | start no earlier than 2026-09-24 09:00 | Труфанов А | 0.08h | 0.08h |
| 2968 | 12.4.8.7 | Осмотр | 5min | 2026-10-08 09:00 | 2026-10-08 09:05 |  |  | 110.58d | start no earlier than 2026-10-08 09:00 | Дедов В | 0.08h |  |
| 2969 | 12.4.8.8 | Осмотр | 5min | 2026-10-15 09:00 | 2026-10-15 09:05 |  |  | 105.58d | start no earlier than 2026-10-15 09:00 | Труфанов А | 0.08h |  |
| 2970 | 12.4.9 | **питатель экструдера** | 153.12d | 2026-03-26 09:00 A | 2026-10-15 10:00 | 95% | 8.06d | 105.47d |  |  | 23h | 22h |
| 2971 | 12.4.9.1 | замена сальников питателя, сыпит муку | 4h | 2026-07-22 09:00 A | 2026-07-22 13:00 A | 100% |  |  | start no earlier than 2026-07-22 09:00 | Труфанов А | 4h | 4h |
| 2972 | 12.4.9.2 | ревизия подшипников, редутора, привода. Разборка/сборка (нужно разбирать) | 1h | 2026-03-26 09:00 A | 2026-03-26 10:00 A | 100% |  |  | start no earlier than 2026-03-26 09:00 | Тимофеев В | 1h | 1h |
| 2973 | 12.4.9.3 | ревизия подшипников, редутора, привода. Разборка/сборка (нужно разбирать) | 1h | 2026-08-19 09:00 A | 2026-08-19 10:00 A | 100% |  |  | start no earlier than 2026-08-19 09:00 | Тимофеев В | 1h | 1h |
| 2974 | 12.4.9.4 | замена шетсерен и подшипников узла. Поставили новый комплект | 4h | 2026-04-03 08:00 A | 2026-04-03 13:00 A | 100% |  |  | start no earlier than 2026-04-03 08:00 | Тимофеев В | 4h | 4h |
| 2975 | 12.4.9.5 | ревизия шестерни мал редуктора | 1h | 2026-04-16 09:00 A | 2026-04-16 10:00 A | 100% |  |  | start no earlier than 2026-04-16 09:00 | Тимофеев В | 1h | 1h |
| 2976 | 12.4.9.6 | ревизия шестерни мал редуктора | 2h | 2026-08-13 09:00 A | 2026-08-13 11:00 A | 100% |  |  | start no earlier than 2026-08-13 09:00 | Некрасов А; Зорькин В | 4h | 4h |
| 2977 | 12.4.9.7 | ревизия шестерни мал редуктора | 2h | 2026-08-27 09:00 A | 2026-08-27 11:00 A | 100% |  |  | start no earlier than 2026-08-27 09:00 | Некрасов А; Зорькин В | 4h | 4h |
| 2978 | 12.4.9.8 | ревизия шестерен питателя | 1h | 2026-09-03 09:00 A | 2026-09-03 10:00 A | 100% |  |  | start no earlier than 2026-09-03 09:00 | Некрасов А | 1h | 1h |
| 2979 | 12.4.9.9 | Ревизия шестерен и подшипников | 1h | 2026-09-17 09:00 A | 2026-09-17 10:00 A | 100% |  |  | start no earlier than 2026-09-17 09:00 | Тимофеев В | 1h | 1h |
| 2980 | 12.4.9.10 | Ревизия шестерен и подшипников | 1h | 2026-09-29 09:00 A | 2026-09-29 10:00 A | 100% |  |  | start no earlier than 2026-09-29 09:00 | Бундин В | 1h | 1h |
| 2981 | 12.4.9.11 | Ревизия шестерен и подшипников | 1h | 2026-10-15 09:00 | 2026-10-15 10:00 |  |  | 105.47d | start no earlier than 2026-10-15 09:00 | Труфанов А | 1h |  |
| 2982 | 12.4.10 | **привод прекондиционера** | 168.04d | 2026-03-05 09:00 A | 2026-10-15 09:20 | 95% | 8.62d | 105.55d |  |  | 10.83h | 10.5h |
| 2983 | 12.4.10.1 | проверка масла | 5min | 2026-03-05 09:00 A | 2026-03-05 09:05 A | 100% |  |  | start no earlier than 2026-03-05 09:00 | Тимофеев В | 0.08h | 0.08h |
| 2984 | 12.4.10.2 | контроль крепления шестерен | 5min | 2026-03-05 09:00 A | 2026-03-05 09:05 A | 100% |  |  | start no earlier than 2026-03-05 09:00 | Тимофеев В | 0.08h | 0.08h |
| 2985 | 12.4.10.3 | ревизия подшипников и стопорных винтов | 30min | 2026-03-05 09:00 A | 2026-03-05 09:30 A | 100% |  |  | start no earlier than 2026-03-05 09:00 | Бундин В | 0.5h | 0.5h |
| 2986 | 12.4.10.4 | Осмотр шестерён(стоит звон), подшипников, сальников | 30min | 2026-09-03 09:00 A | 2026-09-03 09:30 A | 100% |  |  | start no earlier than 2026-09-03 09:00 | Тимофеев В | 0.5h | 0.5h |
| 2987 | 12.4.10.5 | Замена подшипников кореных и передних | 4h | 2026-09-09 09:00 A | 2026-09-09 13:00 A | 100% |  |  | start no earlier than 2026-09-09 08:00 | Труфанов А; Некрасов А | 8h | 8h |
| 2988 | 12.4.10.6 | Осмотр подшипников, муфты, шестерен | 20min | 2026-09-17 09:00 A | 2026-09-17 09:20 A | 100% |  |  | start no earlier than 2026-09-17 09:00 | Некрасов А | 0.33h | 0.33h |
| 2989 | 12.4.10.7 | Осмотр подшипников, муфты, шестерен | 20min | 2026-09-29 09:00 A | 2026-09-29 09:20 A | 100% |  |  | start no earlier than 2026-09-29 08:00 | Бундин В | 0.33h | 0.33h |
| 2990 | 12.4.10.8 | Осмотр подшипников, муфты, шестерен | 10min | 2026-10-08 09:00 A | 2026-10-08 09:10 A | 100% |  |  | start no earlier than 2026-10-08 09:00 | Труфанов А; Некрасов А | 0.33h | 0.33h |
| 2991 | 12.4.10.9 | Поставить защитный кожух | 10min | 2026-10-08 09:00 A | 2026-10-08 09:10 A | 100% |  |  | start no earlier than 2026-10-08 09:00 | Труфанов А; Некрасов А | 0.33h | 0.33h |
| 2992 | 12.4.10.10 | Осмотр подшипников, муфты, шестерен | 20min | 2026-10-15 09:00 | 2026-10-15 09:20 |  |  | 105.55d | start no earlier than 2026-10-15 09:00 | Труфанов А | 0.33h |  |

| ID | WBS | Task | Duration | Start | Finish | Predecessors | Complete | Remaining | Total slack | Constraint | Resources | Work | Actual work |
| --- | --- | --- | --- | --- | --- | --- | --- | --- | --- | --- | --- | --- | --- |
| 2993 | 12.4.11 | **мотор-редуктор привод шнеков** | 48.02d | 2026-08-20 09:00 A | 2026-10-15 09:10 |  | 41% | 28.38d | 105.57d |  |  | 4.17h | 2h |
| 2994 | 12.4.11.1 | замена масла | 2h | 2026-08-20 09:00 | 2026-08-20 11:00 |  |  |  | 153.34d | start no earlier than 2026-08-20 09:00 | Тимофеев В | 2h |  |
| 2995 | 12.4.11.2 | Проверка масла (долил уровень) | 10min | 2026-09-03 09:00 A | 2026-09-03 09:10 A |  | 100% |  |  | start no earlier than 2026-09-03 09:00 | Труфанов А | 0.17h | 0.17h |
| 2996 | 12.4.11.3 | Проверка масла | 10min | 2026-09-09 09:00 A | 2026-09-09 09:10 A |  | 100% |  |  | start no earlier than 2026-09-09 08:00 | Бобренок В | 0.17h | 0.17h |
| 2997 | 12.4.11.4 | Проверка масла | 10min | 2026-09-17 09:00 A | 2026-09-17 09:10 A |  | 100% |  |  | start no earlier than 2026-09-17 09:00 | Некрасов А | 0.17h | 0.17h |
| 2998 | 12.4.11.5 | Проверка масла | 10min | 2026-09-24 09:00 A | 2026-09-24 09:10 A |  | 100% |  |  | start no earlier than 2026-09-24 09:00 | Некрасов А | 0.17h | 0.17h |
| 2999 | 12.4.11.6 | Проверка масла | 10min | 2026-09-29 09:00 A | 2026-09-29 09:10 A |  | 100% |  |  | start no earlier than 2026-09-29 08:00 | Бундин В | 0.17h | 0.17h |
| 3000 | 12.4.11.7 | Проверка муфту соединенной цепью, есть сильный люфт, при выявлении откланений сообщить/устранить | 30min | 2026-10-08 09:00 A | 2026-10-08 09:30 A |  | 100% |  |  | start no earlier than 2026-10-08 09:00 | Труфанов А; Некрасов А | 1h | 1h |
| 3001 | 12.4.11.8 | Проверка масла | 10min | 2026-10-08 09:00 A | 2026-10-08 09:10 A |  | 100% |  |  | start no earlier than 2026-10-08 09:00 | Дедов В | 0.17h | 0.17h |
| 3002 | 12.4.11.9 | Проверка масла | 10min | 2026-10-15 09:00 | 2026-10-15 09:10 |  |  |  | 105.57d | start no earlier than 2026-10-15 09:00 | Некрасов | 0.17h |  |
| 3003 | 12.4.12 | **редуктор шнеков экструдера - проверка масла** | 441.03d | 2025-02-17 09:00 A | 2026-10-15 09:15 |  | 96% | 17.41d | 105.56d |  |  | 6.33h | 6.08h |
| 3004 | 12.4.12.1 | чистка фильтра редуктора | 15min | 2026-03-05 09:00 A | 2026-03-05 09:15 A |  | 100% |  |  | start no earlier than 2026-03-05 09:00 | Тимофеев В | 0.25h | 0.25h |
| 3005 | 12.4.12.2 | контоль цепи муфты привода | 5min | 2026-03-05 09:15 A | 2026-03-05 09:20 A | 3004, 3006, 3007, 3009, 3013, 3014 | 100% |  |  | start no earlier than 2026-03-04 08:00 | Тимофеев В | 0.08h | 0.08h |
| 3006 | 12.4.12.3 | чистка фильтра редуктора | 15min | 2026-03-19 09:00 A | 2026-03-19 09:15 A |  | 100% |  |  | start no earlier than 2026-03-19 09:00 | Тимофеев В | 0.25h | 0.25h |
| 3007 | 12.4.12.4 | чистка фильтра редуктора | 15min | 2026-06-18 09:00 A | 2026-06-18 09:15 A |  | 100% |  |  | start no earlier than 2026-06-18 09:00 | Тимофеев В | 0.25h | 0.25h |
| 3008 | 12.4.12.5 | чистка фильтра редуктора | 30min | 2026-08-06 08:00 A | 2026-08-06 09:30 A |  | 100% |  |  | start no earlier than 2026-08-06 08:00 | Тимофеев В | 0.5h | 0.5h |
| 3009 | 12.4.12.6 | чистка фильтра редуктора | 15min | 2026-07-14 09:00 A | 2026-07-14 09:15 A |  | 100% |  |  | start no earlier than 2026-07-14 09:00 | Бундин В | 0.25h | 0.25h |
| 3010 | 12.4.12.7 | тэны и термпоры шнеков | 2h | 2025-02-17 09:00 A | 2025-02-17 11:00 A |  | 100% |  |  | start no earlier than 2025-02-17 09:00 | Дедов В | 2h | 2h |
| 3011 | 12.4.12.8 | проверка масла | 5min | 2026-08-06 09:00 A | 2026-08-06 09:05 A |  | 100% |  |  | start no earlier than 2026-08-06 09:00 | Тимофеев В | 0.08h | 0.08h |
| 3012 | 12.4.12.9 | Проверка масла | 10min | 2026-07-30 09:00 A | 2026-07-30 09:10 A |  | 100% |  |  | start no earlier than 2026-07-30 09:00 | Бундин В | 0.17h | 0.17h |
| 3013 | 12.4.12.10 | чистка фильтра редуктора | 15min | 2026-08-13 09:00 A | 2026-08-13 09:15 A |  | 100% |  |  | start no earlier than 2026-08-13 09:00 | Тимофеев В | 0.25h | 0.25h |
| 3014 | 12.4.12.11 | чистка фильтра редуктора | 15min | 2026-08-20 09:00 A | 2026-08-20 09:15 A |  | 100% |  |  | start no earlier than 2026-08-20 09:00 | Тимофеев В | 0.25h | 0.25h |
| 3015 | 12.4.12.12 | Чистка фильтра | 15min | 2026-09-03 09:00 A | 2026-09-03 09:15 A |  | 100% |  |  | start no earlier than 2026-09-03 09:00 | Труфанов А | 0.25h | 0.25h |
| 3016 | 12.4.12.13 | Чистка фильтра | 15min | 2026-09-09 09:00 A | 2026-09-09 09:15 A |  | 100% |  |  | start no earlier than 2026-09-09 08:00 | Бобренок В | 0.25h | 0.25h |
| 3017 | 12.4.12.14 | Проверка масла | 5min | 2026-09-09 09:00 A | 2026-09-09 09:05 A |  | 100% |  |  | start no earlier than 2026-09-09 08:00 | Бобренок В | 0.08h | 0.08h |
| 3018 | 12.4.12.15 | Проверка масла/чистка фильтра | 15min | 2026-09-17 09:00 A | 2026-09-17 09:15 A |  | 100% |  |  | start no earlier than 2026-09-17 09:00 | Некрасов А | 0.25h | 0.25h |
| 3019 | 12.4.12.16 | Чистка фильтра | 15min | 2026-09-24 09:00 A | 2026-09-24 09:15 A |  | 100% |  |  | start no earlier than 2026-09-24 09:00 | Некрасов А | 0.25h | 0.25h |
| 3020 | 12.4.12.17 | Чистка фильтра | 15min | 2026-09-29 09:00 A | 2026-09-29 09:15 A |  | 100% |  |  | start no earlier than 2026-09-29 08:00 | Бундин В | 0.25h | 0.25h |
| 3021 | 12.4.12.18 | Проверка масла | 10min | 2026-10-08 09:00 A | 2026-10-08 09:10 A |  | 100% |  |  | start no earlier than 2026-10-08 09:00 | Дедов В | 0.17h | 0.17h |
| 3022 | 12.4.12.19 | Чистка фильтра | 15min | 2026-10-08 09:00 A | 2026-10-08 09:15 A |  | 100% |  |  | start no earlier than 2026-10-08 09:00 | Дедов В | 0.25h | 0.25h |
| 3023 | 12.4.12.20 | Проверка масла, чистка фильтра | 15min | 2026-10-15 09:00 | 2026-10-15 09:15 |  |  |  | 105.56d | start no earlier than 2026-10-15 09:00 | Некрасов | 0.25h |  |

| ID | WBS | Task | Duration | Start | Finish | Predecessors | Complete | Remaining | Total slack | Constraint | Resources | Work | Actual work |
| --- | --- | --- | --- | --- | --- | --- | --- | --- | --- | --- | --- | --- | --- |
| 3024 | 12.4.13 | **шкаф управления экструдером** | 168.02d | 2026-03-05 09:00 A | 2026-10-15 09:10 |  | 92% | 14d | 105.57d |  |  | 2h | 1.83h |
| 3025 | 12.4.13.1 | продувка частотного привода | 10min | 2026-03-05 09:00 A | 2026-03-05 09:10 A |  | 100% |  |  | start no earlier than 2026-03-05 09:00 | Труфанов А | 0.17h | 0.17h |
| 3026 | 12.4.13.2 | продувка частотного привода | 10min | 2026-08-06 09:00 A | 2026-08-06 09:10 A |  | 100% |  |  | start no earlier than 2026-08-06 09:00 | Бундин В | 0.17h | 0.17h |
| 3027 | 12.4.13.3 | уложить и закрепить провода | 5min | 2026-03-05 09:10 A | 2026-03-05 09:15 A | 3025, 3026, 3029, 3030, 3031, 3032 | 100% |  |  | start no earlier than 2026-03-04 08:00 | Труфанов А | 0.08h | 0.08h |
| 3028 | 12.4.13.4 | протяжка контактов | 5min | 2026-03-05 09:15 A | 2026-03-05 09:20 A | 3027 | 100% |  |  | start no earlier than 2026-03-04 08:00 | Труфанов А | 0.08h | 0.08h |
| 3029 | 12.4.13.5 | продувка частотного привода | 10min | 2026-03-19 09:00 A | 2026-03-19 09:10 A |  | 100% |  |  | start no earlier than 2026-03-19 09:00 | Дедов В | 0.17h | 0.17h |
| 3030 | 12.4.13.6 | продувка частотного привода | 10min | 2026-05-14 09:00 A | 2026-05-14 09:10 A |  | 100% |  |  | start no earlier than 2026-05-14 09:00 | Макаревич А | 0.17h | 0.17h |
| 3031 | 12.4.13.7 | продувка частотного привода | 10min | 2026-08-13 09:00 A | 2026-08-13 09:10 A |  | 100% |  |  | start no earlier than 2026-08-13 09:00 | Некрасов А | 0.17h | 0.17h |
| 3032 | 12.4.13.8 | продувка частотного привода | 10min | 2026-08-20 09:00 A | 2026-08-20 09:10 A |  | 100% |  |  | start no earlier than 2026-08-20 09:00 | Дедов В | 0.17h | 0.17h |
| 3033 | 12.4.13.9 | продувка частотного привода | 10min | 2026-09-03 09:00 A | 2026-09-03 09:10 A |  | 100% |  |  | start no earlier than 2026-09-03 09:00 | Труфанов А | 0.17h | 0.17h |
| 3034 | 12.4.13.10 | продувка частотного привода | 10min | 2026-09-17 09:00 A | 2026-09-17 09:10 A |  | 100% |  |  | start no earlier than 2026-09-17 09:00 | Некрасов А | 0.17h | 0.17h |
| 3035 | 12.4.13.11 | продувка частотного привода | 10min | 2026-09-29 09:00 A | 2026-09-29 09:10 A |  | 100% |  |  | start no earlier than 2026-09-29 09:00 | Бундин В | 0.17h | 0.17h |
| 3036 | 12.4.13.12 | продувка частотного привода | 10min | 2026-10-08 09:00 A | 2026-10-08 09:10 A |  | 100% |  |  | start no earlier than 2026-10-08 09:00 | Дедов В | 0.17h | 0.17h |
| 3037 | 12.4.13.13 | продувка частотного привода | 10min | 2026-10-15 09:00 | 2026-10-15 09:10 |  |  |  | 105.57d | start no earlier than 2026-10-15 09:00 | Дедов В | 0.17h |  |
| 3038 | 12.4.14 | **пневотранспорт роторный питатель** | 158.04d | 2026-03-19 09:00 A | 2026-10-15 09:20 |  | 48% | 81.95d | 105.55d |  |  | 6.5h | 2.17h |
| 3039 | 12.4.14.1 | замена на ЗИП / вывод на ремонт промывку | 2h | 2026-06-25 09:00 | 2026-06-25 11:00 |  |  |  | 193.34d | start no earlier than 2026-06-25 09:00 | Труфанов А; Некрасов А | 4h |  |
| 3040 | 12.4.14.2 | проверка масла - высок температурная смазка | 1h | 2026-03-19 09:00 A | 2026-03-19 10:00 A |  | 100% |  |  | start no earlier than 2026-03-19 09:00 | Труфанов А | 1h | 1h |
| 3041 | 12.4.14.3 | Ревизия узлов/масла | 30min | 2026-07-30 09:00 A | 2026-07-30 09:30 A |  | 100% |  |  | start no earlier than 2026-07-30 09:00 | Труфанов А | 0.5h | 0.5h |
| 3042 | 12.4.14.4 | Ревизия узлов/масла (смазку свежую набил) | 20min | 2026-09-03 09:00 A | 2026-09-03 09:20 A |  | 100% |  |  | start no earlier than 2026-09-03 09:00 | Труфанов А | 0.33h | 0.33h |
| 3043 | 12.4.14.5 | Ревизия узлов/масла. Очистка мотора от пыли | 20min | 2026-09-24 09:00 A | 2026-09-24 09:20 A |  | 100% |  |  | start no earlier than 2026-09-24 09:00 | Бундин В | 0.33h | 0.33h |
| 3044 | 12.4.14.6 | Ревизия узлов/масла. Очистка мотора от пыли | 20min | 2026-10-15 09:00 | 2026-10-15 09:20 |  |  |  | 105.55d | start no earlier than 2026-10-15 09:00 | Труфанов А | 0.33h |  |
| 3045 | 12.4.15 | **печь - валы этажей, подшипники, цепи** | 158.12d | 2026-03-19 09:00 A | 2026-10-15 10:00 |  | 97% | 5.33d | 105.47d |  |  | 7.42h | 7.17h |
| 3046 | 12.4.15.1 | осмотр смазка | 30min | 2026-03-19 09:00 A | 2026-03-19 09:30 A |  | 100% |  |  | start no earlier than 2026-03-19 09:00 | Тимофеев В | 0.5h | 0.5h |
| 3047 | 12.4.15.2 | осмотр смазка сетки | 2h | 2026-05-14 09:00 A | 2026-05-14 11:00 A |  | 100% |  |  | start no earlier than 2026-05-14 09:00 | Макаревич А | 2h | 2h |
| 3048 | 12.4.15.3 | натяжка цепей | 30min | 2026-08-13 09:00 A | 2026-08-13 09:30 A |  | 100% |  |  | start no earlier than 2026-08-13 09:00 | Некрасов А | 0.5h | 0.5h |
| 3049 | 12.4.15.4 | натяжка цепей, контроль привода | 30min | 2026-09-03 09:00 A | 2026-09-03 09:30 A |  | 100% |  |  | start no earlier than 2026-09-03 09:00 | Труфанов А | 0.5h | 0.5h |
| 3050 | 12.4.15.5 | Контроль редуктора, осмотр, проверка масла | 30min | 2026-09-17 09:00 A | 2026-09-17 09:30 A |  | 100% |  |  | start no earlier than 2026-09-17 09:00 | Труфанов А | 0.5h | 0.5h |
| 3051 | 12.4.15.6 | Контроль редуктора, осмотр, проверка масла | 30min | 2026-09-24 09:00 A | 2026-09-24 09:30 A |  | 100% |  |  | start no earlier than 2026-09-24 09:00 | Некрасов А | 0.5h | 0.5h |
| 3052 | 12.4.15.7 | Смазка всех цепей (если не смазаны) | 1h | 2026-10-15 09:00 A | 2026-10-15 10:00 A |  | 100% |  |  | start no earlier than 2026-10-15 09:00 | Бобренок В | 1h | 1h |
| 3053 | 12.4.15.8 | Контроль редуктора, осмотр, проверка масла | 30min | 2026-09-29 09:00 A | 2026-09-29 09:30 A |  | 100% |  |  | start no earlier than 2026-09-29 08:00 | Бундин В | 0.5h | 0.5h |
| 3054 | 12.4.15.9 | Контроль состояния шестерен привода | 10min | 2026-10-08 09:00 A | 2026-10-08 09:10 A |  | 100% |  |  | start no earlier than 2026-10-08 09:00 | Дедов В | 0.17h | 0.17h |
| 3055 | 12.4.15.10 | Проверка редуктора и выявление причины его шума и шатания/устранить | 1h | 2026-10-08 09:00 A | 2026-10-08 10:00 A |  | 100% |  |  | start no earlier than 2026-10-08 09:00 | Дедов В | 1h | 1h |
| 3056 | 12.4.15.11 | Замер диаметра шкива двигателя привода редуктора | 15min | 2026-10-15 09:00 | 2026-10-15 09:15 |  |  |  | 105.56d | start no earlier than 2026-10-15 09:00 | Труфанов А | 0.25h |  |

| ID | WBS | Task | Duration | Start | Finish | Predecessors | Complete | Remaining | Total slack | Free slack | Constraint | Resources | Work | Actual work |
| --- | --- | --- | --- | --- | --- | --- | --- | --- | --- | --- | --- | --- | --- | --- |
| 3057 | 12.4.16 | **вентиляторы обдува сушки** | 168.25d? | 2026-03-05 09:00 A | 2026-10-15 11:00 |  | 18% | 137.66d? | 105.34d |  |  | ТО | 1352h | 12h |
| 3058 | 12.4.16.1 | чистка крыльчатки | 1d? | 2026-03-05 09:00 | 2026-03-05 18:00 |  |  |  | 272.59d |  | start no earlier than 2026-03-05 09:00 |  |  |  |
| 3059 | 12.4.16.2 | замена подшипников | 1d? | 2026-03-05 09:00 | 2026-03-05 18:00 |  |  |  | 272.59d |  | start no earlier than 2026-03-05 09:00 |  |  |  |
| 3060 | 12.4.16.3 | Осмотр, чистка | 2h | 2026-09-17 09:00 A | 2026-09-17 11:00 A |  | 100% |  |  |  | start no earlier than 2026-09-17 09:00 | Бобренок В | 2h | 2h |
| 3061 | 12.4.16.4 | Осмотр, очистка от пыли | 2h | 2026-09-24 09:00 A | 2026-09-24 11:00 A |  | 100% |  |  |  | start no earlier than 2026-09-24 09:00 | Некрасов А | 2h | 2h |
| 3062 | 12.4.16.5 | Осмотр, очистка от пыли | 2h | 2026-10-15 09:00 | 2026-10-15 11:00 |  |  |  | 105.34d |  | start no earlier than 2026-10-15 09:00 | Дедов В | 2h |  |
| 3063 | 12.4.17 | **шкаф управления тэнами сушки главный** | 168.08d | 2026-03-05 09:00 A | 2026-10-15 09:40 |  | 82% | 29.88d | 105.51d |  |  |  | 7.33h | 6.17h |
| 3064 | 12.4.17.1 | протяжка контактов, продувка шкафа, частотного привода | 10min | 2026-03-05 09:00 A | 2026-03-05 09:10 A |  | 100% |  |  |  | start no earlier than 2026-03-05 09:00 | Труфанов А | 0.17h | 0.17h |
| 3065 | 12.4.17.2 | протяжка контактов, продувка шкафа, частотного привода | 10min | 2026-07-14 09:00 A | 2026-07-14 09:10 A |  | 100% |  |  |  | start no earlier than 2026-07-14 09:00 | Некрасов А | 0.17h | 0.17h |
| 3066 | 12.4.17.3 | осмотср замена подгоревших кабелей | 30min | 2026-05-21 09:00 A | 2026-05-21 09:30 A |  | 100% |  |  |  | start no earlier than 2026-05-21 09:00 | Тимофеев В | 0.5h | 0.5h |
| 3067 | 12.4.17.4 | протяжка контактов, продувка шкафа, частотного привода | 30min | 2026-08-06 09:00 | 2026-08-06 09:30 |  |  |  | 163.53d |  | start no earlier than 2026-08-06 08:00 | Бундин В | 0.5h |  |
| 3068 | 12.4.17.5 | осмотср замена подгоревших кабелей | 30min | 2026-05-21 09:00 A | 2026-05-21 09:30 A |  | 100% |  |  |  | start no earlier than 2026-05-21 09:00 | Некрасов А | 0.5h | 0.5h |
| 3069 | 12.4.17.6 | продуть, протяжка контактов | 1h | 2026-05-21 08:00 A | 2026-05-21 10:00 A |  | 100% |  |  |  | start no earlier than 2026-05-21 08:00 | Тимофеев В | 1h | 1h |
| 3070 | 12.4.17.7 | осмотср замена подгоревших кабелей | 30min | 2026-07-14 09:00 A | 2026-07-14 09:30 A |  | 100% |  |  |  | start no earlier than 2026-07-14 09:00 | Труфанов А | 0.5h | 0.5h |
| 3071 | 12.4.17.8 | осмотср замена подгоревших кабелей | 1h | 2026-08-13 09:00 A | 2026-08-13 10:00 A |  | 100% |  |  |  | start no earlier than 2026-08-13 09:00 | Труфанов А | 1h | 1h |
| 3072 | 12.4.17.9 | продувка | 10min | 2026-09-03 09:00 A | 2026-09-03 09:10 A |  | 100% |  |  |  | start no earlier than 2026-09-03 09:00 | Труфанов А | 0.17h | 0.17h |
| 3073 | 12.4.17.10 | Продувка | 10min | 2026-09-17 09:00 A | 2026-09-17 09:10 A |  | 100% |  |  |  | start no earlier than 2026-09-17 09:00 | Некрасов А | 0.17h | 0.17h |
| 3074 | 12.4.17.11 | Продувка. Замена подогретых жил | 2h | 2026-09-24 09:00 A | 2026-09-24 11:00 A |  | 100% |  |  |  | start no earlier than 2026-09-24 09:00 | Труфанов А | 2h | 2h |
| 3075 | 12.4.17.12 | протяжка контактов, продувка шкафа, частотного привода | 10min | 2026-09-29 09:00 | 2026-09-29 09:10 |  |  |  | 118.57d |  | start no earlier than 2026-09-29 08:00 |  |  |  |
| 3076 | 12.4.17.13 | протяжка контактов, продувка шкафа, частотного привода | 10min | 2026-10-15 09:30 | 2026-10-15 09:40 | 3077 |  |  | 105.51d |  |  | Дедов В | 0.17h |  |
| 3077 | 12.4.17.14 | осмотср замена подгоревших кабелей | 30min | 2026-10-15 09:00 | 2026-10-15 09:30 |  |  |  | 105.51d | 0d | start no earlier than 2026-10-15 09:00 | Дедов В | 0.5h |  |
| 3078 | 12.4.18 | **шкаф управления тэнами твердотельный** | 168.06d | 2026-03-05 09:00 A | 2026-10-15 09:30 |  | 88% | 20.17d | 105.53d |  |  |  | 4.17h | 3.67h |
| 3079 | 12.4.18.1 | продувка, протяжка | 10min | 2026-03-05 09:00 A | 2026-03-05 09:10 A |  | 100% |  |  |  | start no earlier than 2026-03-05 09:00 | Труфанов А | 0.17h | 0.17h |
| 3080 | 12.4.18.2 | продувка, протяжка | 10min | 2026-07-14 09:00 A | 2026-07-14 09:10 A |  | 100% |  |  |  | start no earlier than 2026-07-14 09:00 | Труфанов А | 0.17h | 0.17h |
| 3081 | 12.4.18.3 | продувка, протяжка | 10min | 2026-08-06 09:00 A | 2026-08-06 09:10 A |  | 100% |  |  |  | start no earlier than 2026-08-06 08:00 | Бундин В | 0.17h | 0.17h |
| 3082 | 12.4.18.4 | замена подгоревших кабелей | 30min | 2026-08-13 09:00 A | 2026-08-13 09:30 A |  | 100% |  |  |  | start no earlier than 2026-08-13 09:00 | Труфанов А | 0.5h | 0.5h |
| 3083 | 12.4.18.5 | продувка, протяжка | 10min | 2026-08-06 09:00 A | 2026-08-06 09:10 A |  | 100% |  |  |  | start no earlier than 2026-08-06 08:00 | Труфанов А | 0.17h | 0.17h |
| 3084 | 12.4.18.6 | продувка, протяжка | 10min | 2026-09-03 09:00 A | 2026-09-03 09:10 A |  | 100% |  |  |  | start no earlier than 2026-09-03 09:00 | Труфанов А | 0.17h | 0.17h |
| 3085 | 12.4.18.7 | Продувка | 10min | 2026-09-17 09:00 A | 2026-09-17 09:10 A |  | 100% |  |  |  | start no earlier than 2026-09-17 09:00 | Некрасов А | 0.17h | 0.17h |
| 3086 | 12.4.18.8 | Продувка. Замена подогретых жил | 2h | 2026-09-24 09:00 A | 2026-09-24 11:00 A |  | 100% |  |  |  | start no earlier than 2026-09-24 09:00 | Труфанов А | 2h | 2h |
| 3087 | 12.4.18.9 | Продувка | 10min | 2026-09-29 09:00 A | 2026-09-29 09:10 A |  | 100% |  |  |  | start no earlier than 2026-09-29 08:00 | Бундин В | 0.17h | 0.17h |
| 3088 | 12.4.18.10 | Продувка. Замена подогретых жил | 30min | 2026-10-15 09:00 | 2026-10-15 09:30 |  |  |  | 105.53d |  | start no earlier than 2026-10-15 09:00 | Дедов В | 0.5h |  |

| ID | WBS | Task | Duration | Start | Finish | Complete | Remaining | Total slack | Constraint | Resources | Work | Actual work |
| --- | --- | --- | --- | --- | --- | --- | --- | --- | --- | --- | --- | --- |
| 3089 | 12.4.19 | **конвейер №1 с печи в дрожировщик** | 168.06d | 2026-03-05 09:00 A | 2026-10-15 09:30 | 86% | 23.45d | 105.53d |  |  | 3.58h | 3.08h |
| 3090 | 12.4.19.1 | ослабить ленту для чистки барабана / натяжка после чистки | 30min | 2026-03-05 09:00 A | 2026-03-05 09:30 A | 100% |  |  | start no earlier than 2026-03-05 09:00 | Тимофеев В | 0.5h | 0.5h |
| 3091 | 12.4.19.2 | ревизия люфтов, фиксации смазки подшипников | 30min | 2026-03-05 09:00 A | 2026-03-05 09:30 A | 100% |  |  | start no earlier than 2026-03-05 09:00 | Тимофеев В | 0.5h | 0.5h |
| 3092 | 12.4.19.3 | ослабить ленту для чистки барабана / натяжка после чистки | 10min | 2026-03-12 09:00 A | 2026-03-12 09:10 A | 100% |  |  | start no earlier than 2026-03-12 09:00 | Тимофеев В | 0.17h | 0.17h |
| 3093 | 12.4.19.4 | чистка ленты контроль операторов, если нужно ослаить | 15min | 2026-08-13 09:00 A | 2026-08-13 09:15 A | 100% |  |  | start no earlier than 2026-08-13 09:00 | Тимофеев В | 0.25h | 0.25h |
| 3094 | 12.4.19.5 | ревизия люфтов, фиксации смазки подшипников | 30min | 2026-09-03 09:00 A | 2026-09-03 09:30 A | 100% |  |  | start no earlier than 2026-09-03 09:00 | Тимофеев В | 0.5h | 0.5h |
| 3095 | 12.4.19.6 | ослабить ленту для чистки барабана / натяжка после чистки | 10min | 2026-09-03 09:00 A | 2026-09-03 09:10 A | 100% |  |  | start no earlier than 2026-09-03 09:00 | Тимофеев В | 0.17h | 0.17h |
| 3096 | 12.4.19.7 | ревизия люфтов, фиксации смазки подшипников | 30min | 2026-09-17 09:00 A | 2026-09-17 09:30 A | 100% |  |  | start no earlier than 2026-09-17 09:00 | Тимофеев В | 0.5h | 0.5h |
| 3097 | 12.4.19.8 | очистка валов и ленты / контроль крепления редуктора / состояния подшипника | 30min | 2026-09-24 09:00 A | 2026-09-24 09:30 A | 100% |  |  | start no earlier than 2026-09-24 09:00 | Тимофеев В | 0.5h | 0.5h |
| 3098 | 12.4.19.9 | очистка валов и ленты / контроль крепления редуктора / состояния подшипника | 30min | 2026-10-15 09:00 | 2026-10-15 09:30 |  |  | 105.53d | start no earlier than 2026-10-15 09:00 | Некрасов | 0.5h |  |
| 3099 | 12.4.20 | **барабан смесительный дрожировка** | 738.03d | 2023-12-28 09:00 A | 2026-10-15 09:15 | 76% | 174.26d | 105.56d |  | ТО | 126h | 96.25h |
| 3100 | 12.4.20.1 | ревизия состяния валов, подшипников | 2h | 2026-02-25 09:00 A | 2026-02-25 11:00 A | 100% |  |  | start no earlier than 2026-02-25 09:00 | Тимофеев В | 2h | 2h |
| 3101 | 12.4.20.2 | ремонт вала временный. 11 час | 2h | 2026-02-25 09:00 A | 2026-02-25 11:00 A | 100% |  |  | start no earlier than 2026-02-25 09:00 | Тимофеев В | 2h | 2h |
| 3102 | 12.4.20.3 | замена подшипников мотора привода | 2h | 2026-02-25 09:00 A | 2026-02-25 11:00 A | 100% |  |  | start no earlier than 2026-02-25 09:00 | Тимофеев В | 2h | 2h |
| 3103 | 12.4.20.4 | заменаить вал дрожировки по стрелкам на 11час / после прихода с ремонта | 2h | 2026-04-30 09:00 A | 2026-04-30 11:00 A | 100% |  |  | start no earlier than 2026-04-30 09:00 | Тимофеев В | 2h | 2h |
| 3104 | 12.4.20.5 | насос подачи жира и смесительный узел, баки подогрева | 2h | 2023-12-28 09:00 | 2023-12-28 11:00 |  |  | 843.34d | start no earlier than 2023-12-28 09:00 | ТО | 2h |  |
| 3105 | 12.4.20.6 | Осмотр подшипников редукторов | 20min | 2026-07-30 09:00 A | 2026-07-30 09:20 A | 100% |  |  | start no earlier than 2026-07-30 09:00 | Труфанов А | 0.33h | 0.33h |
| 3106 | 12.4.20.7 | Осмотр подшипников редукторов | 15min | 2026-08-13 09:00 A | 2026-08-13 09:15 A | 100% |  |  | start no earlier than 2026-08-13 09:00 | Тимофеев В | 0.25h | 0.25h |
| 3107 | 12.4.20.8 | Осмотр подшипников редукторов | 15min | 2026-09-03 09:00 A | 2026-09-03 09:15 A | 100% |  |  | start no earlier than 2026-09-03 09:00 | Тимофеев В | 0.25h | 0.25h |
| 3108 | 12.4.20.9 | Осмотр соединений фитингов, трехходового крана бежит/не бежит | 10min | 2026-09-03 09:00 A | 2026-09-03 09:10 A | 100% |  |  | start no earlier than 2026-09-03 09:00 | Тимофеев В | 0.17h | 0.17h |
| 3109 | 12.4.20.10 | Осмотр соединений фитингов, трехходового крана бежит/не бежит | 10min | 2026-09-17 09:00 A | 2026-09-17 09:10 A | 100% |  |  | start no earlier than 2026-09-17 09:00 | Тимофеев В | 0.17h | 0.17h |
| 3110 | 12.4.20.11 | Осмотр соединений фитингов, трехходового крана бежит/не бежит | 10min | 2026-09-18 09:00 | 2026-09-18 09:10 |  |  | 129.57d | start no earlier than 2026-09-18 09:00 | Тимофеев В | 0.17h |  |
| 3111 | 12.4.20.12 | Осмотр подшипников редукторов | 15min | 2026-10-08 09:00 | 2026-10-08 09:15 |  |  | 110.56d | start no earlier than 2026-10-08 09:00 | Тимофеев В | 0.25h |  |
| 3112 | 12.4.20.13 | Осмотр соединений фитингов, трехходового крана бежит/не бежит | 10min | 2026-10-08 09:00 | 2026-10-08 09:10 |  |  | 110.57d | start no earlier than 2026-10-08 09:00 | Тимофеев В | 0.17h |  |
| 3113 | 12.4.20.14 | Осмотр соединений фитингов, трехходового крана бежит/не бежит | 15min | 2026-10-15 09:00 | 2026-10-15 09:15 |  |  | 105.56d | start no earlier than 2026-10-15 09:00 | Дедов В | 0.25h |  |

| ID | WBS | Task | Duration | Start | Finish | Predecessors | Complete | Remaining | Total slack | Free slack | Constraint | Resources | Work | Actual work |
| --- | --- | --- | --- | --- | --- | --- | --- | --- | --- | --- | --- | --- | --- | --- |
| 3114 | 12.4.21 | **Узел подачи гидролизата** | 75.04d | 2026-07-14 09:00 A | 2026-10-15 09:20 |  | 88% | 8.66d | 105.55d |  |  |  | 4.33h | 3.83h |
| 3115 | 12.4.21.1 | Дефектовка/ выяснить причу почему еле крутит/ устранить | 2h | 2026-07-14 09:00 A | 2026-07-14 11:00 A |  | 100% |  |  |  | start no earlier than 2026-07-14 09:00 | Бундин В | 2h | 2h |
| 3116 | 12.4.21.2 | осмотр цепи, редуктора, протяжка | 20min | 2026-08-13 09:00 A | 2026-08-13 09:20 A |  | 100% |  |  |  | start no earlier than 2026-08-13 09:00 | Тимофеев В | 0.33h | 0.33h |
| 3117 | 12.4.21.3 | Осмотр/ревизия насоса гидролизата, проверка всех соединений | 10min | 2026-09-03 09:00 A | 2026-09-03 09:10 A |  | 100% |  |  |  | start no earlier than 2026-09-03 09:00 | Тимофеев В | 0.17h | 0.17h |
| 3118 | 12.4.21.4 | Осмотр/ревизия насоса гидролизата, проверка всех соединений | 10min | 2026-09-17 09:00 A | 2026-09-17 09:10 A |  | 100% |  |  |  | start no earlier than 2026-09-17 09:00 | Тимофеев В | 0.17h | 0.17h |
| 3119 | 12.4.21.5 | перенос розеток со стола на раму | 1h | 2026-09-17 09:00 A | 2026-09-17 10:00 A |  | 100% |  |  |  | start no earlier than 2026-09-17 09:00 | Тимофеев В | 1h | 1h |
| 3120 | 12.4.21.6 | Осмотр/ревизия насоса гидролизата, проверка всех соединений | 10min | 2026-10-08 09:00 A | 2026-10-08 09:10 A |  | 100% |  |  |  | start no earlier than 2026-10-08 09:00 | Тимофеев В | 0.17h | 0.17h |
| 3121 | 12.4.21.7 | Осмотр/ревизия насоса гидролизата, проверка всех соединений | 10min | 2026-10-15 09:00 | 2026-10-15 09:10 |  |  |  | 105.57d |  | start no earlier than 2026-10-15 09:00 | Дедов В | 0.17h |  |
| 3122 | 12.4.21.8 | Вернуть ограничение частоты на 70 герц и заблокировать настройки частотника, чтоб не могли менять | 20min | 2026-10-15 09:00 | 2026-10-15 09:20 |  |  |  | 105.55d |  | start no earlier than 2026-10-15 09:00 | Дедов В | 0.33h |  |
| 3123 | 12.4.22 | **конвейер №2 с дрожировки в охладитель** | 168.06d | 2026-03-05 09:00 A | 2026-10-15 09:30 |  | 86% | 22.92d | 105.53d |  |  |  | 3.67h | 3.17h |
| 3124 | 12.4.22.1 | ослабить ленту для чистки барабана / натяжка после чистки | 30min | 2026-03-05 09:00 A | 2026-03-05 09:30 A |  | 100% |  |  |  | start no earlier than 2026-03-05 09:00 | Тимофеев В | 0.5h | 0.5h |
| 3125 | 12.4.22.2 | ревизия люфтов, фиксации смазки подшипников | 30min | 2026-03-05 09:00 A | 2026-03-05 09:30 A |  | 100% |  |  |  | start no earlier than 2026-03-05 09:00 | Тимофеев В | 0.5h | 0.5h |
| 3126 | 12.4.22.3 | ослабить ленту для чистки барабана / натяжка после чистки | 10min | 2026-03-12 09:00 A | 2026-03-12 09:10 A |  | 100% |  |  |  | start no earlier than 2026-03-12 09:00 | Тимофеев В | 0.17h | 0.17h |
| 3127 | 12.4.22.4 | чистка ленты контроль операторов, если нужно ослаить | 15min | 2026-08-13 09:00 A | 2026-08-13 09:15 A |  | 100% |  |  |  | start no earlier than 2026-08-13 09:00 | Тимофеев В | 0.25h | 0.25h |
| 3128 | 12.4.22.5 | чистка ленты контроль операторов, если нужно ослаить | 15min | 2026-08-13 09:00 A | 2026-08-13 09:15 A |  | 100% |  |  |  | start no earlier than 2026-08-13 09:00 | Тимофеев В | 0.25h | 0.25h |
| 3129 | 12.4.22.6 | ослабить ленту для чистки барабана / натяжка после чистки | 30min | 2026-09-03 09:00 A | 2026-09-03 09:30 A |  | 100% |  |  |  | start no earlier than 2026-09-03 09:00 | Тимофеев В | 0.5h | 0.5h |
| 3130 | 12.4.22.7 | ревизия люфтов, фиксации смазки подшипников | 30min | 2026-09-17 09:00 A | 2026-09-17 09:30 A |  | 100% |  |  |  | start no earlier than 2026-09-17 09:00 | Тимофеев В | 0.5h | 0.5h |
| 3131 | 12.4.22.8 | ревизия люфтов, фиксации смазки подшипников | 30min | 2026-09-24 09:00 A | 2026-09-24 09:30 A |  | 100% |  |  |  | start no earlier than 2026-09-24 09:00 | Тимофеев В | 0.5h | 0.5h |
| 3132 | 12.4.22.9 | ревизия люфтов, фиксации смазки подшипников | 30min | 2026-10-15 09:00 | 2026-10-15 09:30 |  |  |  | 105.53d |  | start no earlier than 2026-10-15 09:00 | Дедов В | 0.5h |  |
| 3133 | 12.4.23 | **охладитель сеточный** | 658.19d? | 2024-04-18 09:00 A | 2026-10-15 10:30 |  | 61% | 257.94d? | 105.41d |  |  |  | 19.67h | 18h |
| 3134 | 12.4.23.1 | ревизия осей сетки, замена шплинтов | 2h | 2024-04-18 09:00 A | 2024-04-18 11:00 A |  | 100% |  |  |  | start no earlier than 2024-04-18 08:00 | Некрасов А; Черепанов И | 4h | 4h |
| 3135 | 12.4.23.2 | ревизия привода - масло, ремень (не проверено масло) | 10min | 2026-03-19 09:00 A | 2026-03-19 09:10 A |  | 100% |  |  |  | start no earlier than 2026-03-05 09:00 | Тимофеев В | 0.17h | 0.17h |
| 3136 | 12.4.23.3 | ревизия привода - масло, ремень (не проверено масло) | 10min | 2026-07-14 09:00 | 2026-07-14 09:10 |  |  |  | 180.57d |  | start no earlier than 2026-07-14 09:00 | Некрасов А | 0.17h |  |
| 3137 | 12.4.23.4 | ревизия состояния сетки | 2h | 2026-07-14 09:00 A | 2026-07-14 11:00 A |  | 100% |  |  |  | start no earlier than 2026-07-14 08:00 | Некрасов А | 2h | 2h |
| 3138 | 12.4.23.5 | ревизия состояния сетки | 1h | 2026-07-30 09:00 A | 2026-07-30 10:00 A |  | 100% |  |  |  | start no earlier than 2026-07-30 09:00 | Бундин В | 1h | 1h |
| 3139 | 12.4.23.6 | ревизия состояния сетки | 1d? | 2026-08-20 09:00 | 2026-08-20 18:00 |  |  |  | 152.59d |  | start no earlier than 2026-08-20 09:00 |  |  |  |
| 3140 | 12.4.23.7 | контроль натяжки цепей | 20min | 2026-03-05 09:00 A | 2026-03-05 09:20 A |  | 100% |  |  |  | start no earlier than 2026-03-05 09:00 | Бундин В | 0.33h | 0.33h |
| 3141 | 12.4.23.8 | текущий ремонт силиконовых уплотнений | 30min | 2026-03-05 09:00 A | 2026-03-05 09:30 A |  | 100% |  |  |  | start no earlier than 2026-03-05 09:00 | Бундин В | 0.5h | 0.5h |
| 3142 | 12.4.23.9 | осмотр ремней, натяжка цепей, ремонт силиконовых отбортовок | 1h | 2026-05-14 09:00 A | 2026-05-14 10:00 A |  | 100% |  |  |  | start no earlier than 2026-05-14 09:00 | Макаревич А | 1h | 1h |
| 3143 | 12.4.23.10 | осмотр ремней, натяжка цепей, ремонт силиконовых отбортовок | 1h | 2026-07-14 09:00 A | 2026-07-14 10:00 A |  | 100% |  |  |  | start no earlier than 2026-07-14 09:00 | Некрасов А | 1h | 1h |
| 3144 | 12.4.23.11 | осмотр ремней, натяжка цепей, ремонт силиконовых отбортовок | 1h | 2026-07-30 09:00 A | 2026-07-30 10:00 A |  | 100% |  |  |  | start no earlier than 2026-07-30 09:00 | Бундин В | 1h | 1h |
| 3145 | 12.4.23.12 | осмотр ремней, натяжка цепей, ремонт силиконовых отбортовок | 1h | 2026-08-20 09:00 A | 2026-08-20 10:00 A |  | 100% |  |  |  | start no earlier than 2026-08-20 09:00 | Труфанов А; Некрасов А | 2h | 2h |
| 3146 | 12.4.23.13 | осмотр ремней, натяжка цепей, ремонт силиконовых отбортовок | 1h | 2026-08-20 09:00 A | 2026-08-20 10:00 A |  | 100% |  |  |  | start no earlier than 2026-08-20 09:00 | Дедов В | 1h | 1h |
| 3147 | 12.4.23.14 | Ревизия сетки, контроль роспуска, подогнуть, где что можно, что бы не зацепилось | 1h | 2026-09-24 09:00 A | 2026-09-24 10:00 A |  | 100% |  |  |  | start no earlier than 2026-09-24 09:00 | Труфанов А | 1h | 1h |
| 3148 | 12.4.23.15 | Смазка подшипников привод охладителя | 30min | 2026-09-24 09:00 A | 2026-09-24 09:30 A |  | 100% |  |  |  | start no earlier than 2026-09-24 09:00 | Труфанов А | 0.5h | 0.5h |
| 3149 | 12.4.23.16 | Смазка всех цепей | 2h | 2026-09-24 09:00 A | 2026-09-24 11:00 A |  | 100% |  |  |  | start no earlier than 2026-09-24 09:00 | Труфанов А | 2h | 2h |
| 3150 | 12.4.23.17 | Ремонт уголка на охладителе, позвонить мне, перешлю видео | 30min | 2026-09-29 09:00 A | 2026-09-29 09:30 A |  | 100% |  |  |  | start no earlier than 2026-09-29 08:00 | Бундин В | 0.5h | 0.5h |
| 3151 | 12.4.23.18 | ревизия состояния сетки/контроль натяжки цепей, ревизия сетки | 1h | 2026-10-15 09:30 | 2026-10-15 10:30 | 3152 |  |  | 105.41d |  |  | Некрасов | 1h |  |
| 3152 | 12.4.23.19 | Смазка подшипников привода при необходимости | 30min | 2026-10-15 09:00 | 2026-10-15 09:30 |  |  |  | 105.41d | 0d | start no earlier than 2026-10-15 09:00 | Некрасов | 0.5h |  |

| ID | WBS | Task | Duration | Start | Finish | Predecessors | Complete | Remaining | Total slack | Free slack | Constraint | Resources | Work | Actual work |
| --- | --- | --- | --- | --- | --- | --- | --- | --- | --- | --- | --- | --- | --- | --- |
| 3153 | 12.4.24 | **конвейер 3 с охладителя в упаковку** | 54.03d | 2026-08-12 09:00 A | 2026-10-15 09:15 |  | 67% | 18.01d | 105.56d |  |  | ТО | 337.75h | 97.19h |
| 3154 | 12.4.24.1 | ослабить ленту для чистки барабана / натяжка после чистки | 15min | 2026-08-12 09:00 A | 2026-08-12 09:15 A |  | 100% |  |  |  | start no earlier than 2026-08-12 09:00 | Тимофеев В | 0.25h | 0.25h |
| 3155 | 12.4.24.2 | ревизия люфтов, фиксации, смазки подшипников | 15min | 2026-08-12 09:00 A | 2026-08-12 09:15 A |  | 100% |  |  |  | start no earlier than 2026-08-12 09:00 | Тимофеев В | 0.25h | 0.25h |
| 3156 | 12.4.24.3 | ослабить ленту для чистки барабана / натяжка после чистки | 15min | 2026-09-03 09:00 A | 2026-09-03 09:15 A |  | 100% |  |  |  | start no earlier than 2026-09-03 09:00 | Макаревич А | 0.25h | 0.25h |
| 3157 | 12.4.24.4 | ревизия люфтов, фиксации, смазки подшипников | 15min | 2026-09-17 09:00 A | 2026-09-17 09:15 A |  | 100% |  |  |  | start no earlier than 2026-09-17 09:00 | Некрасов А | 0.25h | 0.25h |
| 3158 | 12.4.24.5 | ревизия люфтов, фиксации, смазки подшипников | 15min | 2026-10-01 09:00 | 2026-10-01 09:15 |  |  |  | 116.56d |  | start no earlier than 2026-10-01 09:00 | Некрасов А | 0.25h |  |
| 3159 | 12.4.24.6 | ревизия люфтов, фиксации, смазки подшипников | 15min | 2026-10-15 09:00 | 2026-10-15 09:15 |  |  |  | 105.56d |  | start no earlier than 2026-10-15 09:00 | Некрасов | 0.25h |  |
| 3160 | 12.4.25 | **упаковка** | 720.12d | 2023-12-28 09:00 A | 2026-09-24 10:00 A |  | 100% |  |  |  |  | ТО | 5101h | 5101h |
| 3161 | 12.4.25.1 | НОТИС 1 | 2h | 2023-12-28 09:00 A | 2023-12-28 11:00 A |  | 100% |  |  |  | start no earlier than 2023-12-28 09:00 | ТО | 2h | 2h |
| 3162 | 12.4.25.2 | НОТИС 2 | 2h | 2023-12-28 09:00 A | 2023-12-28 11:00 A |  | 100% |  |  |  | start no earlier than 2023-12-28 09:00 | ТО | 2h | 2h |
| 3163 | 12.4.25.3 | запайщик 1 | 2h | 2026-06-18 09:00 A | 2026-06-18 11:00 A |  | 100% |  |  |  | start no earlier than 2026-06-18 09:00 | Труфанов А | 2h | 2h |
| 3164 | 12.4.25.4 | запайщик 2 | 2h | 2026-06-18 09:00 A | 2026-06-18 11:00 A |  | 100% |  |  |  | start no earlier than 2026-06-18 09:00 | Труфанов А | 2h | 2h |
| 3165 | 12.4.25.5 | запайщик 1 проверка перемычек/тефлона замена при необходимости | 2h | 2026-09-03 09:00 A | 2026-09-03 11:00 A |  | 100% |  |  |  | start no earlier than 2026-09-03 09:00 | Макаревич А | 2h | 2h |
| 3166 | 12.4.25.6 | запайщик 1 проверка перемычек/тефлона замена при необходимости | 2h | 2026-09-03 09:00 A | 2026-09-03 11:00 A |  | 100% |  |  |  | start no earlier than 2026-09-03 09:00 | Макаревич А | 2h | 2h |
| 3167 | 12.4.25.7 | запайщик 1 и 2 проверка перемычек/тефлона замена при необходимости | 1h | 2026-09-24 09:00 A | 2026-09-24 10:00 A |  | 100% |  |  |  | start no earlier than 2026-09-24 09:00 | Некрасов А | 1h | 1h |
| 3168 | 12.4.26 | **квадропак** | 54.12d | 2026-08-12 09:00 A | 2026-10-15 10:00 |  | 46% | 29.14d | 105.47d |  |  |  | 7.5h | 3h |
| 3169 | 12.4.26.1 | смазка вращающиющихся механизмов | 30min | 2026-10-01 09:00 | 2026-10-01 09:30 |  |  |  | 116.41d | 0d | start no earlier than 2026-10-01 09:00 | Бундин В | 0.5h |  |
| 3170 | 12.4.26.2 | протяжка креплений поворотных лап захвата | 30min | 2026-10-01 09:30 | 2026-10-01 10:00 | 3169 |  |  | 116.41d | 0d | start no earlier than 2026-03-05 09:00 | Бундин В | 0.5h |  |
| 3171 | 12.4.26.3 | чистка вала ленты выгрзного транспортера | 30min | 2026-10-01 10:00 | 2026-10-01 10:30 | 3170 |  |  | 116.41d |  | start no earlier than 2026-03-31 08:00 | Бундин В | 0.5h |  |
| 3172 | 12.4.26.4 | осмотр приводной системы нории / смазка | 30min | 2026-08-12 09:00 | 2026-08-12 09:30 |  |  |  | 159.53d |  | start no earlier than 2026-08-12 09:00 | Тимофеев В | 0.5h |  |
| 3173 | 12.4.26.5 | осмотр приводной системы нории / смазка | 30min | 2026-08-20 09:00 | 2026-08-20 09:30 |  |  |  | 153.53d |  | start no earlier than 2026-08-20 09:00 | Бобренок В | 0.5h |  |
| 3174 | 12.4.26.6 | осмотр приводной системы нории / смазка | 30min | 2026-09-03 09:00 A | 2026-09-03 09:30 A |  | 100% |  |  |  | start no earlier than 2026-09-03 09:00 | Макаревич А | 0.5h | 0.5h |
| 3175 | 12.4.26.7 | протяжка креплений поворотных лап захвата | 30min | 2026-09-03 09:00 A | 2026-09-03 09:30 A |  | 100% |  |  |  | start no earlier than 2026-09-03 09:00 | Макаревич А | 0.5h | 0.5h |
| 3176 | 12.4.26.8 | снимать ковши для доступка к подшинику, нуждающего в смазке( сообщил Некрасов) | 2h | 2026-09-24 09:00 A | 2026-09-24 11:00 A |  | 100% |  |  |  | start no earlier than 2026-09-24 09:00 | Бундин В | 2h | 2h |
| 3177 | 12.4.26.9 | Ревизия редуктора транспортной ленты, бежит масло | 1h | 2026-10-15 09:00 | 2026-10-15 10:00 |  |  |  | 105.47d |  | start no earlier than 2026-10-15 09:00 | Некрасов; Бобренок В | 2h |  |

| ID | WBS | Task | Duration | Start | Finish | Complete | Remaining | Total slack | Constraint | Resources | Work | Actual work |
| --- | --- | --- | --- | --- | --- | --- | --- | --- | --- | --- | --- | --- |
| 3178 | 12.4.27 | **БЕСТРОМ** | 738.12d | 2023-12-28 09:00 A | 2026-10-15 10:00 | 80% | 150.54d | 105.47d |  | ТО | 1105.83h | 76.33h |
| 3179 | 12.4.27.1 | чистка тен с демантожем | 2.5h | 2026-03-05 09:00 A | 2026-03-05 11:30 A | 100% |  |  | start no earlier than 2026-03-05 09:00 | Бундин В | 2.5h | 2.5h |
| 3180 | 12.4.27.2 | ослабить ленту для чистки барабана / натяжка после чистки | 10min | 2026-03-12 09:00 A | 2026-03-12 09:10 A | 100% |  |  | start no earlier than 2026-03-12 09:00 | Бундин В | 0.17h | 0.17h |
| 3181 | 12.4.27.3 | чистка тенов | 1h | 2026-05-14 09:00 A | 2026-05-14 10:00 A | 100% |  |  | start no earlier than 2026-05-14 09:00 | Макаревич А | 1h | 1h |
| 3182 | 12.4.27.4 | чистка тенов | 2h | 2026-07-14 09:00 | 2026-07-14 11:00 |  |  | 180.34d | start no earlier than 2026-07-14 09:00 | Бундин В | 2h |  |
| 3183 | 12.4.27.5 | конвейер и вибробункер БЕСТРОМ | 2h | 2023-12-28 09:00 | 2023-12-28 11:00 |  |  | 843.34d | start no earlier than 2023-12-28 09:00 | ТО | 2h |  |
| 3184 | 12.4.27.6 | бестром чистка тен, проверка тефлона, роликов (согласовать с мастером) | 2h | 2026-07-08 09:00 A | 2026-07-08 11:00 A | 100% |  |  | start no earlier than 2026-07-08 09:00 | Бобренок В | 2h | 2h |
| 3185 | 12.4.27.7 | бестром чистка тен, проверка тефлона, роликов (согласовать с мастером) | 1h | 2026-07-30 09:00 A | 2026-07-30 10:00 A | 100% |  |  | start no earlier than 2026-07-30 09:00 | Тимофеев В | 1h | 1h |
| 3186 | 12.4.27.8 | бестром чистка тен, проверка тефлона, роликов (согласовать с мастером) | 1h | 2026-08-13 09:00 A | 2026-08-13 10:00 A | 100% |  |  | start no earlier than 2026-08-13 09:00 | Тимофеев В | 1h | 1h |
| 3187 | 12.4.27.9 | бестром чистка тен, проверка тефлона, роликов (согласовать с мастером) | 1h | 2026-08-20 09:00 A | 2026-08-20 10:00 A | 100% |  |  | start no earlier than 2026-08-20 09:00 | Дедов В | 1h | 1h |
| 3188 | 12.4.27.10 | бестром чистка тен, проверка тефлона, роликов (согласовать с мастером) | 1h | 2026-09-03 09:00 A | 2026-09-03 10:00 A | 100% |  |  | start no earlier than 2026-09-03 09:00 | Макаревич А | 1h | 1h |
| 3189 | 12.4.27.11 | Замена линейного подшипника ISKRA KH2030-PP (согласование с Домоводовым) не делали, все норм там) | 2h | 2026-09-03 09:00 A | 2026-09-03 11:00 A | 100% |  |  | start no earlier than 2026-09-03 09:00 | Макаревич А | 2h | 2h |
| 3190 | 12.4.27.12 | ослабить ленту для чистки барабана / натяжка после чистки | 10min | 2026-09-10 09:00 | 2026-09-10 09:10 |  |  | 137.57d | start no earlier than 2026-09-10 09:00 | Макаревич А | 0.17h |  |
| 3191 | 12.4.27.13 | Замена поролоновой губки на горизонтальных тенах запайки пакетов | 30min | 2026-09-17 09:00 A | 2026-09-17 09:30 A | 100% |  |  | start no earlier than 2026-09-17 09:00 | Бобренок В | 0.5h | 0.5h |
| 3192 | 12.4.27.14 | Чистка ТЭНов | 2h | 2026-09-16 09:00 A | 2026-09-16 11:00 A | 100% |  |  | start no earlier than 2026-09-16 08:00 | Бундин В | 2h | 2h |
| 3193 | 12.4.27.15 | Чистка ТЭНов | 2h | 2026-09-24 09:00 A | 2026-09-24 11:00 A | 100% |  |  | start no earlier than 2026-09-24 09:00 | Бундин В | 2h | 2h |
| 3194 | 12.4.27.16 | Проверка контактов их продувка и их протяжка. Проверка эелектрической части, устранение неисправностей. | 4h | 2026-10-08 09:00 A | 2026-10-08 13:00 A | 100% |  |  | start no earlier than 2026-10-08 09:00 | Дедов В | 4h | 4h |
| 3195 | 12.4.27.17 | Чистка тенов, проверка тефлона, роликов | 1h | 2026-10-15 09:00 | 2026-10-15 10:00 |  |  | 105.47d | start no earlier than 2026-10-15 09:00 | Труфанов А | 1h |  |
| 3196 | 12.4.28 | **электрооборудование** | 700.02d? | 2023-12-28 09:00 A | 2026-09-03 09:10 |  | 696.66d? | 143.57d |  |  | 69.33h | 0.33h |
| 3197 | 12.4.28.1 | ВРУ3 | 30min | 2024-10-03 09:00 | 2024-10-03 09:30 |  |  | 643.53d | start no earlier than 2024-10-03 09:00 | Тимофеев В | 0.5h |  |
| 3198 | 12.4.28.2 | ВРУ4 | 2h | 2023-12-28 09:00 | 2023-12-28 11:00 |  |  | 843.34d | start no earlier than 2023-12-28 09:00 | ТО | 2h |  |
| 3199 | 12.4.28.3 | ВРУ5 | 2h | 2023-12-28 09:00 | 2023-12-28 11:00 |  |  | 843.34d | start no earlier than 2023-12-28 09:00 | ТО | 2h |  |
| 3200 | 12.4.28.4 | ВРУ6 | 2h | 2023-12-28 09:00 | 2023-12-28 11:00 |  |  | 843.34d | start no earlier than 2023-12-28 09:00 | ТО | 2h |  |
| 3201 | 12.4.28.5 | ЩР4 у печи | 2h | 2023-12-28 09:00 | 2023-12-28 11:00 |  |  | 843.34d | start no earlier than 2023-12-28 09:00 | ТО | 2h |  |
| 3202 | 12.4.28.6 | ЩО1 у печи | 30min | 2024-10-03 09:00 | 2024-10-03 09:30 |  |  | 643.53d | start no earlier than 2024-10-03 09:00 | Тимофеев В | 0.5h |  |
| 3203 | 12.4.28.7 | ЩР5 у жиротопки | 2h | 2023-12-28 09:00 | 2023-12-28 11:00 |  |  | 843.34d | start no earlier than 2023-12-28 09:00 | ТО | 2h |  |
| 3204 | 12.4.28.8 | ЩР6 упаковка стна жир | 2h | 2023-12-28 09:00 | 2023-12-28 11:00 |  |  | 843.34d | start no earlier than 2023-12-28 09:00 | ТО | 2h |  |
| 3205 | 12.4.28.9 | ЩР7 упаковка колонна | 2h | 2023-12-28 09:00 | 2023-12-28 11:00 |  |  | 843.34d | start no earlier than 2023-12-28 09:00 | ТО | 2h |  |
| 3206 | 12.4.28.10 | ЩР8 склад навесок | 2h | 2023-12-28 09:00 | 2023-12-28 11:00 |  |  | 843.34d | start no earlier than 2023-12-28 09:00 | ТО | 2h |  |
| 3207 | 12.4.28.11 | ЩР9 2 этаж | 2h | 2023-12-28 09:00 | 2023-12-28 11:00 |  |  | 843.34d | start no earlier than 2023-12-28 09:00 | ТО | 2h |  |
| 3208 | 12.4.28.12 | электрокотел 1 - 2 цех | 2h | 2023-12-28 09:00 | 2023-12-28 11:00 |  |  | 843.34d | start no earlier than 2023-12-28 09:00 | ТО | 2h |  |
| 3209 | 12.4.28.13 | электрокотел 2 - 2 цех | 1d? | 2023-12-28 09:00 | 2023-12-28 18:00 |  |  | 842.59d | start no earlier than 2023-12-28 09:00 | ТО | 8h |  |
| 3210 | 12.4.28.14 | электрокотел 3 - 2 цех | 1d? | 2023-12-28 09:00 | 2023-12-28 18:00 |  |  | 842.59d | start no earlier than 2023-12-28 09:00 | ТО | 8h |  |
| 3211 | 12.4.28.15 | бойлер 4 2 цех раковина | 1d? | 2023-12-28 09:00 | 2023-12-28 18:00 |  |  | 842.59d | start no earlier than 2023-12-28 09:00 | ТО | 8h |  |
| 3212 | 12.4.28.16 | бойлер 5 2 цех душ М | 1d? | 2023-12-28 09:00 | 2023-12-28 18:00 |  |  | 842.59d | start no earlier than 2023-12-28 09:00 | ТО | 8h |  |
| 3213 | 12.4.28.17 | бойлер 6 2 цех душ Ж | 1d? | 2023-12-28 09:00 | 2023-12-28 18:00 |  |  | 842.59d | start no earlier than 2023-12-28 09:00 | ТО | 8h |  |
| 3214 | 12.4.28.18 | насос санитарный | 1d? | 2023-12-28 09:00 | 2023-12-28 18:00 |  |  | 842.59d | start no earlier than 2023-12-28 09:00 | ТО | 8h |  |
| 3215 | 12.4.28.19 | ЩР4 у печи продувка | 10min | 2026-09-03 09:00 A | 2026-09-03 09:10 A | 100% |  |  | start no earlier than 2026-09-03 09:00 | Труфанов А | 0.17h | 0.17h |
| 3216 | 12.4.28.20 | ЩО1 у печи продувка | 10min | 2026-09-03 09:00 A | 2026-09-03 09:10 A | 100% |  |  | start no earlier than 2026-09-03 09:00 | Труфанов А | 0.17h | 0.17h |

| ID | WBS | Task | Duration | Start | Finish | Complete | Remaining | Total slack | Constraint | Resources | Work | Actual work |
| --- | --- | --- | --- | --- | --- | --- | --- | --- | --- | --- | --- | --- |
| 3217 | 12.4.29 | **Компрессор 2 цех** | 33.06d | 2026-08-06 09:00 A | 2026-09-17 09:30 | 99% | 0d | 0d |  | ТО | 4h | 4h |
| 3218 | 12.4.29.1 | продувка фильтров | 30min | 2026-08-06 09:00 A | 2026-08-06 09:30 A | 100% |  |  | start no earlier than 2026-08-06 09:00 | Тимофеев В | 0.5h | 0.5h |
| 3219 | 12.4.29.2 | слив конденсат с осушителя | 30min | 2026-08-06 09:00 A | 2026-08-06 09:30 A | 100% |  |  | start no earlier than 2026-08-06 09:00 | Тимофеев В | 0.5h | 0.5h |
| 3220 | 12.4.29.3 | слив конденсат с осушителя | 30min | 2026-08-20 09:00 A | 2026-08-20 09:30 A | 100% |  |  | start no earlier than 2026-08-20 09:00 | Дедов В | 0.5h | 0.5h |
| 3221 | 12.4.29.4 | продувка фильтров | 30min | 2026-08-29 09:00 A | 2026-08-31 09:30 A | 100% |  |  | start no earlier than 2026-08-29 09:00 | Макаревич А | 0.5h | 0.5h |
| 3222 | 12.4.29.5 | слив конденсат с осушителя | 30min | 2026-08-29 09:00 A | 2026-08-31 09:30 A | 100% |  |  | start no earlier than 2026-08-29 09:00 | Макаревич А | 0.5h | 0.5h |
| 3223 | 12.4.29.6 | слив конденсат с осушителя | 30min | 2026-08-29 09:00 A | 2026-08-31 09:30 A | 100% |  |  | start no earlier than 2026-08-29 09:00 | Макаревич А | 0.5h | 0.5h |
| 3224 | 12.4.29.7 | слив конденсат с осушителя | 30min | 2026-09-03 09:00 A | 2026-09-03 09:30 A | 100% |  |  | start no earlier than 2026-09-03 09:00 | Макаревич А | 0.5h | 0.5h |
| 3225 | 12.4.29.8 | продувка фильтров (дать размеры фильтра) | 30min | 2026-09-17 09:00 A | 2026-09-17 09:30 A | 100% |  |  | start no earlier than 2026-09-17 09:00 | Труфанов А | 0.5h | 0.5h |
| 3226 | 12.4.30 | **насосная станция 2 цех** | 130.06d | 2026-03-05 09:00 A | 2026-09-03 09:30 A | 100% |  |  |  |  | 1h | 1h |
| 3227 | 12.4.30.1 | замена фильтров | 30min | 2026-03-05 09:00 A | 2026-03-05 09:30 A | 100% |  |  | start no earlier than 2026-03-05 09:00 | Тимофеев В | 0.5h | 0.5h |
| 3228 | 12.4.30.2 | замена фильтров | 30min | 2026-09-03 09:00 A | 2026-09-03 09:30 A | 100% |  |  | start no earlier than 2026-09-03 09:00 | Труфанов А | 0.5h | 0.5h |
| 3229 | 12.4.31 | **приточнго-вытяжная венгтиляция и смесительный узел** | 127.06d | 2026-04-16 09:00 A | 2026-10-01 09:30 A | 100% |  |  |  |  | 2.5h | 2.5h |
| 3230 | 12.4.31.1 | замена фильтра | 1h | 2026-04-16 09:00 A | 2026-04-16 10:00 A | 100% |  |  | start no earlier than 2026-04-16 09:00 | Труфанов А; Некрасов А | 2h | 2h |
| 3231 | 12.4.31.2 | Осмотр состояния фильтра приточки/замена | 30min | 2026-10-01 09:00 A | 2026-10-01 09:30 A | 100% |  |  | start no earlier than 2026-10-01 09:00 | Труфанов А | 0.5h | 0.5h |
| 3232 | 12.4.32 | **кондиционер 1** | 640.04d? | 2024-04-18 09:00 A | 2026-09-24 09:20 | 99% | 0d? | 0d |  | ТО | 5070.33h | 4827.32h |
| 3233 | 12.4.32.1 | чистка фильтра | 1h | 2024-04-18 09:00 A | 2024-04-18 10:00 A | 100% |  |  | start no earlier than 2024-04-18 08:00 | Черепанов И; Некрасов А | 2h | 2h |
| 3234 | 12.4.32.2 | чистка фильтра | 20min | 2026-03-05 09:00 A | 2026-03-05 09:20 A | 100% |  |  | start no earlier than 2026-03-05 09:00 | Некрасов А; Бундин В | 0.67h | 0.67h |
| 3235 | 12.4.32.3 | чистка фильтров | 1d? | 2026-06-25 09:00 A | 2026-06-25 18:00 A | 100% |  |  | start no earlier than 2026-06-25 09:00 | Тимофеев В; Дедов В | 16h | 16h |
| 3236 | 12.4.32.4 | чистка фильтров | 20min | 2026-07-14 09:00 A | 2026-07-14 09:20 A | 100% |  |  | start no earlier than 2026-07-14 09:00 | Некрасов А; Бундин В | 0.67h | 0.67h |
| 3237 | 12.4.32.5 | чистка фильтров | 20min | 2026-08-13 09:00 A | 2026-08-13 09:20 A | 100% |  |  | start no earlier than 2026-08-13 09:00 | Некрасов А; Труфанов А | 0.67h | 0.67h |
| 3238 | 12.4.32.6 | чистка фильтров | 20min | 2026-09-03 09:00 A | 2026-09-03 09:20 A | 100% |  |  | start no earlier than 2026-09-03 09:00 | Некрасов А; Тимофеев В | 0.67h | 0.67h |
| 3239 | 12.4.32.7 | чистка фильтров | 20min | 2026-09-17 09:00 A | 2026-09-17 09:20 A | 100% |  |  | start no earlier than 2026-09-17 09:00 | Тимофеев В; Бобренок В | 0.67h | 0.67h |
| 3240 | 12.4.32.8 | чистка фильтров | 20min | 2026-09-24 09:00 A | 2026-09-24 09:20 A | 100% |  |  | start no earlier than 2026-09-24 09:00 | Тимофеев В; Бундин В | 0.67h | 0.67h |

| ID | WBS | Task | Type | Duration | Start | Finish | Complete | Remaining | Total slack | Constraint | Resources | Work | Actual work |
| --- | --- | --- | --- | --- | --- | --- | --- | --- | --- | --- | --- | --- | --- |
| 3241 | 12.4.33 | **кондиционер 2** |  | 640.04d? | 2024-04-18 09:00 A | 2026-09-24 09:20 | 99% | 0d? | 0d |  | ТО | 5071.5h | 4983.33h |
| 3242 | 12.4.33.1 | чистка фильтров |  | 1d? | 2026-06-25 09:00 A | 2026-06-25 18:00 A | 100% |  |  | start no earlier than 2026-06-25 09:00 | Тимофеев В; Дедов В | 16h | 16h |
| 3243 | 12.4.33.2 | чистка фильтра |  | 1h | 2024-04-18 09:00 A | 2024-04-18 10:00 A | 100% |  |  | start no earlier than 2024-04-18 08:00 | Черепанов И; Некрасов А | 2h | 2h |
| 3244 | 12.4.33.3 | чистка фильтра |  | 20min | 2026-03-05 09:00 A | 2026-03-05 09:20 A | 100% |  |  | start no earlier than 2026-03-05 09:00 | Некрасов А; Бундин В | 0.67h | 0.67h |
| 3245 | 12.4.33.4 | чистка фильтров |  | 20min | 2026-07-14 09:00 A | 2026-07-14 09:20 A | 100% |  |  | start no earlier than 2026-07-14 09:00 | Некрасов А; Бундин В | 0.67h | 0.67h |
| 3246 | 12.4.33.5 | чистка фильтров |  | 20min | 2026-08-13 09:00 A | 2026-08-13 09:20 A | 100% |  |  | start no earlier than 2026-08-13 09:00 | Некрасов А; Труфанов А | 0.67h | 0.67h |
| 3247 | 12.4.33.6 | чистка фильтров |  | 20min | 2026-08-13 09:00 A | 2026-08-13 09:20 A | 100% |  |  | start no earlier than 2026-08-13 09:00 | Некрасов А; Труфанов А | 0.67h | 0.67h |
| 3248 | 12.4.33.7 | чистка фильтров |  | 20min | 2026-09-03 09:00 A | 2026-09-03 09:20 A | 100% |  |  | start no earlier than 2026-09-03 09:00 | Некрасов А; Тимофеев В | 0.67h | 0.67h |
| 3249 | 12.4.33.8 | чистка фильтров |  | 30min | 2026-09-17 09:00 A | 2026-09-17 09:30 A | 100% |  |  | start no earlier than 2026-09-17 09:00 | Тимофеев В; Бобренок В | 1h | 1h |
| 3250 | 12.4.33.9 | чистка фильтров |  | 20min | 2026-09-24 09:00 A | 2026-09-24 09:20 A | 100% |  |  | start no earlier than 2026-09-24 09:00 | Тимофеев В; Бундин В | 0.67h | 0.67h |
| 3251 | 12.4.34 | **кондиционер 3** |  | 150.04d | 2026-03-05 09:00 A | 2026-09-24 09:20 A | 100% |  |  |  |  | 4.67h | 4.67h |
| 3252 | 12.4.34.1 | чистка фильтра |  | 20min | 2026-03-05 09:00 A | 2026-03-05 09:20 A | 100% |  |  | start no earlier than 2026-03-05 09:00 | Некрасов А; Бундин В | 0.67h | 0.67h |
| 3253 | 12.4.34.2 | чистка фильтров |  | 20min | 2026-07-14 09:00 A | 2026-07-14 09:20 A | 100% |  |  | start no earlier than 2026-07-14 09:00 | Некрасов А; Бундин В | 0.67h | 0.67h |
| 3254 | 12.4.34.3 | чистка фильтров |  | 20min | 2026-08-13 09:00 A | 2026-08-13 09:20 A | 100% |  |  | start no earlier than 2026-08-13 09:00 | Некрасов А; Труфанов А | 0.67h | 0.67h |
| 3255 | 12.4.34.4 | чистка фильтров |  | 20min | 2026-08-13 09:00 A | 2026-08-13 09:20 A | 100% |  |  | start no earlier than 2026-08-13 09:00 | Некрасов А; Труфанов А | 0.67h | 0.67h |
| 3256 | 12.4.34.5 | чистка фильтров |  | 20min | 2026-09-03 09:00 A | 2026-09-03 09:20 A | 100% |  |  | start no earlier than 2026-09-03 09:00 | Некрасов А; Тимофеев В | 0.67h | 0.67h |
| 3257 | 12.4.34.6 | чистка фильтров |  | 20min | 2026-09-17 09:00 A | 2026-09-17 09:20 A | 100% |  |  | start no earlier than 2026-09-17 09:00 | Тимофеев В; Бобренок В | 0.67h | 0.67h |
| 3258 | 12.4.34.7 | чистка фильтров |  | 20min | 2026-09-24 09:00 A | 2026-09-24 09:20 A | 100% |  |  | start no earlier than 2026-09-24 09:00 | Тимофеев В; Бундин В | 0.67h | 0.67h |
| 3259 | 12.4.35 | **электроштабелер** |  | 2.38d | 2026-08-11 09:00 A | 2026-08-13 12:00 A | 100% |  |  |  | ТО | 22.25h | 22.25h |
| 3260 | 12.4.35.1 | **хруст в колесе устранить** |  | 2.38d | 2026-08-11 09:00 A | 2026-08-13 12:00 A | 100% |  |  |  |  | 3.25h | 3.25h |
| 3261 | 12.4.35.1.1 | хруст с правой стороны штабелера- ревизия, скорее всего подшипник (экструдер). Осмотр, доложить | manual | 15min | 2026-08-11 09:00 A | 2026-08-11 09:15 A | 100% |  |  | start no earlier than 2026-08-11 09:00 | Тимофеев В | 0.25h | 0.25h |
| 3262 | 12.4.35.1.2 | ремонт замена подшипник колесо штабелер |  | 3h | 2026-08-13 09:00 A | 2026-08-13 12:00 A | 100% |  |  | start no earlier than 2026-08-13 09:00 | Тимофеев В | 3h | 3h |
| 3263 | 12.4.36 | **Лаборатория** |  | 0.25d | 2026-09-18 09:00 A | 2026-09-18 11:00 A | 100% |  |  |  |  | 2h | 2h |
| 3264 | 12.4.36.1 | Прочистка дистилятора/ТО, очистка накипи, инструкция смотреть в лаборатории |  | 2h | 2026-09-18 09:00 A | 2026-09-18 11:00 A | 100% |  |  | start no earlier than 2026-09-18 09:00 | Бобренок В | 2h | 2h |

| ID | WBS | Task | Type | Duration | Start | Finish | Complete | Remaining | Total slack | Constraint | Resources | Work | Actual work |
| --- | --- | --- | --- | --- | --- | --- | --- | --- | --- | --- | --- | --- | --- |
| 3265 | 12.5 | **3 цех** |  | 1d? | 2023-12-28 09:00 | 2023-12-28 18:00 |  |  | 842.59d |  | ТО | 88h |  |
| 3266 | 12.5.1 | **электрооборудование** |  | 1d? | 2023-12-28 09:00 | 2023-12-28 18:00 |  |  | 842.59d |  | ТО | 48h |  |
| 3267 | 12.5.1.1 | ВРУ7 |  | 1d? | 2023-12-28 09:00 | 2023-12-28 18:00 |  |  | 842.59d | start no earlier than 2023-12-28 09:00 | ТО | 8h |  |
| 3268 | 12.5.1.2 | ОЩР |  | 1d? | 2023-12-28 09:00 | 2023-12-28 18:00 |  |  | 842.59d | start no earlier than 2023-12-28 09:00 | ТО | 8h |  |
| 3269 | 12.5.1.3 | электрокотел 4 - 3 цех |  | 1d? | 2023-12-28 09:00 | 2023-12-28 18:00 |  |  | 842.59d | start no earlier than 2023-12-28 09:00 | ТО | 8h |  |
| 3270 | 12.5.1.4 | электрокотел 5 - 3 цех |  | 1d? | 2023-12-28 09:00 | 2023-12-28 18:00 |  |  | 842.59d | start no earlier than 2023-12-28 09:00 | ТО | 8h |  |
| 3271 | 12.5.1.5 | электрокотел 6 - 3 цех |  | 1d? | 2023-12-28 09:00 | 2023-12-28 18:00 |  |  | 842.59d | start no earlier than 2023-12-28 09:00 | ТО | 8h |  |
| 3272 | 12.5.2 | электроштабелер 1 |  | 1d? | 2023-12-28 09:00 | 2023-12-28 18:00 |  |  | 842.59d | start no earlier than 2023-12-28 09:00 | ТО | 8h |  |
| 3273 | 12.5.3 | электроштабелер 2 |  | 1d? | 2023-12-28 09:00 | 2023-12-28 18:00 |  |  | 842.59d | start no earlier than 2023-12-28 09:00 | ТО | 8h |  |
| 3274 | 12.5.4 | вилочный погрузчик 1 |  | 1d? | 2023-12-28 09:00 | 2023-12-28 18:00 |  |  | 842.59d | start no earlier than 2023-12-28 09:00 | ТО | 8h |  |
| 3275 | 12.5.5 | вилочный погрузчик 2 |  | 1d? | 2023-12-28 09:00 | 2023-12-28 18:00 |  |  | 842.59d | start no earlier than 2023-12-28 09:00 | ТО | 8h |  |
| 3276 | 12.6 | **5 цех** |  | 656.25d? | 2023-12-28 09:00 A | 2026-07-03 11:00 | 10% | 593.75d? | 187.34d |  | ТО | 6302h | 906.67h |
| 3277 | 12.6.1 | насосная станция 5 цех |  | 1d? | 2023-12-28 09:00 | 2023-12-28 18:00 |  |  | 842.59d | start no earlier than 2023-12-28 09:00 | ТО | 8h |  |
| 3278 | 12.6.2 | растариватель |  | 1d? | 2023-12-28 09:00 | 2023-12-28 18:00 |  |  | 842.59d | start no earlier than 2023-12-28 09:00 | ТО | 8h |  |
| 3279 | 12.6.3 | **шнек 1 растариватель-смеситель** |  | 65.25d | 2026-04-03 09:00 A | 2026-07-03 11:00 | 67% | 21.75d | 0d |  | ТО | 492h | 342.67h |
| 3280 | 12.6.3.1 | замена подшипник нижний | manual | 2h | 2026-04-03 09:00 A | 2026-04-03 11:00 A | 100% |  |  |  | Некрасов А; Труфанов А | 4h | 4h |
| 3281 | 12.6.3.2 | ревизия подшипник верхний - не снимается.ревизия - все ок, мазка | manual | 2h | 2026-04-03 09:00 A | 2026-04-03 11:00 A | 100% |  |  |  | Некрасов А; Труфанов А | 4h | 4h |
| 3282 | 12.6.3.3 | осмотр износа, смазка | manual | 2h | 2026-07-03 09:00 | 2026-07-03 11:00 |  |  |  |  | Тимофеев В | 2h |  |
| 3283 | 12.6.4 | смеситель СМ1500 |  | 1d? | 2023-12-28 09:00 | 2023-12-28 18:00 |  |  | 842.59d | start no earlier than 2023-12-28 09:00 | ТО | 8h |  |
| 3284 | 12.6.5 | **шнек 2 смеситель -дробилка** |  | 68.5d? | 2026-03-24 09:00 A | 2026-06-26 13:00 | 67% | 22.83d? | 192.09d |  | ТО | 440h | 64h |
| 3285 | 12.6.5.1 | ремонт вала, т.к съело посадку на верх подшипник |  | 1d? | 2026-03-24 09:00 A | 2026-03-24 18:00 A | 100% |  |  | start no earlier than 2026-03-24 09:00 | Труфанов А; Некрасов А | 16h | 16h |
| 3286 | 12.6.5.2 | осмотр износа |  | 4h | 2026-06-26 09:00 | 2026-06-26 13:00 |  |  | 192.09d | start no earlier than 2026-06-26 09:00 | Тимофеев В | 4h |  |
| 3287 | 12.6.6 | **дробилка ДМС3** |  | 0.5d | 2026-05-11 09:00 | 2026-05-11 13:00 |  |  | 226.09d |  | ТО | 8h |  |
| 3288 | 12.6.6.1 | замена подшипник буксы сторона мотора |  | 4h | 2026-05-11 09:00 | 2026-05-11 13:00 |  |  | 226.09d | start no earlier than 2026-05-10 09:00 | Бундин В | 4h |  |
| 3289 | 12.6.7 | шнек 3 дробилка-накопитель |  | 1d? | 2023-12-28 09:00 | 2023-12-28 18:00 |  |  | 842.59d | start no earlier than 2023-12-28 09:00 | ТО | 8h |  |
| 3290 | 12.6.8 | дробилка 11квт |  | 1d? | 2023-12-28 09:00 | 2023-12-28 18:00 |  |  | 842.59d | start no earlier than 2023-12-28 09:00 | ТО | 8h |  |
| 3291 | 12.6.9 | дробилка 7,5квт |  | 1d? | 2023-12-28 09:00 | 2023-12-28 18:00 |  |  | 842.59d | start no earlier than 2023-12-28 09:00 | ТО | 8h |  |
| 3292 | 12.6.10 | вибросито А |  | 1d? | 2023-12-28 09:00 | 2023-12-28 18:00 |  |  | 842.59d | start no earlier than 2023-12-28 09:00 | ТО | 8h |  |
| 3293 | 12.6.11 | вибросито Б |  | 1d? | 2023-12-28 09:00 | 2023-12-28 18:00 |  |  | 842.59d | start no earlier than 2023-12-28 09:00 | ТО | 8h |  |

| ID | WBS | Task | Type | Duration | Start | Finish | Predecessors | Complete | Remaining | Total slack | Free slack | Constraint | Resources | Work | Actual work |
| --- | --- | --- | --- | --- | --- | --- | --- | --- | --- | --- | --- | --- | --- | --- | --- |
| 3294 | 12.6.12 | **электрооборудование** |  | 1d? | 2023-12-28 09:00 | 2023-12-28 18:00 |  |  |  | 842.59d |  |  | ТО | 48h |  |
| 3295 | 12.6.12.1 | ВРУ7 |  | 1d? | 2023-12-28 09:00 | 2023-12-28 18:00 |  |  |  | 842.59d |  | start no earlier than 2023-12-28 09:00 | ТО | 8h |  |
| 3296 | 12.6.12.2 | ЩР2 |  | 1d? | 2023-12-28 09:00 | 2023-12-28 18:00 |  |  |  | 842.59d |  | start no earlier than 2023-12-28 09:00 | ТО | 8h |  |
| 3297 | 12.6.12.3 | котельная газовая 5 цех |  | 1d? | 2023-12-28 09:00 | 2023-12-28 18:00 |  |  |  | 842.59d |  | start no earlier than 2023-12-28 09:00 | ТО | 8h |  |
| 3298 | 12.6.12.4 | бойлеры душ |  | 1d? | 2023-12-28 09:00 | 2023-12-28 18:00 |  |  |  | 842.59d |  | start no earlier than 2023-12-28 09:00 | ТО | 8h |  |
| 3299 | 12.6.12.5 | вентилятор вытяжной в дробилке |  | 1d? | 2023-12-28 09:00 | 2023-12-28 18:00 |  |  |  | 842.59d |  | start no earlier than 2023-12-28 09:00 | ТО | 8h |  |
| 3300 | 12.7 | **адм корпус** |  | 1d? | 2023-12-28 09:00 | 2023-12-28 18:00 |  |  |  | 842.59d |  |  | ТО | 24h |  |
| 3301 | 12.7.1 | бойлер туалет |  | 1d? | 2023-12-28 09:00 | 2023-12-28 18:00 |  |  |  | 842.59d |  | start no earlier than 2023-12-28 09:00 | ТО | 8h |  |
| 3302 | 12.7.2 | ОЩР |  | 1d? | 2023-12-28 09:00 | 2023-12-28 18:00 |  |  |  | 842.59d |  | start no earlier than 2023-12-28 09:00 | ТО | 8h |  |
| 3303 | 12.8 | **склад упаковки** |  | 1d? | 2023-12-28 09:00 | 2023-12-28 18:00 |  |  |  | 842.59d |  |  | ТО | 32h |  |
| 3304 | 12.8.1 | **электрооборудование** |  | 1d? | 2023-12-28 09:00 | 2023-12-28 18:00 |  |  |  | 842.59d |  |  | ТО | 24h |  |
| 3305 | 12.8.1.1 | ЩО и ЩР |  | 1d? | 2023-12-28 09:00 | 2023-12-28 18:00 |  |  |  | 842.59d |  | start no earlier than 2023-12-28 09:00 | ТО | 8h |  |
| 3306 | 12.8.1.2 | санитарный насос |  | 1d? | 2023-12-28 09:00 | 2023-12-28 18:00 |  |  |  | 842.59d |  | start no earlier than 2023-12-28 09:00 | ТО | 8h |  |
| 3307 | 12.9 | **цех наполнителей** |  | 1d? | 2023-12-28 09:00 | 2023-12-28 18:00 |  |  |  | 842.59d |  |  | ТО | 56h |  |
| 3308 | 12.9.1 | ЩО и ЩР |  | 1d? | 2023-12-28 09:00 | 2023-12-28 18:00 |  |  |  | 842.59d |  | start no earlier than 2023-12-28 09:00 | ТО | 8h |  |
| 3309 | 12.9.2 | комппрессор |  | 1d? | 2023-12-28 09:00 | 2023-12-28 18:00 |  |  |  | 842.59d |  | start no earlier than 2023-12-28 09:00 | ТО | 8h |  |
| 3310 | 12.9.3 | конвейер загрузки |  | 1d? | 2023-12-28 09:00 | 2023-12-28 18:00 |  |  |  | 842.59d |  | start no earlier than 2023-12-28 09:00 | ТО | 8h |  |
| 3311 | 12.9.4 | дозатор НОТИС |  | 1d? | 2023-12-28 09:00 | 2023-12-28 18:00 |  |  |  | 842.59d |  | start no earlier than 2023-12-28 09:00 | ТО | 8h |  |
| 3312 | 12.9.5 | запайщик |  | 1d? | 2023-12-28 09:00 | 2023-12-28 18:00 |  |  |  | 842.59d |  | start no earlier than 2023-12-28 09:00 | ТО | 8h |  |
| 3313 | 12.9.6 | вилочный погрузчик тойота |  | 1d? | 2023-12-28 09:00 | 2023-12-28 18:00 |  |  |  | 842.59d |  | start no earlier than 2023-12-28 09:00 | ТО | 8h |  |
| 3314 | 12.10 | Установка розетки под литийионный аккумклятор 3-х фазный, установить рядом с существующей ВРУ |  | 2h | 2026-07-08 09:00 | 2026-07-08 11:00 |  |  |  | 184.34d |  | start no earlier than 2026-07-08 08:00 | Бундин В | 2h |  |
| 3315 | 13 | **синий склад** |  | 136.56d? | 2026-05-07 09:00 A | 2026-11-02 14:30 |  | 36% | 87.92d? | 92.03d |  |  |  | 49.5h | 14h |
| 3316 | 13.1 | **ЗАМЕНА СВЕТИЛЬНИКОВ** |  | 9.56d? | 2026-10-20 09:00 | 2026-11-02 14:30 |  |  |  | 92.03d |  |  |  | 24.5h |  |
| 3317 | 13.1.1 | сборка леса по наряд допуску / перенос от офиса |  | 3h | 2026-10-20 09:00 | 2026-10-20 12:00 |  |  |  | 92.03d | 0d | start no earlier than 2026-10-20 09:00 | Труфанов А; Некрасов | 6h |  |
| 3318 | 13.1.2 | определить тип лампы |  | 1h | 2026-10-20 12:00 | 2026-10-20 13:00 | 3317 |  |  | 92.03d | 0d | start no earlier than 2026-10-19 08:00 | Труфанов А; Некрасов | 2h |  |
| 3319 | 13.1.3 | заявка на лампы |  | 15min | 2026-10-20 14:00 | 2026-10-20 14:15 | 3318 |  |  | 92.03d | 0d | start no earlier than 2026-10-19 08:00 | Зорькин В | 0.25h |  |
| 3320 | 13.1.4 | контроль доставка |  | 15min | 2026-10-29 14:15 | 2026-10-29 14:30 | 3319FS+7d |  |  | 92.03d | 0d | start no earlier than 2026-10-19 08:00 | Зорькин В | 0.25h |  |
| 3321 | 13.1.5 | замена |  | 1d? | 2026-10-30 14:30 | 2026-11-02 14:30 | 3320FS+1d |  |  | 92.03d |  | start no earlier than 2026-10-19 08:00 | Труфанов А; Некрасов | 16h |  |
| 3322 | 13.2 | Найти и подготовить к транспортировке оснастку для бестрома со стойкой для висения и для штабелера удлинитель изготовленный со швелеров |  | 1h | 2026-10-15 09:00 A | 2026-10-15 10:00 A |  | 100% |  |  |  | start no earlier than 2026-10-15 09:00 | Труфанов А; Некрасов | 2h | 2h |
| 3323 | 13.3 | установить на место крышки вентиляторов |  | 1h | 2026-08-17 09:00 A | 2026-08-17 10:00 A |  | 100% |  |  |  | start no earlier than 2026-08-17 09:00 | Бобренок В | 1h | 1h |
| 3324 | 13.4 | Монтаж доп освещения |  | 2h | 2026-09-26 09:00 A | 2026-09-26 11:00 A |  | 100% |  |  |  | start no earlier than 2026-09-26 09:00 | Бобренок В | 2h | 2h |
| 3325 | 13.5 | монтаж включателя света с улицы, возле вход. Двери |  | 3h | 2026-09-30 09:00 | 2026-09-30 12:00 |  |  |  | 117.22d |  | start no earlier than 2026-09-30 09:00 | Бобренок В | 3h |  |
| 3326 | 13.6 | расширить проем вверху для проезда погрузчиков, врезаются | manual | 1d | 2026-09-21 09:00 | 2026-09-21 18:00 |  |  |  |  |  | start no earlier than 2026-09-21 09:00 | Олег | 8h |  |
| 3327 | 13.7 | замерить диаметр крыльчатки двигателя экструдера, инфу передать мне |  | 1h | 2026-06-13 09:00 A | 2026-06-15 10:00 A |  | 100% |  |  |  | start no earlier than 2026-06-13 09:00 | Бобренок В | 1h | 1h |
| 3328 | 13.8 | найти амперметры 30А и 150А (сказать кол-во) |  | 2h | 2026-06-10 09:00 A | 2026-06-10 11:00 A |  | 100% |  |  |  | start no earlier than 2026-06-10 09:00 | Труфанов А | 2h | 2h |
| 3329 | 13.9 | Навести порядок на входе в синий склад |  | 2h | 2026-07-23 09:00 A | 2026-07-23 11:00 A |  | 100% |  |  |  | start no earlier than 2026-07-24 09:00 | Бундин В | 2h | 2h |
| 3330 | 13.10 | проверить и подписать все материалы в синем складе с Алексеем |  | 4h | 2026-05-07 09:00 A | 2026-05-07 13:00 A |  | 100% |  |  |  | start no earlier than 2026-05-07 09:00 | Шуранов Ю | 4h | 4h |

| ID | WBS | Task | Duration | Start | Finish | Predecessors | Complete | Constraint | Resources | Work | Actual work |
| --- | --- | --- | --- | --- | --- | --- | --- | --- | --- | --- | --- |
| 3331 | 14 | **хим лаб** | 652.25d? | 2024-01-11 08:00 A | 2026-07-13 11:00 A |  | 100% |  |  | 71.75h | 71.75h |
| 3332 | 14.1 | замена кран РР | 2h | 2026-07-13 09:00 A | 2026-07-13 11:00 A |  | 100% | start no earlier than 2026-07-13 09:00 | Тимофеев В | 2h | 2h |
| 3333 | 14.2 | ремонт термоконтроллера - замена реле / перепаять с сзоны ALARM | 1h | 2026-06-09 09:00 A | 2026-06-09 10:00 A |  | 100% | start no earlier than 2026-06-09 09:00 | Дедов В | 1h | 1h |
| 3334 | 14.3 | **усилить питание хим лаб, что бы не отключался автомат при вкл быт приборов** | 0.12d | 2026-05-29 09:00 A | 2026-05-29 10:00 A |  | 100% |  |  | 2h | 2h |
| 3335 | 14.3.1 | переключение питания хим лаб на отдельный ШУ | 1h | 2026-05-29 09:00 A | 2026-05-29 10:00 A |  | 100% | start no earlier than 2026-05-29 09:00 | Некрасов А; Бобренок В | 2h | 2h |
| 3336 | 14.4 | **ремонт бойлер вода - ПУН** | 10.25d | 2026-05-14 08:00 A | 2026-05-28 11:00 A |  | 100% |  |  | 4.75h | 4.75h |
| 3337 | 14.4.1 | замена из ЗИП | 1h | 2026-05-14 08:00 A | 2026-05-14 10:00 A |  | 100% | start no earlier than 2026-05-14 08:00 | Тимофеев В | 1h | 1h |
| 3338 | 14.4.2 | диагностика неисправности. Бойлер в слесарне | 1h | 2026-05-14 08:00 A | 2026-05-14 10:00 A |  | 100% | start no earlier than 2026-05-14 08:00 | Бобренок В | 1h | 1h |
| 3339 | 14.4.3 | заявка предохарнитель | 30min | 2026-05-15 09:00 A | 2026-05-15 09:30 A | 3338 | 100% | start no earlier than 2026-05-15 08:00 | Шуранов Ю | 0.5h | 0.5h |
| 3340 | 14.4.4 | контроль поставки | 15min | 2026-05-22 09:30 A | 2026-05-22 09:45 A | 3339FS+7d | 100% | start no earlier than 2026-05-15 08:00 | Шуранов Ю | 0.25h | 0.25h |
| 3341 | 14.4.5 | заменить на бойлере в слесарке термостата WY-S37A | 2h | 2026-05-28 09:00 A | 2026-05-28 11:00 A |  | 100% | start no earlier than 2026-05-28 09:00 | Тимофеев В | 2h | 2h |
| 3342 | 14.5 | **ремонт дистилятор** | 31d? | 2026-04-27 09:00 A | 2026-06-08 18:00 A |  | 100% |  |  | 17h | 17h |
| 3343 | 14.5.1 | заявка тен | 1h | 2026-04-27 09:00 A | 2026-04-27 10:00 A |  | 100% | start no earlier than 2026-04-27 09:00 | Шуранов Ю | 1h | 1h |
| 3344 | 14.5.2 | доставка | 1d? | 2026-06-05 09:00 A | 2026-06-05 18:00 A | 3343 | 100% | finish no earlier than 2026-06-05 18:00 | Карабанов | 8h | 8h |
| 3345 | 14.5.3 | замена. Больше не выбиывает | 1d? | 2026-06-05 18:00 A | 2026-06-08 18:00 A | 3344 | 100% | start no earlier than 2026-05-13 09:00 | Тимофеев В | 8h | 8h |
| 3346 | 14.6 | **ремонт АКВ_шесть** | 30d? | 2026-04-27 09:00 A | 2026-06-05 18:00 A |  | 100% |  |  | 11h | 11h |
| 3347 | 14.6.1 | заявка тен | 1h | 2026-04-27 09:00 A | 2026-04-27 10:00 A |  | 100% | start no earlier than 2026-04-27 09:00 | Шуранов Ю | 1h | 1h |
| 3348 | 14.6.2 | доставка | 1d? | 2026-06-05 09:00 A | 2026-06-05 18:00 A | 3347 | 100% | finish no earlier than 2026-06-05 18:00 | Карабанов | 8h | 8h |
| 3349 | 14.6.3 | замена | 2h | 2026-05-24 09:00 A | 2026-05-25 11:00 A |  | 100% | start no earlier than 2026-05-24 09:00 | Дедов В | 2h | 2h |
| 3350 | 14.7 | проверить прибор | 1d? | 2026-05-06 09:00 A | 2026-05-06 18:00 A |  | 100% | start no earlier than 2026-05-06 08:00 | Шуранов Ю | 8h | 8h |
| 3351 | 14.8 | датчик температуры ?? Заявка | 1d? | 2026-04-27 09:00 A | 2026-04-27 18:00 A |  | 100% | start no earlier than 2026-04-27 08:00 | Шуранов Ю | 8h | 8h |
| 3352 | 14.9 | дистилятор отключается ?? Заявка | 1d? | 2026-04-27 09:00 A | 2026-04-27 18:00 A |  | 100% | start no earlier than 2026-04-27 08:00 | Шуранов Ю | 8h | 8h |
| 3353 | 14.10 | перенос старый прибор в архив 5ц | 30min | 2026-04-20 09:00 A | 2026-04-20 09:30 A |  | 100% | start no earlier than 2026-04-20 08:00 | Кладовщики | 0.5h | 0.5h |
| 3354 | 14.11 | замена 2 вентилятора | 4h | 2024-01-16 08:00 A | 2024-01-16 13:00 A |  | 100% | start no earlier than 2024-01-16 08:00 | Бобренок В | 4h | 4h |
| 3355 | 14.12 | ремонт соленоид | 2h | 2024-01-16 08:00 A | 2024-01-16 11:00 A |  | 100% | start no earlier than 2024-01-16 08:00 | Тимофеев В | 2h | 2h |
| 3356 | 14.13 | ремонт вытяжка №2 диагностика вентилятор | 30min | 2024-01-11 08:00 A | 2024-01-11 09:30 A |  | 100% | start no earlier than 2024-01-11 08:00 | Дедов В | 0.5h | 0.5h |
| 3357 | 14.14 | замена насос " агрегат | 1h | 2024-01-11 08:00 A | 2024-01-11 10:00 A |  | 100% | start no earlier than 2024-01-11 08:00 | Дедов В | 1h | 1h |
| 3358 | 14.15 | замена тен по доставке | 2h | 2026-03-17 09:00 A | 2026-03-17 11:00 A |  | 100% | start no earlier than 2026-03-17 09:00 | Макаревич А | 2h | 2h |

| ID | WBS | Task | Duration | Start | Finish | Predecessors | Complete | Remaining | Total slack | Constraint | Resources | Work | Actual work |
| --- | --- | --- | --- | --- | --- | --- | --- | --- | --- | --- | --- | --- | --- |
| 3359 | 15 | **цех наполнителей** | 194.12d | 2025-07-14 09:00 A | 2026-04-10 10:00 A |  | 100% |  |  |  |  | 10h | 10h |
| 3360 | 15.1 | взять со склада АКБ и клеммы заменить на погрузчике, старый АКБ отдать на 2 этаж склад | 1h | 2026-04-10 09:00 A | 2026-04-10 10:00 A |  | 100% |  |  | start no earlier than 2026-04-10 09:00 | Тимофеев В | 1h | 1h |
| 3361 | 15.2 | поменять пневмоцилиндр на нотис | 1h | 2026-04-09 09:00 A | 2026-04-09 10:00 A |  | 100% |  |  | start no earlier than 2026-04-10 09:00 | Тимофеев В | 1h | 1h |
| 3362 | 15.3 | проверить дист. Воду в АКБ погрузчика | 1h | 2026-04-01 09:00 A | 2026-04-01 10:00 A |  | 100% |  |  | start no earlier than 2026-04-01 09:00 | Тимофеев В | 1h | 1h |
| 3363 | 15.4 | просверлить больше, нарезать резьбу для крепления стола запайщика, резьба сорвана | 1h | 2026-03-20 09:00 A | 2026-03-20 10:00 A |  | 100% |  |  | start no earlier than 2026-03-20 09:00 | Бундин В | 1h | 1h |
| 3364 | 15.5 | ремонт компрессор. Проверка конденсаторов/не запускается мотор. Ключь у кладовщиков | 4h | 2025-07-14 09:00 A | 2025-07-14 13:00 A |  | 100% |  |  | start no earlier than 2025-07-14 09:00 | Бобренок В | 4h | 4h |
| 3365 | 15.6 | ТО компрессор / конвейер / запайщик | 2h | 2026-03-09 09:00 A | 2026-03-09 11:00 A |  | 100% |  |  | start no earlier than 2026-03-09 09:00 | Тимофеев В | 2h | 2h |
| 3366 | 16 | **офис** | 944.25d? | 2023-03-10 09:00 A | 2026-10-12 11:00 |  | 97% | 26.27d? | 108.34d |  |  | 223.67h | 217.17h |
| 3368 | 16.1 | Кинуть времянку в серверную | 1h | 2026-10-02 09:00 A | 2026-10-02 10:00 A |  | 100% |  |  | start no earlier than 2026-10-02 09:00 | Некрасов А; Труфанов А | 2h | 2h |
| 3369 | 16.2 | монтаж полочка Курдюмова продожить | 1h | 2026-09-22 09:00 A | 2026-09-22 10:00 A |  | 100% |  |  | start no earlier than 2026-09-22 09:00 | Тимофеев В | 1h | 1h |
| 3370 | 16.3 | **Ремонт бойлера** | 13.25d? | 2026-09-08 09:00 A | 2026-09-21 11:00 A |  | 100% |  |  |  |  | 7h | 7h |
| 3371 | 16.3.1 | Заявка тэна | 1d? | 2026-09-08 09:00 A | 2026-09-08 18:00 A |  | 100% |  |  | start no earlier than 2026-09-08 09:00 |  |  |  |
| 3372 | 16.3.2 | контроль доставка | 1d? | 2026-09-14 09:00 A | 2026-09-14 18:00 A |  | 100% |  |  | start no earlier than 2026-09-14 09:00 |  |  |  |
| 3373 | 16.3.3 | Повесить отремонтированный бойлер обратно в офис - проверить работу | 1h | 2026-09-18 09:00 A | 2026-09-18 10:00 A |  | 100% |  |  | start no earlier than 2026-09-18 09:00 | Тимофеев В | 1h | 1h |
| 3374 | 16.3.4 | устранить утечку / монтаж | 2h | 2026-09-21 09:00 A | 2026-09-21 11:00 A |  | 100% |  |  | start no earlier than 2026-09-21 09:00 | Некрасов А; Труфанов А | 4h | 4h |
| 3375 | 16.3.5 | Замена ТЭНа на бойлере, который в слесарке, получить на складе упаковки | 1h | 2026-09-16 09:00 A | 2026-09-16 10:00 A |  | 100% |  |  | start no earlier than 2026-09-16 08:00 | Бундин В | 1h | 1h |
| 3376 | 16.3.6 | Дефектовка бойлера, лежит в слесарке, проверка ТЭНов и анода, показывал кз по тэнам | 1h | 2026-09-14 09:00 A | 2026-09-14 10:00 A |  | 100% |  |  | start no earlier than 2026-09-14 08:00 | Макаревич А | 1h | 1h |
| 3377 | 16.4 | демонтаж шурупы с наличиников | 10min | 2026-07-10 09:00 A | 2026-07-10 09:10 A |  | 100% |  |  | start no earlier than 2026-07-10 09:00 | Тимофеев В | 0.17h | 0.17h |
| 3378 | 16.5 | взять на складе ламочку Е27 малого размера и поменять в муж. Туалете и закрыть плафоном | 1h | 2026-06-29 09:00 A | 2026-06-29 10:00 A |  | 100% |  |  | start no earlier than 2026-06-29 09:00 | Тимофеев В | 1h | 1h |
| 3379 | 16.6 | собрать аккуратно стеллаж для Буслаева (стеллаж на складе у Веры, подписан буквами ГД, мечковская) | 3h | 2026-06-13 09:00 A | 2026-06-15 12:00 A |  | 100% |  |  | start no earlier than 2026-06-13 09:00 | Бобренок В | 3h | 3h |
| 3380 | 16.7 | посмотреть что с розеткой у Ширяевой в кабинете | 1h | 2026-06-22 09:00 A | 2026-06-22 10:00 A |  | 100% |  |  | start no earlier than 2026-06-22 09:00 | Тимофеев В | 1h | 1h |
| 3381 | 16.8 | бухгалтерия настройка язычка двери, что бы дверь закрывалась без усилия | 1h | 2026-05-28 09:00 A | 2026-05-28 10:00 A |  | 100% |  |  | start no earlier than 2026-05-28 09:00 | Тимофеев В | 1h | 1h |
| 3382 | 16.9 | **полка мебельная** | 25.12d | 2026-05-18 09:00 A | 2026-06-22 10:00 A |  | 100% |  |  |  |  | 1.5h | 1.5h |
| 3383 | 16.9.1 | заявка крепеж | 15min | 2026-05-18 09:00 A | 2026-05-18 09:15 A |  | 100% |  |  | start no earlier than 2026-05-18 09:00 | Шуранов Ю | 0.25h | 0.25h |
| 3384 | 16.9.2 | контроль доставка | 15min | 2026-05-27 09:15 A | 2026-05-27 09:30 A | 3383FS+7d | 100% |  |  | start no earlier than 2026-05-15 08:00 | Шуранов Ю | 0.25h | 0.25h |
| 3385 | 16.9.3 | крепеж полки у Юли в кабинете (уголки на складе) | 1h | 2026-06-22 09:00 A | 2026-06-22 10:00 A | 3384 | 100% |  |  | start no earlier than 2026-06-22 09:00 | Тимофеев В | 1h | 1h |
| 3386 | 16.10 | монтаж диплом на стену нач хим лаб | 30min | 2026-05-15 09:00 A | 2026-05-15 09:30 A |  | 100% |  |  | start no earlier than 2026-05-15 09:00 | Тимофеев В | 0.5h | 0.5h |
| 3387 | 16.11 | монтаж розеток в серверной продолжить | 2h | 2026-04-23 09:00 A | 2026-04-23 11:00 A |  | 100% |  |  | start no earlier than 2026-04-23 09:00 | Тимофеев В; Бобренок В | 4h | 4h |
| 3388 | 16.12 | ремонт стул в столовая, спинка | 1h | 2026-04-21 09:00 A | 2026-04-21 10:00 A |  | 100% |  |  | start no earlier than 2026-04-21 09:00 | Тимофеев В | 1h | 1h |

| ID | WBS | Task | Type | Duration | Start | Finish | Complete | Total slack | Constraint | Resources | Work | Actual work |
| --- | --- | --- | --- | --- | --- | --- | --- | --- | --- | --- | --- | --- |
| 3389 | 16.13 | **полочка под пк** |  | 0.12d | 2026-06-26 09:00 A | 2026-06-26 10:00 A | 100% |  |  | Тимофеев В | 2h | 2h |
| 3390 | 16.13.1 | замер |  | 1h | 2026-06-26 09:00 A | 2026-06-26 10:00 A | 100% |  | start no earlier than 2026-06-26 09:00 | Тимофеев В | 1h | 1h |
| 3391 | 16.14 | прикрутить декоративную пластину на ручке в столовой |  | 1h | 2026-04-15 09:00 A | 2026-04-15 10:00 A | 100% |  | start no earlier than 2026-04-17 08:00 | Макаревич А | 1h | 1h |
| 3392 | 16.15 | монтаж розеток 4 шт. в серверной |  | 2h | 2026-04-15 09:00 A | 2026-04-15 11:00 A | 100% |  | start no earlier than 2026-04-17 08:00 | Макаревич А | 2h | 2h |
| 3393 | 16.16 | протянуть кабель UTP от кабинета Курдюмовой до переговорки |  | 2h | 2026-04-17 08:00 A | 2026-04-17 11:00 A | 100% |  | start no earlier than 2026-04-17 08:00 | Тимофеев В; Некрасов А | 4h | 4h |
| 3394 | 16.17 | убрать шнурок у Курдюмовой в кабинете |  | 1h | 2026-04-17 08:00 A | 2026-04-17 10:00 A | 100% |  | start no earlier than 2026-04-17 08:00 | Тимофеев В | 1h | 1h |
| 3395 | 16.18 | ремонт кровля над каб Курдюмовой |  | 20d | 2026-06-15 09:00 A | 2026-07-10 18:00 A | 100% |  | start no earlier than 2026-06-15 09:00 | Олег | 160h | 160h |
| 3396 | 16.19 | ремонт крепеж пано каб продаж |  | 1h | 2026-03-24 08:00 A | 2026-03-24 10:00 A | 100% |  | start no earlier than 2026-03-24 08:00 | Тимофеев В | 1h | 1h |
| 3397 | 16.20 | крепить розетку для проектора |  | 2h | 2025-04-09 09:00 A | 2025-04-09 11:00 A | 100% |  | start no earlier than 2025-04-09 09:00 | Тимофеев В | 2h | 2h |
| 3398 | 16.21 | упорядочить кабеля под тв |  | 2h | 2025-04-09 09:00 A | 2025-04-09 11:00 A | 100% |  | start no earlier than 2025-04-09 09:00 | Некрасов А | 2h | 2h |
| 3399 | 16.22 | выбивает автомат у Монича, нет селективности, замена автоматов. Ремонт освещения корридор |  | 4h | 2026-09-29 09:00 | 2026-09-29 13:00 |  | 118.09d | start no earlier than 2026-09-29 09:00 | Дедов В | 4h |  |
| 3400 | 16.23 | монтаж ключница для пожарной двери 2 и 3 этаж |  | 1h | 2026-03-16 09:00 A | 2026-03-16 10:00 A | 100% |  | start no earlier than 2026-03-16 09:00 | Тимофеев В | 1h | 1h |
| 3401 | 16.24 | замена регистр отопления нач снабжения |  | 2h | 2026-10-12 09:00 | 2026-10-12 11:00 |  | 108.34d | start no earlier than 2026-10-12 09:00 | Некрасов А | 2h |  |
| 3402 | 16.25 | сделать заглушки в комнату пищи |  | 30min | 2026-09-01 09:00 | 2026-09-01 09:30 |  | 145.53d | start no earlier than 2026-09-01 09:00 | Домоводов К | 0.5h |  |
| 3403 | 16.26 | **вентиляция в переговорке и к приема пищи** |  | 812d? | 2023-03-10 09:00 A | 2026-04-20 18:00 A | 100% |  |  |  | 17h | 17h |
| 3404 | 16.26.1 | взять на желтом складе (наша половина) вентилятор канальный и проверить работает или нет |  | 1h | 2023-03-10 09:00 A | 2023-03-10 10:00 A | 100% |  |  | Бундин В | 1h | 1h |
| 3405 | 16.26.2 | заявка на КП = 300к |  | 4h | 2026-03-13 09:00 A | 2026-03-13 13:00 A | 100% |  | start no earlier than 2026-03-13 09:00 | Домоводов К | 4h | 4h |
| 3406 | 16.26.3 | монтаж ВК200 + кабель |  | 6h | 2026-04-20 09:00 A | 2026-04-20 16:00 A | 100% |  | start no earlier than 2026-04-20 08:00 | Некрасов А; Труфанов А | 12h | 12h |
| 3407 | 16.26.4 | установка на крыше офиса, приточка в переговорку |  | 1d? | 2026-04-20 09:00 A | 2026-04-20 18:00 A | 100% |  | start no earlier than 2026-04-20 09:00 |  |  |  |
| 3408 | 16.27 | **подсветка продукции в пепреговорке вращающийся лаезерный круг с эмблемой** |  | 0.12d | 2026-03-13 09:00 A | 2026-03-13 10:00 A | 100% |  |  |  | 1h | 1h |
| 3409 | 16.27.1 | найти поставщика / узнать стоимость |  | 1h | 2026-03-13 09:00 A | 2026-03-13 10:00 A | 100% |  | start no earlier than 2026-03-13 09:00 | Зорькин В | 1h | 1h |
| 3410 | 17 | **склад упаковки** |  | 145d? | 2026-04-02 09:00 A | 2026-10-11 11:00 A | 100% |  |  |  | 397.25h | 397.25h |
| 3411 | 17.1 | Замена терморегулятора о котором ты мне говорил на болере склада упаковки, новые должны быть на складе, если нет, снять со старого в контейнере | manual | 2h | 2026-10-11 09:00 A | 2026-10-11 11:00 A | 100% |  | start no earlier than 2026-10-11 09:00 | Бобренок В | 2h | 2h |
| 3412 | 17.2 | Установить новый бойлер, старый на ремонт в слесарку |  | 30min | 2026-10-08 09:00 A | 2026-10-08 09:30 A | 100% |  | start no earlier than 2026-10-08 08:00 | Бобренок В | 0.5h | 0.5h |
| 3413 | 17.3 | Повесить доп светильники 3 шт (спросить у Лехи, где нужны) |  | 3h | 2026-10-02 09:00 A | 2026-10-02 12:00 A | 100% |  | start no earlier than 2026-10-02 09:00 | Труфанов А; Некрасов А | 6h | 6h |
| 3414 | 17.4 | переделать крепление рамы наруж блока - к МК здания, анкера убрать |  | 4h | 2026-10-07 09:00 A | 2026-10-07 13:00 A | 100% |  | start no earlier than 2026-10-07 09:00 | Некрасов А; Труфанов А | 8h | 8h |
| 3415 | 17.5 | установить светильники над столом Веры и перенести светильник над стеллажами |  | 3h | 2026-08-25 09:00 A | 2026-08-25 12:00 A | 100% |  | start no earlier than 2026-08-25 09:00 | Тимофеев В; Некрасов А | 6h | 6h |
| 3416 | 17.6 | втягиваем кабель 5х4 от реф, для подключения кондиционера, место установки щитка покажу- подключаем кондиционер |  | 1d? | 2026-07-31 08:00 A | 2026-07-31 18:00 A | 100% |  | start no earlier than 2026-07-31 08:00 | Труфанов А; Бобренок В | 16h | 16h |
| 3417 | 17.7 | сделать акты списания по результатам инвентаризации |  | 1d? | 2026-06-22 09:00 A | 2026-06-22 18:00 A | 100% |  | start no earlier than 2026-06-22 09:00 | Шуранов Ю | 8h | 8h |

| ID | WBS | Task | Type | Duration | Start | Finish | Predecessors | Complete | Remaining | Total slack | Free slack | Constraint | Resources | Work | Actual work |
| --- | --- | --- | --- | --- | --- | --- | --- | --- | --- | --- | --- | --- | --- | --- | --- |
| 3418 | 17.8 | **установить бойлер** |  | 92.12d | 2026-06-01 09:00 A | 2026-09-28 10:00 A |  | 100% |  |  |  |  |  | 13h | 13h |
| 3419 | 17.8.1 | Замена тэна на бойлере |  | 1h | 2026-09-28 09:00 A | 2026-09-28 10:00 A |  | 100% |  |  |  | start no earlier than 2026-09-28 08:00 | Бобренок В | 1h | 1h |
| 3420 | 17.8.2 | монтаж кабель + розетка с щитка 1 этажа на 2 этаж |  | 4h | 2026-06-03 09:00 A | 2026-06-03 13:00 A |  | 100% |  |  |  | start no earlier than 2026-06-03 09:00 | Некрасов А; Бундин В | 8h | 8h |
| 3421 | 17.8.3 | монтаж бойлер на стену |  | 2h | 2026-06-01 09:00 A | 2026-06-01 11:00 A | 3420 | 100% |  |  |  | start no earlier than 2026-06-01 09:00 | Тимофеев В | 2h | 2h |
| 3422 | 17.8.4 | подключение сантехника |  | 2h | 2026-06-16 09:00 A | 2026-06-16 11:00 A | 3421 | 100% |  |  |  | start no earlier than 2026-06-16 09:00 | Тимофеев В | 2h | 2h |
| 3423 | 17.9 | отремонтировать ручку на входной двери |  | 1h | 2026-05-16 09:00 A | 2026-05-18 10:00 A |  | 100% |  |  |  | start no earlier than 2026-05-16 09:00 |  |  |  |
| 3424 | 17.10 | **анкерить стеллажи** |  | 26d | 2026-05-15 09:00 A | 2026-06-21 13:00 A |  | 100% |  |  |  |  |  | 4.75h | 4.75h |
| 3425 | 17.10.1 | заявка анкеры |  | 30min | 2026-05-15 09:00 A | 2026-05-15 09:30 A |  | 100% |  |  |  | start no earlier than 2026-05-15 09:00 | Шуранов Ю | 0.5h | 0.5h |
| 3426 | 17.10.2 | контроль доставка |  | 15min | 2026-05-27 09:30 A | 2026-05-27 09:45 A | 3425FS+10d | 100% |  |  |  | start no earlier than 2026-05-14 08:00 | Шуранов Ю | 0.25h | 0.25h |
| 3427 | 17.10.3 | монтаж / указать доделать оставшиеся анкера | manual | 4h | 2026-06-21 09:00 A | 2026-06-21 13:00 A | 3426 | 100% |  |  |  | start no earlier than 2026-06-21 09:00 | Бундин В | 4h | 4h |
| 3428 | 17.11 | заменить тросик на воротах |  | 2h | 2026-04-29 09:00 A | 2026-04-29 11:00 A |  | 100% |  |  |  | start no earlier than 2026-04-29 09:00 | Тимофеев В; Бундин В | 4h | 4h |
| 3429 | 17.12 | **замена двери** |  | 40.12d? | 2026-04-02 09:00 A | 2026-05-28 10:00 A |  | 100% |  |  |  |  |  | 329h | 329h |
| 3430 | 17.12.1 | заказ замерщика / получить счет |  | 1h | 2026-04-02 09:00 A | 2026-04-02 10:00 A |  | 100% |  |  |  | start no earlier than 2026-04-02 08:00 | Домоводов К | 1h | 1h |
| 3431 | 17.12.2 | изготовление |  | 40d | 2026-04-02 10:00 A | 2026-05-28 10:00 A | 3430 | 100% |  |  |  | start no earlier than 2026-04-02 08:00 | Подрядчик | 320h | 320h |
| 3432 | 17.12.3 | замена |  | 1d? | 2026-05-19 10:00 A | 2026-05-20 10:00 A | 3431 | 100% |  |  |  | start no earlier than 2026-04-02 08:00 | Подрядчик | 8h | 8h |
| 3433 | 18 | **РЭФ контейнеры** |  | 213.59d? | 2026-05-28 09:00 A | 2027-03-10 14:45 |  | 15% | 182.43d? | 0d |  |  |  | 66.25h | 13.5h |
| 3434 | 18.1 | уложить палеты в проходе к площадке / вырубить кусты с дворником |  | 1h | 2026-05-28 09:00 A | 2026-05-28 10:00 A |  | 100% |  |  |  | start no earlier than 2026-05-28 09:00 | Некрасов А; Бобренок В | 1h | 1h |
| 3435 | 18.2 | монтаж площадка обслуживания внешнего блока. 4 стойки труба 100 + лист 5 |  | 7h | 2026-05-28 09:00 A | 2026-05-28 17:00 A |  | 100% |  |  |  | start no earlier than 2026-05-28 09:00 | Некрасов А; Бобренок В | 12h | 12h |
| 3436 | 18.3 | **ремонт сплит система холодильная камера №1** |  | 27.12d | 2026-08-12 09:00 A | 2026-09-15 10:00 |  | 40% | 16.27d | 132.47d |  |  |  | 1.25h | 0.5h |
| 3437 | 18.3.1 | отправить фото участка |  | 15min | 2026-08-12 09:00 A | 2026-08-12 09:15 A |  | 100% |  |  |  | start no earlier than 2026-08-12 09:00 | Домоводов К | 0.25h | 0.25h |
| 3438 | 18.3.2 | получить счет на ремонт |  | 15min | 2026-09-08 09:00 A | 2026-09-08 09:15 A |  | 100% |  |  |  | start no earlier than 2026-09-08 09:00 | Домоводов К | 0.25h | 0.25h |
| 3439 | 18.3.3 | оплата |  | 15min | 2026-09-09 09:15 | 2026-09-09 09:30 | 3438FS+1d |  |  | 132.47d | 0d | start no earlier than 2026-09-09 09:00 | Домоводов К | 0.25h |  |
| 3440 | 18.3.4 | контроль даты ремонта |  | 15min | 2026-09-14 09:30 | 2026-09-14 09:45 | 3439FS+5d |  |  | 132.47d | 0d | start no earlier than 2026-08-10 08:00 | Зорькин В | 0.25h |  |
| 3441 | 18.3.5 | приемка работ |  | 15min | 2026-09-15 09:45 | 2026-09-15 10:00 | 3440FS+1d |  |  | 132.47d |  | start no earlier than 2026-08-10 08:00 | Зорькин В | 0.25h |  |

| ID | WBS | Task | Type | Duration | Start | Finish | Predecessors | Complete | Remaining | Total slack | Free slack | Constraint | Resources | Work | Actual work |
| --- | --- | --- | --- | --- | --- | --- | --- | --- | --- | --- | --- | --- | --- | --- | --- |
| 3442 | 18.4 | **монтаж холодильной машины №2** |  | 6.59d? | 2027-03-02 09:00 | 2027-03-10 14:45 |  |  |  | 0d |  |  |  | 45h |  |
| 3443 | 18.4.1 | решение какую ставить машину - на весну |  | 30min | 2027-03-02 09:00 | 2027-03-02 09:30 |  |  |  | 0d |  | start no earlier than 2027-03-02 09:00 | Домоводов К | 0.5h |  |
| 3444 | 18.4.2 | заключение договор |  | 3d | 2027-03-02 09:30 | 2027-03-05 09:30 | 3443 |  |  | 0d |  | start no earlier than 2026-08-12 09:00 | Домоводов К | 24h |  |
| 3445 | 18.4.3 | оплата |  | 15min | 2027-03-08 09:30 | 2027-03-08 09:45 | 3444FS+1d |  |  | 0d |  | start no earlier than 2026-08-18 09:00 | Домоводов К | 0.25h |  |
| 3446 | 18.4.4 | контроль доставки , начала работ |  | 1d? | 2027-03-08 09:45 | 2027-03-09 09:45 | 3445 |  |  | 0d |  | start no earlier than 2026-08-10 08:00 | Зорькин В | 8h |  |
| 3447 | 18.4.5 | **монтаж кабель силовой** |  | 0.5d | 2027-03-09 09:45 | 2027-03-09 14:45 | 3446 |  |  | 0d |  |  |  | 4.25h |  |
| 3448 | 18.4.5.1 | проверка поставки |  | 15min | 2027-03-09 09:45 | 2027-03-09 10:00 |  |  |  | 0.47d |  | start no earlier than 2026-08-10 08:00 | Зорькин В | 0.25h |  |
| 3449 | 18.4.5.2 | монтаж |  | 4h | 2027-03-09 09:45 | 2027-03-09 14:45 |  |  |  | 0d |  | start no earlier than 2026-08-10 08:00 | Некрасов А | 4h |  |
| 3450 | 18.4.6 | монтаж |  | 1d? | 2027-03-09 14:45 | 2027-03-10 14:45 | 3447 |  |  | 0d |  | start no earlier than 2026-08-10 08:00 | Подрядчик | 8h |  |
| 3451 | 18.5 | **утепление контейнера №2 под рефрежератор** |  | 0.5d | 2026-08-21 09:00 | 2026-08-21 13:00 |  |  |  | 0d |  |  |  | 7h |  |
| 3452 | 18.5.1 | продолжить выравнивание пены по периметру ножовкой для будующей установки профлиста (задание, если нечем заняться) | manual | 2h | 2026-08-21 09:00 | 2026-08-21 11:00 |  |  |  |  |  | start no earlier than 2026-08-21 09:00 | Некрасов А; Дедов В | 4h |  |
| 3453 | 18.5.2 | установка профлиста |  | 2h | 2026-08-21 11:00 | 2026-08-21 13:00 | 3452 |  |  | 152.09d |  | start no earlier than 2026-08-11 09:00 | Некрасов А; Дедов В | 3h |  |
| 3454 | 19 | **обучение** |  | 608.5d? | 2024-05-14 09:00 A | 2026-09-10 13:00 |  | 42% | 350.5d? | 137.09d |  |  |  | 130h | 58h |
| 3455 | 19.1 | **инструкция управлления дозаций жира** |  | 1.5d | 2026-09-09 09:00 | 2026-09-10 13:00 |  |  |  | 137.09d |  |  |  | 12h |  |
| 3456 | 19.1.1 | подготовка гидравлической и функциональной схем системы |  | 4h | 2026-09-09 09:00 | 2026-09-09 13:00 |  |  |  | 137.09d | 0d | start no earlier than 2026-09-09 09:00 | Зорькин В | 4h |  |
| 3457 | 19.1.2 | описание принципов регулирования |  | 4h | 2026-09-09 14:00 | 2026-09-09 18:00 | 3456 |  |  | 137.09d | 0d | start no earlier than 2026-08-31 09:00 | Зорькин В | 4h |  |
| 3458 | 19.1.3 | пошаговый алогритм действий по операциям замена фильтров, остановка пуск, настройка режимов |  | 4h | 2026-09-10 09:00 | 2026-09-10 13:00 | 3457 |  |  | 137.09d |  | start no earlier than 2026-08-31 09:00 | Зорькин В | 4h |  |
| 3459 | 19.2 | настройка и ремонты упаковщиков |  | 1h | 2026-02-27 09:00 A | 2026-02-27 10:00 A |  | 100% |  |  |  | start no earlier than 2026-02-27 08:00 | Труфанов А; Бундин В | 2h | 2h |
| 3460 | 19.3 | подготовить памятку по чистке ножа для бестром |  | 4h | 2026-09-04 09:00 A | 2026-09-04 13:00 A |  | 100% |  |  |  | start no earlier than 2026-09-04 09:00 | Зорькин В | 4h | 4h |
| 3461 | 19.4 | бестром |  | 2h | 2025-09-02 09:00 A | 2025-09-02 11:00 A |  | 100% |  |  |  | start no earlier than 2025-09-02 09:00 | Труфанов А; Зорькин В | 4h | 4h |
| 3462 | 19.5 | квадропак |  | 2h | 2025-09-02 11:00 A | 2025-09-02 13:00 A | 3461 | 100% |  |  |  | start no earlier than 2025-09-02 09:00 | Труфанов А; Зорькин В | 4h | 4h |
| 3463 | 19.6 | инструкция парогенератор управление по датчику давления |  | 4h | 2025-01-16 09:00 A | 2025-01-16 13:00 A |  | 100% |  |  |  | start no earlier than 2025-01-16 09:00 | Зорькин В | 4h | 4h |
| 3464 | 19.7 | инструкция по работе на теко 1.5 новый |  | 2d | 2025-01-17 09:00 A | 2025-01-20 18:00 A | 3463 | 100% |  |  |  | start no earlier than 2025-01-17 09:00 | Зорькин В | 16h | 16h |
| 3465 | 19.8 | инструкция ремонт запайщика |  | 1d? | 2025-01-17 09:00 A | 2025-01-17 18:00 A |  | 100% |  |  |  | start no earlier than 2025-01-17 09:00 | Зорькин В | 8h | 8h |
| 3466 | 19.9 | Составить список ЗИП - ежедневно вносить приход / расход |  | 1h | 2024-05-14 09:00 | 2024-05-14 10:00 |  |  |  | 745.47d |  | start no earlier than 2024-05-14 09:00 | Шуранов Ю | 1h |  |
| 3467 | 19.10 | составить инструкцию по затягиванию фильеры и соосности муфты |  | 4h | 2024-05-14 09:00 | 2024-05-14 13:00 |  |  |  | 745.09d |  | start no earlier than 2024-05-14 09:00 | Шуранов Ю | 4h |  |
| 3468 | 19.11 | составитьт инструкцию настройка бестром - формирование шва |  | 4h | 2024-05-14 09:00 | 2024-05-14 13:00 |  |  |  | 745.09d |  | start no earlier than 2024-05-14 09:00 | Шуранов Ю | 4h |  |
| 3469 | 19.12 | составитьт инструкцию настройка бестром - заправка ленты зип лок |  | 4h | 2024-05-14 09:00 | 2024-05-14 13:00 |  |  |  | 745.09d |  | start no earlier than 2024-05-14 09:00 | Шуранов Ю | 4h |  |

| ID | WBS | Task | Duration | Start | Finish | Predecessors | Complete | Remaining | Total slack | Free slack | Constraint | Resources | Work | Actual work |
| --- | --- | --- | --- | --- | --- | --- | --- | --- | --- | --- | --- | --- | --- | --- |
| 3470 | 19.13 | **формирование шаблона настройки оборудования** | 4d | 2024-09-06 09:00 A | 2024-09-11 18:00 |  | 67% | 1.33d | 658.59d |  |  |  | 21h | 14h |
| 3471 | 19.13.1 | **БЕСТРОМ** | 2.25d | 2024-09-06 09:00 A | 2024-09-10 11:00 A |  | 100% |  |  |  |  |  | 7h | 7h |
| 3472 | 19.13.1.1 | определить базовые точки относительно которых будет проводится замер в 3х плоскостях - флажки верх, флажки низ, смыкание ножа, центр трубы | 1h | 2024-09-06 09:00 A | 2024-09-06 10:00 A |  | 100% |  |  |  | start no earlier than 2024-09-06 08:00 | Зорькин В | 1h | 1h |
| 3473 | 19.13.1.2 | обвести в PAINT фото методику измерений, присвоить \имя каждому размеру | 2h | 2024-09-06 10:00 A | 2024-09-06 12:00 A | 3472 | 100% |  |  |  | start no earlier than 2024-09-06 09:00 | Зорькин В | 2h | 2h |
| 3474 | 19.13.1.3 | создать карту / таблицу настройки. Размер-дата-фио | 2h | 2024-09-09 09:00 A | 2024-09-09 11:00 A | 3473 | 100% |  |  |  | start no earlier than 2024-09-09 09:00 | Зорькин В | 2h | 2h |
| 3475 | 19.13.1.4 | оформить ведение карты в журнал | 2h | 2024-09-10 09:00 A | 2024-09-10 11:00 A | 3474 | 100% |  |  |  | start no earlier than 2024-09-10 09:00 | Зорькин В | 2h | 2h |
| 3476 | 19.13.2 | **ТЕКО 1.5** | 0.88d | 2024-09-10 11:00 A | 2024-09-11 10:00 A | 3471 | 100% |  |  |  |  |  | 7h | 7h |
| 3477 | 19.13.2.1 | определить базовые точки относительно которых будет проводится замер в 3х плоскостях - флажки верх, флажки низ, смыкание ножа, центр трубы | 1h | 2024-09-10 11:00 A | 2024-09-10 12:00 A |  | 100% |  |  |  | start no earlier than 2024-09-10 09:00 | Зорькин В | 1h | 1h |
| 3478 | 19.13.2.2 | обвести в PAINT фото методику измерений, присвоить \имя каждому размеру | 2h | 2024-09-10 12:00 A | 2024-09-10 15:00 A | 3477 | 100% |  |  |  | start no earlier than 2024-09-06 08:00 | Зорькин В | 2h | 2h |
| 3479 | 19.13.2.3 | создать карту / таблицу настройки. Размер-дата-фио | 2h | 2024-09-10 15:00 A | 2024-09-10 17:00 A | 3478 | 100% |  |  |  | start no earlier than 2024-09-06 08:00 | Зорькин В | 2h | 2h |
| 3480 | 19.13.2.4 | оформить ведение карты в журнал | 2h | 2024-09-10 17:00 A | 2024-09-11 10:00 A | 3479 | 100% |  |  |  | start no earlier than 2024-09-06 08:00 | Зорькин В | 2h | 2h |
| 3481 | 19.13.3 | **ТЕКО 0,4** | 0.88d | 2024-09-11 10:00 | 2024-09-11 18:00 | 3476 |  |  | 658.59d |  |  |  | 7h |  |
| 3482 | 19.13.3.1 | определить базовые точки относительно которых будет проводится замер в 3х плоскостях - флажки верх, флажки низ, смыкание ножа, центр трубы | 1h | 2024-09-11 10:00 | 2024-09-11 11:00 |  |  |  | 658.59d | 0d | start no earlier than 2024-09-06 08:00 | Зорькин В | 1h |  |
| 3483 | 19.13.3.2 | обвести в PAINT фото методику измерений, присвоить \имя каждому размеру | 2h | 2024-09-11 11:00 | 2024-09-11 13:00 | 3482 |  |  | 658.59d | 0d | start no earlier than 2024-09-06 08:00 | Зорькин В | 2h |  |
| 3484 | 19.13.3.3 | создать карту / таблицу настройки. Размер-дата-фио | 2h | 2024-09-11 14:00 | 2024-09-11 16:00 | 3483 |  |  | 658.59d | 0d | start no earlier than 2024-09-06 08:00 | Зорькин В | 2h |  |
| 3485 | 19.13.3.4 | оформить ведение карты в журнал | 2h | 2024-09-11 16:00 | 2024-09-11 18:00 | 3484 |  |  | 658.59d |  | start no earlier than 2024-09-06 08:00 | Зорькин В | 2h |  |
| 3486 | 19.14 | **наполнение базы данных по занятиям, запись видео уроки** | 5.12d | 2024-09-09 09:00 A | 2024-09-16 10:00 |  | 5% | 4.88d | 656.47d |  |  |  | 42h | 2h |
| 3487 | 19.14.1 | заяавка фотокамера, штатив | 1h | 2024-09-09 09:00 A | 2024-09-09 10:00 A |  | 100% |  |  |  | start no earlier than 2024-09-09 09:00 | Зорькин В | 1h | 1h |
| 3488 | 19.14.2 | доставка | 5d | 2024-09-09 10:00 | 2024-09-16 10:00 | 3487 |  |  | 656.47d |  | start no earlier than 2024-09-06 08:00 | Мультан | 40h |  |
| 3489 | 19.14.3 | **Бестром** | 0.12d | 2024-09-16 09:00 A | 2024-09-16 10:00 A |  | 100% |  |  |  |  |  | 1h | 1h |
| 3490 | 19.14.3.1 | урок 1 | 1h | 2024-09-16 09:00 A | 2024-09-16 10:00 A | 3488 | 100% |  |  |  | start no earlier than 2024-09-16 09:00 | Зорькин В | 1h | 1h |
| 3491 | 20 | **администрантивные** | 131.25d | 2026-03-19 09:00 A | 2026-09-15 11:00 |  | 89% | 14.45d | 132.34d |  |  |  | 99.92h | 88.92h |
| 3492 | 20.1 | спсиание материалов | 6h | 2026-09-01 09:00 | 2026-09-01 16:00 |  |  |  | 144.84d |  | start no earlier than 2026-09-01 09:00 | Шуранов Ю | 6h |  |
| 3493 | 20.2 | составить список остатков шнеков в таблицу зип | 2h | 2026-09-01 09:00 | 2026-09-01 11:00 |  |  |  | 145.34d |  | start no earlier than 2026-09-01 09:00 | Шуранов Ю | 2h |  |
| 3494 | 20.3 | подготовить спсток перчаток | 3h | 2026-03-19 09:00 A | 2026-03-19 12:00 A |  | 100% |  |  |  | start no earlier than 2026-03-19 08:00 | Зорькин В | 3h | 3h |
| 3495 | 20.4 | подготовка данных дебеторская задолжность | 3h | 2026-03-19 09:00 A | 2026-03-19 12:00 A |  | 100% |  |  |  | start no earlier than 2026-03-19 08:00 | Зорькин В | 3h | 3h |
| 3496 | 20.5 | договор по ремонту стиральных машинок. Переговоры | 1h | 2026-09-01 09:00 | 2026-09-01 10:00 |  |  |  | 145.47d |  | start no earlier than 2026-09-01 09:00 | Шуранов Ю | 1h |  |
| 3497 | 20.6 | Составить список на год ППР (планово-предупредительные работы) на оборудовании Цеха №1, Цеха №2, Цеха навесок. | 2h | 2026-09-01 09:00 | 2026-09-01 11:00 |  |  |  | 145.34d |  | start no earlier than 2026-09-01 09:00 | Шуранов Ю | 2h |  |

| ID | WBS | Task | Type | Duration | Start | Finish | Predecessors | Complete | Remaining | Total slack | Free slack | Constraint | Resources | Work | Actual work |
| --- | --- | --- | --- | --- | --- | --- | --- | --- | --- | --- | --- | --- | --- | --- | --- |
| 3498 | 20.7 | **Ключи на шкафы** |  | 111.25d | 2026-04-16 09:00 A | 2026-09-15 11:00 A |  | 100% |  |  |  |  |  | 82.75h | 82.75h |
| 3499 | 20.7.1 | Заказать |  | 30min | 2026-04-16 09:00 A | 2026-04-16 09:30 A |  | 100% |  |  |  | start no earlier than 2026-04-16 09:00 | Зорькин В | 0.5h | 0.5h |
| 3500 | 20.7.2 | доставить |  | 10d | 2026-04-16 09:30 A | 2026-04-30 09:30 A | 3499 | 100% |  |  |  | start no earlier than 2026-04-14 09:00 | Карабанов | 80h | 80h |
| 3501 | 20.7.3 | контроль доставка |  | 15min | 2026-05-15 09:00 A | 2026-05-15 09:15 A |  | 100% |  |  |  | start no earlier than 2026-05-15 09:00 | Зорькин В | 0.25h | 0.25h |
| 3502 | 20.7.4 | Повешать на веревочку ключи на все шкафы ВРУ и электрощитки (ключи на складе, веревочки взять на производстве, нитки) |  | 2h | 2026-09-15 09:00 A | 2026-09-15 11:00 A | 3500 | 100% |  |  |  | start no earlier than 2026-09-15 09:00 | Бобренок В | 2h | 2h |
| 3503 | 20.8 | Расписаться в нашем кабинете |  | 10min | 2026-07-28 09:00 A | 2026-07-28 09:10 A |  | 100% |  |  |  | start no earlier than 2026-07-28 09:00 | Макаревич А | 0.17h | 0.17h |
| 3504 | 21 | **ТБ** |  | 929.25d? | 2023-06-06 09:00 A | 2026-12-15 11:00 |  | 39% | 566.92d? | 61.34d |  |  |  | 249.92h | 96.67h |
| 3505 | 21.1 | инструктаж по ТБ оформить |  | 1h | 2026-08-31 09:00 | 2026-08-31 10:00 |  |  |  | 146.47d |  | start no earlier than 2026-08-31 09:00 | Шуранов Ю | 1h |  |
| 3506 | 21.2 | выполнить перелкаду похарных шлангов офис, 1ц |  | 2h | 2026-12-15 09:00 | 2026-12-15 11:00 |  |  |  | 61.34d |  | start no earlier than 2026-12-15 09:00 | Некрасов А; Труфанов А | 4h |  |
| 3507 | 21.3 | маркировка лестниц / оформление журналов |  | 2h | 2026-08-31 09:00 | 2026-08-31 11:00 |  |  |  | 146.34d |  | start no earlier than 2026-08-31 09:00 | Шуранов Ю | 2h |  |
| 3508 | 21.4 | внеплановый инструктаж персонала при аварии на проризводстве |  | 2h | 2025-03-26 09:00 A | 2025-03-26 11:00 A |  | 100% |  |  |  | start no earlier than 2025-03-26 08:00 | Шуранов Ю | 2h | 2h |
| 3509 | 21.5 | заявка на табличики НЕ ВКЛЮЧАТЬ |  | 10min | 2025-03-26 09:00 A | 2025-03-26 09:10 A |  | 100% |  |  |  | start no earlier than 2025-03-26 08:00 | Шуранов Ю | 0.17h | 0.17h |
| 3510 | 21.6 | офорить наряд допуск на монтаж кабеля КПП |  | 30min | 2024-08-05 09:00 A | 2024-08-05 09:30 A |  | 100% |  |  |  | start no earlier than 2024-08-05 09:00 | Шуранов Ю | 0.5h | 0.5h |
| 3511 | 21.7 | составить схемы кабельных линий по производству |  | 5d | 2026-09-01 09:00 | 2026-09-05 18:00 |  |  |  | 140.59d |  | start no earlier than 2026-09-01 09:00 | Шуранов Ю | 40h |  |
| 3512 | 21.8 | организация аттестации электроперсонала |  | 10d | 2024-05-14 09:00 A | 2024-05-27 18:00 A |  | 100% |  |  |  | start no earlier than 2024-05-14 09:00 | Шуранов Ю | 80h | 80h |
| 3513 | 21.9 | расклеить таблички на стремянки |  | 1h | 2023-10-18 09:00 A | 2023-10-18 10:00 A |  | 100% |  |  |  | start no earlier than 2023-10-18 09:00 | Тимофеев В | 1h | 1h |
| 3514 | 21.10 | вести журнал учета такелажных средств, механизмов и приспособлений |  | 1h | 2026-09-01 09:00 | 2026-09-01 10:00 |  |  |  | 145.47d |  | start no earlier than 2026-09-01 09:00 | Шуранов Ю | 1h |  |
| 3515 | 21.11 | комплект сиз для высотных работ |  | 1h | 2023-06-09 09:00 A | 2023-06-09 10:00 A |  | 100% |  |  |  | start no earlier than 2023-06-09 09:00 | Лобанов И | 1h | 1h |
| 3516 | 21.12 | тестер индикторная отвертка |  | 1h | 2024-05-14 09:00 A | 2024-05-14 10:00 A |  | 100% |  |  |  | start no earlier than 2024-05-14 09:00 | Шуранов Ю | 1h | 1h |
| 3517 | 21.13 | заявка на диэл коврик, галоши, перчатки, маска, таблички |  | 1h | 2026-09-01 09:00 | 2026-09-01 10:00 |  |  |  | 145.47d |  | start no earlier than 2026-09-01 09:00 | Шуранов Ю | 1h |  |
| 3518 | 21.14 | заявка спецодежда наладчикам |  | 1d? | 2024-05-14 09:00 A | 2024-05-14 18:00 A |  | 100% |  |  |  | start no earlier than 2024-05-14 09:00 | Шуранов Ю | 8h | 8h |
| 3519 | 21.15 | аттестация охрана труда |  | 10d | 2024-05-14 09:00 | 2024-05-27 18:00 |  |  |  | 735.59d |  | start no earlier than 2024-05-14 09:00 | Шуранов Ю | 80h |  |
| 3520 | 21.16 | **испытание стеллажей** |  | 847d? | 2023-06-06 09:00 A | 2026-09-02 18:00 |  | 11% | 753.75d? | 143.59d |  |  |  | 27.25h | 3h |
| 3521 | 21.16.1 | оплата испытания стеллажей контроль | milestone | 0d | 2023-06-06 09:00 A | 2023-06-06 09:00 A |  | 100% |  |  |  | start no earlier than 2023-06-06 09:00 | Домоводов К |  |  |
| 3522 | 21.16.2 | орг испытание стеллажей |  | 1h | 2023-07-11 09:00 A | 2023-07-11 10:00 A |  | 100% |  |  |  | start no earlier than 2023-07-11 09:00 | Домоводов К | 1h | 1h |
| 3523 | 21.16.3 | график осмотров стеллажей |  | 1d? | 2026-08-31 09:00 | 2026-08-31 18:00 | 3521 |  |  | 143.59d | 0d | start no earlier than 2026-08-31 09:00 | Домоводов К | 8h |  |
| 3524 | 21.16.4 | табличка КП |  | 1d? | 2026-09-01 09:00 | 2026-09-01 18:00 | 3523 |  |  | 143.59d | 0d | start no earlier than 2023-04-27 08:00 | Домоводов К | 8h |  |
| 3525 | 21.16.5 | журнал технического освидетельствования стеллажей |  | 1d? | 2026-09-02 09:00 | 2026-09-02 18:00 | 3524 |  |  | 143.59d |  | start no earlier than 2023-04-27 08:00 | Домоводов К | 8h |  |
| 3526 | 21.16.6 | запрос стоимости ремонта стеллажей в 5ц |  | 2h | 2026-08-18 09:00 A | 2026-08-18 11:00 A |  | 100% |  |  |  | start no earlier than 2026-08-18 09:00 | Шуранов Ю | 2h | 2h |
| 3527 | 21.16.7 | контрольизг |  | 15min | 2026-08-27 09:00 | 2026-08-27 09:15 |  |  |  | 148.56d |  | start no earlier than 2026-08-27 09:00 | Шуранов Ю | 0.25h |  |

| ID | WBS | Task | Type | Duration | Start | Finish | Predecessors | Complete | Remaining | Total slack | Constraint | Resources | Work | Actual work |
| --- | --- | --- | --- | --- | --- | --- | --- | --- | --- | --- | --- | --- | --- | --- |
| 3528 | 22 | **офис** |  | 325.03d | 2025-06-11 09:00 A | 2026-09-08 09:15 |  | 80% | 65.01d | 139.56d |  |  | 2.25h | 2h |
| 3529 | 22.1 | дует подконник офис - передать Олегу задачу |  | 15min | 2026-09-08 09:00 | 2026-09-08 09:15 |  |  |  | 139.56d | start no earlier than 2026-09-08 08:00 | Зорькин В | 0.25h |  |
| 3530 | 22.2 | ремонт светильник моргает , бухгалтерия |  | 1h | 2025-06-11 09:00 A | 2025-06-11 10:00 A |  | 100% |  |  | start no earlier than 2025-06-11 09:00 | Тимофеев В; Дедов В | 2h | 2h |
| 3531 | 23 | **территория** |  | 442.25d? | 2025-02-20 09:00 A | 2026-10-20 11:00 |  | 68% | 139.94d? | 101.34d |  |  | 382.75h | 262.5h |
| 3532 | 23.1 | Завести проводку в туалет и сделать там розетку на КПП №1 | manual | 2h | 2026-10-20 09:00 | 2026-10-20 11:00 |  |  |  |  |  | Бундин В | 2h |  |
| 3533 | 23.2 | Накачать давление в контур склада 4, ключи у кладовщиков, проверить сварной шов, перед проверкой, убрать паллеты с продукцией, чтоб не замочило. |  | 2h | 2026-10-20 09:00 | 2026-10-20 11:00 |  |  |  | 101.34d | start no earlier than 2026-10-20 09:00 | Бобренок В | 2h |  |
| 3534 | 23.3 | Закрепить профлист на углу между крышами возле 1 кпп (при сильном ветре сильно стучит и отрывает |  | 1d? | 2026-10-16 09:00 | 2026-10-16 18:00 |  |  |  | 103.59d | start no earlier than 2026-10-16 09:00 | Олег | 8h |  |
| 3535 | 23.4 | Обход по цехам по трассе воды в 5 цех (цех 3, цех 4, 5а, 5) Утром и вечером | manual | 1h | 2026-10-10 09:00 A | 2026-10-10 10:00 A |  | 100% |  |  | start no earlier than 2026-10-10 09:00 | Дедов В | 1h | 1h |
| 3537 | 23.5 | У охраны не работает тепловая пушка, ревизия/ремонт |  | 1h | 2026-10-06 09:00 A | 2026-10-06 10:00 A |  | 100% |  |  | start no earlier than 2026-10-06 09:00 | Бобренок В | 1h | 1h |
| 3538 | 23.6 | Накачать котлы на всех узлах отопления |  | 4h | 2026-09-28 09:00 | 2026-09-28 13:00 |  |  |  | 119.09d | start no earlier than 2026-09-28 08:00 | Бобренок В | 4h |  |
| 3539 | 23.7 | Обход по воде протянутой до 5 цеха, проверка протечек во всех узлах по возможности устранить, если нет возможности, перекрыть в 3-ем цехе |  | 30min | 2026-09-21 09:00 A | 2026-09-21 09:30 A |  | 100% |  |  | start no earlier than 2026-09-21 08:00 | Макаревич А | 0.5h | 0.5h |
| 3540 | 23.8 | отсыпать спуск для парковки между цех 2 и 3 |  | 1d? | 2026-08-26 09:00 A | 2026-08-26 18:00 A |  | 100% |  |  | start no earlier than 2026-08-26 08:00 | Дворник | 8h | 8h |
| 3541 | 23.9 | отсыпать тропинку до КТПН |  | 1d? | 2026-08-27 09:00 | 2026-08-27 18:00 |  |  |  | 147.59d | start no earlier than 2026-08-27 09:00 | Дворник | 8h |  |
| 3542 | 23.10 | **орг водосток КПП - 5ц** |  | 0.03d | 2026-08-31 09:00 A | 2026-08-31 09:15 A |  | 100% |  |  |  |  | 0.25h | 0.25h |
| 3543 | 23.10.1 | получить КП от Вугара |  | 15min | 2026-08-31 09:00 A | 2026-08-31 09:15 A |  | 100% |  |  | start no earlier than 2026-08-31 09:00 | Домоводов К | 0.25h | 0.25h |
| 3544 | 23.11 | **орг водосток между 4 и5А** |  | 0.03d | 2026-08-31 09:00 A | 2026-08-31 09:15 A |  | 100% |  |  |  |  | 0.25h | 0.25h |
| 3545 | 23.11.1 | получить КП от Вугара |  | 15min | 2026-08-31 09:00 A | 2026-08-31 09:15 A |  | 100% |  |  | start no earlier than 2026-08-31 09:00 | Домоводов К | 0.25h | 0.25h |
| 3546 | 23.12 | **Белявский выравнивание стены** |  | 14.16d | 2026-08-13 09:00 A | 2026-09-02 10:15 A |  | 100% |  |  |  |  | 2.58h | 2.58h |
| 3547 | 23.12.1 | оформить план работ, эскиз предложенный ГИП Глуходед |  | 1h | 2026-09-01 09:00 A | 2026-09-01 10:00 A |  | 100% |  |  | start no earlier than 2026-09-01 09:00 | Домоводов К | 1h | 1h |
| 3548 | 23.12.2 | поиск подрядчика на перекладку панели |  | 1h | 2026-09-01 09:00 A | 2026-09-01 10:00 A |  | 100% |  |  | start no earlier than 2026-09-01 09:00 | Домоводов К | 1h | 1h |
| 3549 | 23.12.3 | звонок по решению от варианта ремонта Белявского |  | 20min | 2026-08-13 09:00 A | 2026-08-13 09:20 A |  | 100% |  |  | start no earlier than 2026-08-13 09:00 | Домоводов К | 0.33h | 0.33h |
| 3550 | 23.12.4 | ожидание КП от бригады Белявского | milestone | 0d | 2026-08-20 09:00 A | 2026-08-20 09:00 A | 3549FS+1d | 100% |  |  | start no earlier than 2026-08-20 09:00 | Домоводов К |  |  |
| 3551 | 23.12.5 | согл работы с ГД | milestone | 0d | 2026-09-01 10:00 A | 2026-09-01 10:00 A | 3547, 3550FS+1d | 100% |  |  | start no earlier than 2026-08-31 09:00 | Домоводов К |  |  |
| 3552 | 23.12.6 | заказ кран |  | 15min | 2026-09-02 10:00 A | 2026-09-02 10:15 A | 3551FS+1d | 100% |  |  | start no earlier than 2026-08-13 09:00 | Зорькин В | 0.25h | 0.25h |
| 3553 | 23.13 | замена тусклых или не рабочих ламп на мухоловках 1,2,5 цех.Схемы расположения предоставлю (количество ламп, которые поменял указать в отчете) |  | 4h | 2026-08-06 09:00 A | 2026-08-06 13:00 A |  | 100% |  |  | start no earlier than 2026-08-06 08:00 | Труфанов А | 4h | 4h |

| ID | WBS | Task | Type | Duration | Start | Finish | Predecessors | Complete | Remaining | Total slack | Free slack | Constraint | Resources | Work | Actual work |
| --- | --- | --- | --- | --- | --- | --- | --- | --- | --- | --- | --- | --- | --- | --- | --- |
| 3554 | 23.14 | **КПП ревизия прожектор, не горит** |  | 1.12d | 2026-07-08 09:00 A | 2026-07-09 10:00 A |  | 100% |  |  |  |  |  | 1.33h | 1.33h |
| 3555 | 23.14.1 | Сфотать шильдик от прожектора кпп |  | 20min | 2026-07-08 09:00 A | 2026-07-08 09:20 A |  | 100% |  |  |  | start no earlier than 2026-07-08 08:00 | Бундин В | 0.33h | 0.33h |
| 3556 | 23.14.2 | монтаж прожетора |  | 1h | 2026-07-09 09:00 A | 2026-07-09 10:00 A |  | 100% |  |  |  | start no earlier than 2026-07-09 09:00 | Бобренок В | 1h | 1h |
| 3557 | 23.15 | **установить люки колодцев возле на территории** |  | 1d? | 2026-09-25 09:00 A | 2026-09-25 18:00 |  | 50% | 0.5d? |  |  |  |  | 12h | 4h |
| 3558 | 23.15.1 | разложить по местам |  | 4h | 2026-09-25 09:00 A | 2026-09-25 13:00 A |  | 100% |  |  |  | start no earlier than 2026-09-25 08:00 | Бобренок В | 4h | 4h |
| 3559 | 23.15.2 | врезать в асфальт |  | 4h | 2026-10-06 09:00 | 2026-10-06 13:00 |  |  |  | 112.09d |  | start no earlier than 2026-10-06 09:00 | Тимофеев В; Олег | 8h |  |
| 3560 | 23.16 | **установить пост для зарядки эл мобиль директору** |  | 1d? | 2026-06-03 09:00 | 2026-06-03 18:00 |  |  |  | 208.59d |  |  |  |  |  |
| 3561 | 23.16.1 | заявка на щиток / кабель |  | 1d? | 2026-06-03 09:00 | 2026-06-03 18:00 |  |  |  | 208.59d |  | start no earlier than 2026-06-03 08:00 |  |  |  |
| 3562 | 23.17 | уборка строительный мусор задний двор 5А склад |  | 2h | 2026-05-27 09:00 | 2026-05-27 11:00 |  |  |  | 214.34d |  | start no earlier than 2026-05-27 09:00 | оператор2 | 2h |  |
| 3563 | 23.18 | поправить бетонную крышку колодца. Дренаж вдоль забора колодец №2 |  | 2h | 2026-05-27 09:00 | 2026-05-27 11:00 |  |  |  | 214.34d |  | start no earlier than 2026-05-27 09:00 | оператор2 | 2h |  |
| 3564 | 23.19 | расчистить камни, для доступа к люку. Дренаж вдоль забора колодец №2 |  | 2h | 2026-05-27 09:00 | 2026-05-27 11:00 |  |  |  | 214.34d |  | start no earlier than 2026-05-27 09:00 | оператор2 | 2h |  |
| 3565 | 23.20 | проверка всех стемянок по цехам, приклеить бумажки о проверке |  | 1d? | 2026-06-26 09:00 A | 2026-06-26 18:00 A |  | 100% |  |  |  | start no earlier than 2026-06-26 09:00 | Шуранов Ю | 8h | 8h |
| 3566 | 23.21 | в 1,2,3 цехе ближе к утру выключить все оборудование, кроме камер охраны КПП- подготовка к фогации |  | 2h | 2026-04-30 08:00 A | 2026-04-30 11:00 A |  | 100% |  |  |  | start no earlier than 2026-04-30 08:00 | Дедов В | 2h | 2h |
| 3567 | 23.22 | заизолировать гофру в местах разрыва (гофра с кабелем для рефрежераторов возле нашего склада) | manual | 1h | 2026-04-26 09:00 A | 2026-04-26 10:00 A |  | 100% |  |  |  | start no earlier than 2026-04-26 09:00 | Макаревич А | 1h | 1h |
| 3568 | 23.23 | ремонт стен сосед Белявский |  | 5d | 2026-04-16 09:00 | 2026-04-22 18:00 |  |  |  | 238.59d |  | start no earlier than 2026-04-16 08:00 | Олег; Некрасов А | 80h |  |
| 3569 | 23.24 | **выезд ул.Писемского** |  | 15.03d | 2026-08-11 09:00 A | 2026-09-01 09:15 |  | 89% | 1.67d | 145.56d |  |  |  | 2.25h | 2h |
| 3570 | 23.24.1 | **топосъемка** |  | 15.03d | 2026-08-11 09:00 A | 2026-09-01 09:15 |  | 67% | 5.01d | 145.56d |  |  |  | 0.75h | 0.5h |
| 3571 | 23.24.1.1 | получить старт от ГД | milestone | 0d | 2026-08-31 09:00 | 2026-08-31 09:00 |  |  |  | 145.56d | 0d | start no earlier than 2026-08-31 09:00 | Домоводов К |  |  |
| 3572 | 23.24.1.2 | поск исполнителя / запрос счет |  | 30min | 2026-08-11 09:00 A | 2026-08-11 09:30 A |  | 100% |  |  |  | start no earlier than 2026-08-11 09:00 | Домоводов К | 0.5h | 0.5h |
| 3573 | 23.24.1.3 | контроль оплата |  | 15min | 2026-09-01 09:00 | 2026-09-01 09:15 | 3571FS+1d, 3572FS+5d |  |  | 145.56d | 0d | start no earlier than 2026-08-24 09:00 | Домоводов К | 0.25h |  |
| 3574 | 23.24.2 | **геология** |  | 15.03d | 2026-08-11 09:00 A | 2026-09-01 09:15 |  | 99% | 0d | 145.56d |  |  |  | 0.5h | 0.5h |
| 3575 | 23.24.2.1 | поск исполнителя / запрос счет |  | 30min | 2026-08-11 09:00 A | 2026-08-11 09:30 A |  | 100% |  |  |  | start no earlier than 2026-08-11 09:00 | Домоводов К | 0.5h | 0.5h |
| 3576 | 23.24.2.2 | контроль оплата | milestone | 0min | 2026-09-01 09:15 | 2026-09-01 09:15 | 3573, 3575FS+5d |  |  | 145.56d | 0d | start no earlier than 2026-08-10 08:00 | Домоводов К |  |  |
| 3577 | 23.24.3 | **проект дорога** |  | 15.03d | 2026-08-11 09:00 A | 2026-09-01 09:15 |  | 99% | 0d | 145.56d |  |  |  | 0.5h | 0.5h |
| 3578 | 23.24.3.1 | поск исполнителя / запрос счет |  | 30min | 2026-08-11 09:00 A | 2026-08-11 09:30 A |  | 100% |  |  |  | start no earlier than 2026-08-11 09:00 | Домоводов К | 0.5h | 0.5h |
| 3579 | 23.24.3.2 | получить счет / договор | milestone | 0d | 2026-08-13 09:00 A | 2026-08-13 09:00 A |  | 100% |  |  |  | start no earlier than 2026-08-13 09:00 | Домоводов К |  |  |
| 3580 | 23.24.3.3 | контроль оплата | milestone | 0min | 2026-09-01 09:15 | 2026-09-01 09:15 | 3576, 3578FS+5d |  |  | 145.56d | 0d | start no earlier than 2026-08-10 08:00 | Домоводов К |  |  |

| ID | WBS | Task | Type | Duration | Start | Finish | Predecessors | Complete | Remaining | Total slack | Constraint | Resources | Work | Actual work |
| --- | --- | --- | --- | --- | --- | --- | --- | --- | --- | --- | --- | --- | --- | --- |
| 3581 | 23.24.4 | **проект бетонная подушка** |  | 15.03d | 2026-08-11 09:00 A | 2026-09-01 09:15 |  | 99% | 0d | 145.56d |  |  | 0.5h | 0.5h |
| 3582 | 23.24.4.1 | поск исполнителя / запрос счет |  | 30min | 2026-08-11 09:00 A | 2026-08-11 09:30 A |  | 100% |  |  | start no earlier than 2026-08-11 09:00 | Домоводов К | 0.5h | 0.5h |
| 3583 | 23.24.4.2 | получить счет / договор | milestone | 0d | 2026-08-13 09:00 A | 2026-08-13 09:00 A |  | 100% |  |  | start no earlier than 2026-08-13 09:00 | Домоводов К |  |  |
| 3584 | 23.24.4.3 | контроль оплата | milestone | 0min | 2026-09-01 09:15 | 2026-09-01 09:15 | 3580, 3582FS+5d |  |  | 145.56d | start no earlier than 2026-08-10 08:00 | Домоводов К |  |  |
| 3585 | 23.25 | Сборка рамы и навеса для мусорки 2 ц возле 1 КПП |  | 4h | 2026-09-04 09:00 A | 2026-09-04 13:00 A |  | 100% |  |  | start no earlier than 2026-09-04 09:00 | Некрасов А; Макаревич А | 8h | 8h |
| 3586 | 23.26 | Покраска рамы новой мусорки, стоит у ворот навесок 2 цех |  | 1h | 2026-09-04 09:00 A | 2026-09-04 10:00 A |  | 100% |  |  | start no earlier than 2026-09-04 09:00 | Некрасов А; Макаревич А | 2h | 2h |
| 3587 | 23.27 | Монтаж дверей на мусорку собираем раму (петли привезем после обеда) |  | 3h | 2026-09-04 09:00 A | 2026-09-04 12:00 A |  | 100% |  |  | start no earlier than 2026-09-04 09:00 | Некрасов А; Макаревич А | 6h | 6h |
| 3588 | 23.28 | **асфальтирование дороги до 5ц** |  | 11.25d? | 2026-08-11 09:00 A | 2026-08-26 11:00 A |  | 100% |  |  |  |  | 36.5h | 36.5h |
| 3589 | 23.28.1 | составить схему площади дороги / 3 корректировки |  | 2h | 2026-08-11 09:00 A | 2026-08-11 11:00 A |  | 100% |  |  | start no earlier than 2026-08-11 09:00 | Зорькин В | 2h | 2h |
| 3590 | 23.28.2 | получить цену исполнителя |  | 1d | 2026-08-11 11:00 A | 2026-08-12 11:00 A | 3589 | 100% |  |  | start no earlier than 2026-08-10 08:00 | Домоводов К | 8h | 8h |
| 3591 | 23.28.3 | согл с ГД |  | 1d | 2026-08-11 09:00 A | 2026-08-11 18:00 A | 3590 | 100% |  |  | start no earlier than 2026-08-10 08:00 | Домоводов К | 8h | 8h |
| 3592 | 23.28.4 | получить счет от Вугара | milestone | 0h | 2026-08-12 09:00 A | 2026-08-12 09:00 A |  | 100% |  |  | start no earlier than 2026-08-12 09:00 | Домоводов К |  |  |
| 3593 | 23.28.5 | будет ли Вугар оформлятся как подрядчик? Соглаосвать с ГД |  | 15min | 2026-08-17 09:00 A | 2026-08-17 09:15 A |  | 100% |  |  | start no earlier than 2026-08-17 09:00 | Домоводов К | 0.25h | 0.25h |
| 3594 | 23.28.6 | корректировка чертеж объем работ |  | 1d? | 2026-08-20 09:00 A | 2026-08-20 18:00 A |  | 100% |  |  | start no earlier than 2026-08-20 09:00 | Домоводов К | 8h | 8h |
| 3595 | 23.28.7 | подготовка смета |  | 2h | 2026-08-26 09:00 A | 2026-08-26 11:00 A |  | 100% |  |  | start no earlier than 2026-08-26 09:00 | Домоводов К | 2h | 2h |
| 3596 | 23.28.8 | контроль сроков завоза техники |  | 15min | 2026-08-14 09:00 A | 2026-08-14 09:15 A |  | 100% |  |  | start no earlier than 2026-08-14 09:00 | Домоводов К | 0.25h | 0.25h |
| 3597 | 23.28.9 | монтаж |  | 1d? | 2026-08-19 09:00 A | 2026-08-19 18:00 A | 3591, 3592 | 100% |  |  | start no earlier than 2026-08-19 09:00 | Подрядчик | 8h | 8h |
| 3598 | 23.29 | взять роутер у нас в кабинете - подключить к UTP кабелю |  | 1d? | 2026-04-13 09:00 A | 2026-04-13 18:00 A |  | 100% |  |  | start no earlier than 2026-04-13 09:00 |  |  |  |
| 3599 | 23.30 | в цехе 2, 3, 4 и 5 убавить температуры на нагревателях и газ. Котлах |  | 4h | 2026-03-31 09:00 A | 2026-03-31 13:00 A |  | 100% |  |  | start no earlier than 2026-03-31 08:00 | Бундин В | 4h | 4h |
| 3600 | 23.31 | перенос камеры на 10см ниже КПП |  | 3h | 2026-03-21 09:00 A | 2026-03-23 12:00 A |  | 100% |  |  | start no earlier than 2026-03-21 09:00 | Бундин В | 3h | 3h |
| 3601 | 23.32 | запуск контейнер рэф |  | 2h | 2026-03-20 09:00 A | 2026-03-20 11:00 A |  | 100% |  |  | start no earlier than 2026-03-20 09:00 | Шуранов Ю | 2h | 2h |
| 3602 | 23.33 | **выровнить контейнеры, перекос двери** |  | 3.25d | 2026-03-19 09:00 A | 2026-03-24 11:00 A |  | 100% |  |  |  |  | 2.5h | 2.5h |
| 3603 | 23.33.1 | заявка кран |  | 30min | 2026-03-19 09:00 A | 2026-03-19 09:30 A |  | 100% |  |  | start no earlier than 2026-03-19 09:00 | Шуранов Ю | 0.5h | 0.5h |
| 3604 | 23.33.2 | работа по выравниванию |  | 2h | 2026-03-24 09:00 A | 2026-03-24 11:00 A | 3603FS+1d | 100% |  |  | start no earlier than 2026-03-24 09:00 | Некрасов А | 2h | 2h |

| ID | WBS | Task | Duration | Start | Finish | Predecessors | Complete | Remaining | Total slack | Free slack | Constraint | Resources | Work | Actual work |
| --- | --- | --- | --- | --- | --- | --- | --- | --- | --- | --- | --- | --- | --- | --- |
| 3605 | 23.34 | **двойной шлагбаум замрзает** | 5.01d | 2025-02-20 09:00 A | 2025-02-27 09:05 A |  | 100% |  |  |  |  |  | 1.08h | 1.08h |
| 3606 | 23.34.1 | вызов сервисного инженера контроль даты | 5min | 2025-02-27 09:00 A | 2025-02-27 09:05 A |  | 100% |  |  |  | start no earlier than 2025-02-27 09:00 | Шуранов Ю | 0.08h | 0.08h |
| 3607 | 23.34.2 | осмотр с сервисн инжзенером | 1h | 2025-02-20 09:00 A | 2025-02-20 10:00 A |  | 100% |  |  |  | start no earlier than 2025-02-20 09:00 | Шуранов Ю | 1h | 1h |
| 3608 | 23.35 | **Люки на колодцы** | 13.31d | 2026-05-26 09:00 A | 2026-06-12 11:30 |  | 98% | 0.32d | 202.28d |  |  |  | 163.5h | 161.5h |
| 3609 | 23.35.1 | Консультация с Олегом | 30min | 2026-05-26 09:00 A | 2026-05-26 09:30 A |  | 100% |  |  |  | start no earlier than 2026-05-26 08:00 | Зорькин В; Олег | 1h | 1h |
| 3610 | 23.35.2 | Заявка на закуп | 30min | 2026-05-29 09:00 A | 2026-05-29 09:30 A | 3609 | 100% |  |  |  | start no earlier than 2026-05-29 09:00 | Зорькин В | 0.5h | 0.5h |
| 3611 | 23.35.3 | Доставка, контроль | 10d | 2026-05-29 09:30 A | 2026-06-12 09:30 A | 3610 | 100% |  |  |  | start no earlier than 2026-05-26 09:00 | Зорькин В; Шуранов Ю | 160h | 160h |
| 3612 | 23.35.4 | установка люков на колодцы | 2h | 2026-06-12 09:30 | 2026-06-12 11:30 | 3611 |  |  | 202.28d |  | start no earlier than 2026-06-04 09:00 | Олег | 2h |  |
| 3613 | 24 | **ежедневные обходы и осмотры** | 473.5d | 2024-05-14 09:00 A | 2026-03-06 13:00 |  | 16% | 398.74d | 272.09d |  |  |  | 25.33h | 4h |
| 3614 | 24.1 | цех 1 | 20min | 2024-05-14 09:00 | 2024-05-14 09:20 |  |  |  | 743.01d | 0d | start no earlier than 2024-05-14 09:00 | Шуранов Ю | 0.33h |  |
| 3615 | 24.2 | цех 2 | 20min | 2024-05-14 09:00 | 2024-05-14 09:20 |  |  |  | 745.55d |  | start no earlier than 2024-05-14 09:00 | Шуранов Ю | 0.33h |  |
| 3616 | 24.3 | цех навесок | 20min | 2024-05-14 09:20 | 2024-05-14 09:40 | 3614 |  |  | 743.01d | 0d | start no earlier than 2024-05-14 09:00 | Шуранов Ю | 0.33h |  |
| 3617 | 24.4 | техника | 20h | 2024-05-14 09:40 | 2024-05-16 14:40 | 3616 |  |  | 743.01d |  | start no earlier than 2024-05-14 09:00 | Шуранов Ю | 20h |  |
| 3618 | 24.5 | вести журнал осмотров стеллажей | 20min | 2024-05-14 09:00 | 2024-05-14 09:20 |  |  |  | 745.55d |  | start no earlier than 2024-05-14 09:00 | Шуранов Ю | 0.33h |  |
| 3619 | 24.6 | оперативная работа | 4h | 2026-03-06 09:00 A | 2026-03-06 13:00 A |  | 100% |  |  |  | start no earlier than 2026-03-06 09:00 | Бобренок В | 4h | 4h |
| 3620 | 25 | **замена шнеков** | 882.5d? | 2023-03-29 09:00 A | 2026-08-14 13:00 |  | 2% | 864.01d? | 157.09d |  |  |  | 53h | 34h |
| 3621 | 25.1 | посчитать количество шнеков и гильз для цех1 и цех 2 | 2h | 2026-04-03 09:00 | 2026-04-03 11:00 |  |  |  | 252.34d |  | start no earlier than 2026-04-03 09:00 | Шуранов Ю | 2h |  |
| 3622 | 25.2 | вести список и учет замены шнеков | 1h | 2024-05-14 09:00 | 2024-05-14 10:00 |  |  |  | 745.47d |  | start no earlier than 2024-05-14 09:00 | Шуранов Ю | 1h |  |
| 3623 | 25.3 | линия 3 - было 3/приход спец12-3/спец14-9 | 1d? | 2024-04-15 09:00 A | 2024-04-15 18:00 A |  | 100% |  |  |  | start no earlier than 2024-04-15 08:00 |  |  |  |
| 3624 | 25.4 | линия3 | 42d | 2023-10-16 09:00 | 2023-12-12 18:00 |  |  |  | 854.59d |  | start no earlier than 2023-10-16 09:00 |  |  |  |
| 3625 | 25.5 | линия3 | 30d | 2023-12-12 09:00 | 2024-01-22 18:00 |  |  |  | 825.59d |  | start no earlier than 2023-12-12 09:00 |  |  |  |
| 3626 | 25.6 | линия3 | 45d | 2024-01-24 09:00 | 2024-03-26 18:00 |  |  |  | 779.59d |  | start no earlier than 2024-01-24 09:00 |  |  |  |
| 3627 | 25.7 | линия3 | 11d | 2023-03-29 09:00 | 2023-04-12 18:00 |  |  |  | 1028.59d |  | start no earlier than 2023-03-29 09:00 |  |  |  |
| 3628 | 25.8 | линия3 | 1d? | 2023-04-12 09:00 | 2023-04-12 18:00 |  |  |  | 1028.59d |  | start no earlier than 2023-04-12 09:00 |  |  |  |
| 3629 | 25.9 | линия 3 | 1.38d? | 2024-05-08 08:00 A | 2024-05-13 11:00 A |  | 100% |  |  |  | start no earlier than 2024-05-08 08:00 | Макаревич А; Некрасов А; Черепанов И | 26h | 26h |
| 3630 | 25.10 | диния 3 | 1d? | 2024-05-20 09:00 | 2024-05-20 18:00 |  |  |  | 740.59d |  | start no earlier than 2024-05-20 09:00 | Некрасов А; Тимофеев В | 16h |  |
| 3761 | 25.11 | замена линия 3, была струшка | 4h | 2026-08-14 09:00 A | 2026-08-14 13:00 A |  | 100% |  |  |  | start no earlier than 2026-08-14 09:00 | Некрасов А; Бундин В | 8h | 8h |
